# Clinical Information Suite Project

Schedule from MS Project, 2011-03-28 to 2012-02-21, status date 2011-08-23, A marks actual dates.
Essex Management

## Calendars

- Standard: Mon-Fri 08:00-12:00, 13:00-17:00; Sat-Sun off. Exceptions (off unless hours are given): 2011-07-04, 2011-09-05, 2011-10-10, 2011-11-11, 2011-11-24, 2011-12-26.

## Resources

| Resource |
| --- |
| Joshi |
| ESD |
| NCI |
| SAIC-F |
| Parnell |
| Hurley |
| Phillips |
| Pierce |
| Cabral |
| Andonyadis |
| Shirley |
| Undale |
| Chintalapati |
| ANA - 1 |
| ARCH - 1 |
| Shalley |
| QA - 1 |
| ARCH - 5 |
| ARCH - 4 |
| ARCH - 3 |
| ARCH - 2 |
| Gann |
| ARCHDEPLOYRES- 1 |
| ESDDEPLOYRES |
| QADEPLOYRES |
| QADEPLOYRES2 |
| ARCH - 6 |
| ARCH - 7 |
| QA - 2 |
| Tech Writer |
| CDO |

## Schedule

| ID | WBS | Task | Type | Duration | Start | Finish | Predecessors | Complete | Remaining | Baseline start | Baseline finish | Baseline duration | Total slack | Free slack | Constraint | Work | Actual work | Text1 |
| --- | --- | --- | --- | --- | --- | --- | --- | --- | --- | --- | --- | --- | --- | --- | --- | --- | --- | --- |
| 1 | CIS1 | **caCIS Project** |  | 231d | 2011-03-28 04:00 A | 2012-02-21 17:00 |  | 54% | 106.13d | 2011-03-28 04:00 | 2012-03-30 17:00 | 259d | 0d |  |  | 10190h | 7093.69h |  |
| 2 | CIS1.1 | **Milestones** |  | 126d | 2011-06-27 08:00 A | 2011-12-27 17:00 |  | 76% | 30.24d |  |  |  | -6d | 0d |  |  |  |  |
| 3 | CIS1.1.1 | Solution Scope Approved | milestone | 0d | 2011-07-12 12:00 A | 2011-07-12 12:00 A | 375 | 100% |  |  |  |  |  |  |  |  |  | Completed |
| 4 | CIS1.1.2 | **TRANSCEND Interface** |  | 72d | 2011-08-04 08:00 A | 2011-11-16 17:00 |  |  | 72d |  |  |  | 21d | 27d |  |  |  |  |
| 5 | CIS1.1.2.1 | TRANSCEND Interface Architecture Complete | milestone | 0d | 2011-08-04 08:00 A | 2011-08-04 08:00 A | 386FF | 100% |  |  |  |  |  |  |  |  |  | Completed |
| 6 | CIS1.1.2.2 | TRANSCEND Interface Development Complete | milestone | 0d | 2011-09-16 17:00 A | 2011-09-16 17:00 | 391 | 31% | 0d |  |  |  | 62d |  |  |  |  |  |
| 7 | CIS1.1.2.3 | TRANSCEND Interface Quality Complete | milestone | 0d | 2011-11-16 17:00 | 2011-11-16 17:00 | 392 |  |  |  |  |  | 21d |  |  |  |  |  |
| 8 | CIS1.1.3 | **Modeling and Semantic Mapping** |  | 101d | 2011-06-27 08:00 A | 2011-11-18 17:00 |  | 76% | 24.24d |  |  |  | 19d | 25d |  |  |  |  |
| 9 | CIS1.1.3.1 | Canonical Model Complete |  | 79d | 2011-06-27 08:00 A | 2011-11-14 16:44 | 403, 404, 405, 406, 407, 408 | 76% | 18.96d |  |  |  | 23.03d |  | finish no earlier than 2011-10-18 17:00 |  |  |  |
| 10 | CIS1.1.3.2 | Mapping Architecture Complete (Includes Transforms) | milestone | 0d | 2011-10-17 17:00 | 2011-10-17 17:00 | 407, 408, 410, 411, 412 |  |  |  |  |  | 42d |  |  |  |  |  |
| 11 | CIS1.1.3.3 | Mapping Development Complete | milestone | 0d | 2011-10-21 17:00 | 2011-10-21 17:00 | 413, 414, 415, 416, 417 |  |  |  |  |  | 38d |  |  |  |  |  |
| 12 | CIS1.1.3.4 | Mapping Quality Complete | milestone | 0d | 2011-11-18 17:00 | 2011-11-18 17:00 | 418, 419, 420, 421, 409 |  |  |  |  |  | 19d |  |  |  |  |  |
| 13 | CIS1.1.4 | **Semantic Adapter** |  | 76d | 2011-07-08 17:00 A | 2011-10-26 17:00 |  |  | 76d |  |  |  | 35d | 41d |  |  |  |  |
| 14 | CIS1.1.4.1 | Semantic Adapter Architecture Complete (Includes Design Only Features) | milestone | 0d | 2011-10-26 17:00 A | 2011-10-26 17:00 | 425, 426, 424 | 55% | 0d |  |  |  | 35d |  |  |  |  |  |
| 15 | CIS1.1.4.2 | Semantic Adapter Development Complete | milestone | 0d | 2011-07-08 17:00 A | 2011-07-08 17:00 A | 423 | 100% |  |  |  |  |  |  |  |  |  | Completed |
| 16 | CIS1.1.4.3 | Semantic Adapter Quality Complete | milestone | 0d | 2011-07-20 17:00 A | 2011-07-20 17:00 A | 427 | 100% |  |  |  |  |  |  |  |  |  | Completed |
| 17 | CIS1.1.5 | **Integration Platform** |  | 88d | 2011-08-18 17:00 A | 2011-12-27 17:00 |  |  | 88d |  |  |  | -6d | 0d |  |  |  |  |
| 18 | CIS1.1.5.1 | Integration Platform Canonical Model Processor Architecture Complete | milestone | 0d | 2011-09-06 17:00 A | 2011-09-06 17:00 A | 429, 430, 431, 432 | 100% |  |  |  |  |  |  |  |  |  | Completed |
| 19 | CIS1.1.5.2 | Integration Platform Canonical Model Processor Development Complete | milestone | 0d | 2011-09-29 17:00 | 2011-09-29 17:00 | 433, 434, 435, 436, 437 |  |  |  |  |  | 53d |  |  |  |  |  |
| 20 | CIS1.1.5.3 | Integraton Platform Canonical Model Processor Quality Complete | milestone | 0d | 2011-12-01 15:00 | 2011-12-01 15:00 | 438, 439, 441, 442, 440 |  |  |  |  |  | 11.25d |  |  |  |  |  |
| 21 | CIS1.1.5.4 | Integration Platform Document Router Architecture Complete | milestone | 0d | 2011-08-18 17:00 A | 2011-08-18 17:00 A | 444 | 100% |  |  |  |  |  |  |  |  |  | Completed |
| 22 | CIS1.1.5.5 | Integration Platform Document Router Development Complete | milestone | 0d | 2011-09-30 17:00 | 2011-09-30 17:00 | 445, 446, 447, 448, 449 |  |  |  |  |  | 52d |  |  |  |  |  |
| 23 | CIS1.1.5.6 | Integration Platform Document Router Quality Complete | milestone | 0d | 2011-12-27 17:00 | 2011-12-27 17:00 | 450, 451, 452, 453, 454 |  |  |  |  |  | -6d | 0d |  |  |  |  |
| 24 | CIS1.1.5.7 | Integration Platform Document Transfer Architecture Complete | milestone | 0d | 2011-08-29 17:00 A | 2011-08-29 17:00 A | 456, 458, 461, 457 | 100% |  |  |  |  |  |  |  |  |  | Completed |
| 25 | CIS1.1.5.8 | Integration Platform Document Transfer Development Complete | milestone | 0d | 2011-09-16 17:00 | 2011-09-16 17:00 | 459, 460, 462 |  |  |  |  |  | 62d |  |  |  |  |  |
| 26 | CIS1.1.5.9 | Integration Platform Document Transfer Quality Complete | milestone | 0d | 2011-12-15 17:00 | 2011-12-15 17:00 | 464, 465, 463 |  |  |  |  |  | 1d |  |  |  |  |  |

| ID | WBS | Task | Type | Duration | Start | Finish | Predecessors | Complete | Remaining | Baseline start | Baseline finish | Baseline duration | Total slack | Free slack | Constraint | Resources | Work | Actual work |
| --- | --- | --- | --- | --- | --- | --- | --- | --- | --- | --- | --- | --- | --- | --- | --- | --- | --- | --- |
| 27 | CIS1.1.6 | **Clinical Data Warehouse** |  | 87d | 2011-06-29 17:00 A | 2011-11-02 17:00 |  |  | 87d |  |  |  | 30d | 36d |  |  |  |  |
| 28 | CIS1.1.6.1 | Clinical Data Warehouse Evaluation and Selection Complete | milestone | 0d | 2011-06-29 17:00 A | 2011-06-29 17:00 A | 378 | 100% |  |  |  |  |  |  |  |  |  |  |
| 29 | CIS1.1.6.2 | Clinical Data Warehouse Architecture Complete | milestone | 0d | 2011-09-22 17:00 | 2011-09-22 17:00 | 468, 471, 467, 469, 472, 476, 473 |  |  |  |  |  | 58d |  |  |  |  |  |
| 30 | CIS1.1.6.3 | Clinical Data Warehouse Development Complete | milestone | 0d | 2011-09-30 17:00 | 2011-09-30 17:00 | 474, 477, 470 |  |  |  |  |  | 52d |  |  |  |  |  |
| 31 | CIS1.1.6.4 | Clinical Data Warehouse Quality Complete | milestone | 0d | 2011-11-02 17:00 | 2011-11-02 17:00 | 475, 478 |  |  |  |  |  | 30d |  |  |  |  |  |
| 32 | CIS1.1.7 | Solution Ready for TRANSCEND Deployment | milestone | 0d | 2011-12-27 17:00 | 2011-12-27 17:00 | 27, 17, 13, 8, 4 |  |  |  |  |  | -6d | 0d |  |  |  |  |
| 33 | CIS1.2 | **Project Management** |  | 194d | 2011-03-28 04:00 A | 2011-12-30 17:00 |  | 52% | 92.49d | 2011-03-28 04:00 | 2011-09-30 17:00 | 133d | 37d |  |  |  | 2135.05h | 1719.88h |
| 34 | CIS1.2.1 | **Scope Management** |  | 132.25d | 2011-03-28 04:00 A | 2011-09-30 10:00 |  | 98% | 2.52d | 2011-03-28 04:00 | 2011-09-30 10:00 | 132.25d | 98.75d |  |  |  | 898.3h | 881.3h |
| 35 | CIS1.2.1.1 | Create WBS per Proposed Solution |  | 5d | 2011-04-15 04:00 A | 2011-04-22 09:00 A |  | 100% |  | 2011-04-15 04:00 | 2011-04-22 09:00 | 5d |  |  | start no earlier than 2011-04-15 04:00 | Hurley [25%] | 10h | 10h |
| 36 | CIS1.2.1.2 | Charter Approach Approved | milestone | 0d | 2011-03-28 04:00 A | 2011-03-28 04:00 A |  | 100% |  | 2011-03-28 04:00 | 2011-03-28 04:00 | 0d |  |  |  |  |  |  |
| 37 | CIS1.2.1.3 | ESD Assessment and Initial LOE on Proposed Solution |  | 4.5d | 2011-04-15 04:00 A | 2011-04-21 12:00 A |  | 100% |  | 2011-04-15 04:00 | 2011-04-21 12:00 | 4.5d |  |  | finish no earlier than 2011-04-21 13:00 | Parnell [80%]; Phillips [20%] | 36h | 36h |
| 38 | CIS1.2.1.4 | Quality Team Assessment and Initial LOE on Proposed Solution |  | 4.5d | 2011-04-15 09:00 A | 2011-04-21 14:00 A |  | 100% |  | 2011-04-15 09:00 | 2011-04-21 14:00 | 4.5d |  |  | finish no earlier than 2011-04-21 13:00 | Pierce | 36h | 36h |
| 39 | CIS1.2.1.5 | Draft 1 - Architectural Solution Proposal and Feedback Due |  | 3.5d | 2011-04-15 09:00 A | 2011-04-20 14:00 A |  | 100% |  | 2011-04-15 09:00 | 2011-04-20 14:00 | 3.5d |  |  | finish no earlier than 2011-04-20 13:00 | Cabral [75%]; Andonyadis; Shirley; Undale | 105h | 105h |
| 40 | CIS1.2.1.6 | Draft 2 - Solution Proposal Scope and Schedule Submitted to SAIC-F and Govt - For Final Review |  | 9.5d | 2011-04-19 09:00 A | 2011-05-02 14:00 A | 39FS-1d | 100% |  | 2011-04-19 09:00 | 2011-05-02 14:00 | 9.5d |  |  | finish no earlier than 2011-05-02 13:00 | Chintalapati [50%]; Parnell [80%]; Pierce; Hurley | 250.8h | 250.8h |
| 41 | CIS1.2.1.7 | Proposed Solution Review |  | 3d | 2011-05-02 04:00 A | 2011-05-05 12:00 A | 205FS-3d | 100% |  | 2011-05-02 04:00 | 2011-05-05 12:00 | 3d |  |  | finish no earlier than 2011-05-05 13:00 | Cabral [75%]; Andonyadis; Shirley; Undale | 90h | 90h |
| 42 | CIS1.2.1.8 | Project Solution Proposed Scope and Schedule Approval Meeting 1 | milestone | 0d | 2011-05-05 04:00 A | 2011-05-05 04:00 A | 41 | 100% |  | 2011-05-05 04:00 | 2011-05-05 04:00 | 0d |  |  |  |  |  |  |
| 43 | CIS1.2.1.9 | Security Considerations for Proposed Solution |  | 5d | 2011-05-06 04:00 A | 2011-05-12 17:00 A | 42FS+1d | 100% |  | 2011-05-06 04:00 | 2011-05-12 17:00 | 5d |  |  |  | Chintalapati [50%] | 20h | 20h |
| 44 | CIS1.2.1.10 | Security Considerations Review Meeting - 2nd Phase for Project Approval | milestone | 0d | 2011-05-13 04:00 A | 2011-05-13 04:00 A | 43 | 100% |  | 2011-05-13 04:00 | 2011-05-13 04:00 | 0d |  |  | start no earlier than 2011-05-13 04:00 |  |  |  |
| 45 | CIS1.2.1.11 | **Update Proposed Solution (New Use Cases)** |  | 20d | 2011-05-13 09:00 A | 2011-06-10 09:00 A | 44 | 100% |  | 2011-05-13 09:00 | 2011-06-10 09:00 | 20d |  |  |  |  | 20h | 20h |
| 46 | CIS1.2.1.11.1 | Architecture elaboration of use cases |  | 11d | 2011-05-13 09:00 A | 2011-05-30 09:00 A |  | 100% |  | 2011-05-13 09:00 | 2011-05-30 09:00 | 11d |  |  | start no earlier than 2011-05-13 08:00 |  |  |  |
| 47 | CIS1.2.1.11.2 | Architecture and Government Internal Review Meeting on proposed solution (new use cases) | milestone | 0d | 2011-05-18 08:00 A | 2011-05-18 08:00 A |  | 100% |  | 2011-05-18 08:00 | 2011-05-18 08:00 | 0d |  |  | start no earlier than 2011-05-18 08:00 | Chintalapati [50%]; Shirley; Andonyadis |  |  |
| 48 | CIS1.2.1.11.3 | Architecture to circulate draft of elaborated use cases | milestone | 0d | 2011-05-19 08:00 A | 2011-05-19 08:00 A |  | 100% |  | 2011-05-19 08:00 | 2011-05-19 08:00 | 0d |  |  | start no earlier than 2011-05-19 08:00 | Chintalapati [50%] |  |  |
| 49 | CIS1.2.1.11.4 | Team Feedback due on draft of elaborated use cases |  | 2d | 2011-05-20 08:00 A | 2011-05-23 17:00 A | 48 | 100% |  | 2011-05-20 08:00 | 2011-05-23 17:00 | 2d |  |  | start no earlier than 2011-05-20 08:00 |  |  |  |
| 50 | CIS1.2.1.11.5 | Architecture issues proposed solution update for team review | milestone | 0d | 2011-05-25 08:00 A | 2011-05-25 08:00 A | 49 | 100% |  | 2011-05-25 08:00 | 2011-05-25 08:00 | 0d |  |  | start no earlier than 2011-05-25 08:00 |  |  |  |
| 51 | CIS1.2.1.11.6 | Architectural Review Meeting | milestone | 0d | 2011-05-26 17:00 A | 2011-05-26 17:00 A | 50 | 100% |  | 2011-05-26 17:00 | 2011-05-26 17:00 | 0d |  |  |  | Chintalapati [50%] |  |  |
| 52 | CIS1.2.1.11.7 | Architecture Incorporation of use case feedback |  | 2d | 2011-05-27 08:00 A | 2011-05-30 17:00 A | 51 | 100% |  | 2011-05-27 08:00 | 2011-05-30 17:00 | 2d |  |  |  | Chintalapati [50%] | 8h | 8h |
| 53 | CIS1.2.1.11.8 | Review meeting on feedback on use case comments | milestone | 0d | 2011-05-27 08:00 A | 2011-05-27 08:00 A |  | 100% |  | 2011-05-27 08:00 | 2011-05-27 08:00 | 0d |  |  | start no earlier than 2011-05-27 08:00 | Chintalapati [50%] |  |  |
| 54 | CIS1.2.1.11.9 | Finalize feedback and update documentation |  | 2d | 2011-05-27 09:00 A | 2011-05-31 09:00 A | 53 | 100% |  | 2011-05-27 09:00 | 2011-05-31 09:00 | 2d |  |  |  | Chintalapati [50%] | 8h | 8h |
| 55 | CIS1.2.1.11.10 | Outline Plan with DSLs |  | 1d | 2011-05-31 09:00 A | 2011-06-01 09:00 A |  | 100% |  | 2011-05-31 09:00 | 2011-06-01 09:00 | 1d |  |  | start no earlier than 2011-05-31 08:00 |  |  |  |
| 56 | CIS1.2.1.11.11 | Plan Elaboration (Rough Order of Magnitude) |  | 1d | 2011-06-02 08:00 A | 2011-06-02 17:00 A | 55 | 100% |  | 2011-06-02 08:00 | 2011-06-02 17:00 | 1d |  |  | start no earlier than 2011-05-31 08:00 |  |  |  |
| 57 | CIS1.2.1.11.12 | Proposed Solution Issued |  | 1d | 2011-06-03 08:00 A | 2011-06-03 17:00 A | 56 | 100% |  | 2011-06-03 08:00 | 2011-06-03 17:00 | 1d |  |  | start no earlier than 2011-06-02 08:00 | Chintalapati [50%] | 4h | 4h |
| 58 | CIS1.2.1.11.13 | Development of Executive Slide Deck |  | 3d | 2011-06-01 08:00 A | 2011-06-03 17:00 A |  | 100% |  | 2011-06-01 08:00 | 2011-06-03 17:00 | 3d |  |  | start no earlier than 2011-06-01 08:00 |  |  |  |
| 59 | CIS1.2.1.11.14 | Plan, Proposal and Review Meeting | milestone | 0d | 2011-06-03 17:00 A | 2011-06-03 17:00 A | 58 | 100% |  | 2011-06-03 17:00 | 2011-06-03 17:00 | 0d |  |  | start no earlier than 2011-06-03 08:00 |  |  |  |
| 60 | CIS1.2.1.11.15 | Revise Solution and Level of Effort based on June 3 Meeting |  | 4d | 2011-06-06 09:00 A | 2011-06-10 09:00 A | 59 | 100% |  | 2011-06-06 09:00 | 2011-06-10 09:00 | 4d |  |  | start no earlier than 2011-06-06 08:00 |  |  |  |
| 61 | CIS1.2.1.11.16 | Provide Solution to Government | milestone | 0d | 2011-06-09 17:00 A | 2011-06-09 17:00 A | 60 | 100% |  | 2011-06-09 17:00 | 2011-06-09 17:00 | 0d |  |  |  |  |  |  |
| 62 | CIS1.2.1.11.17 | Solution Approval | milestone | 0d | 2011-06-10 08:00 A | 2011-06-10 08:00 A | 61 | 100% |  | 2011-06-10 08:00 | 2011-06-10 08:00 | 0d |  |  | start no earlier than 2011-06-10 08:00 |  |  |  |
| 63 | CIS1.2.1.12 | Development Environments Established for Elaboration (ESD - Tolven-Related CI Environment Enablement) |  | 5d | 2011-04-25 04:00 A | 2011-04-29 17:00 A |  | 100% |  | 2011-04-25 04:00 | 2011-04-29 17:00 | 5d |  |  | finish no earlier than 2011-04-29 13:00 | Parnell [50%] | 20h | 20h |
| 64 | CIS1.2.1.13 | Format and Data Elements Gap Spreadsheet |  | 6.5d | 2011-04-19 09:00 A | 2011-04-27 14:00 A |  | 100% |  | 2011-04-19 09:00 | 2011-04-27 14:00 | 6.5d |  |  | start no earlier than 2011-04-19 04:00 | Chintalapati [50%]; Parnell [50%] | 52h | 52h |
| 65 | CIS1.2.1.14 | Map Data Elements from PCO for Modeling Activities |  | 1d | 2011-04-28 13:00 A | 2011-04-29 12:00 A | 64 | 100% |  | 2011-04-28 13:00 | 2011-04-29 12:00 | 1d |  |  | finish no earlier than 2011-05-02 13:00 | Chintalapati [50%] | 4h | 4h |

Notes:
- 36: Charter reviewed with CBIIT Director @ March 21, 2011 Meeting. Outlined Scope Parameters in Charter are clear. Definiton of achievable tasks within project timeframe continue to elaborate

| ID | WBS | Task | Duration | Start | Finish | Predecessors | Complete | Remaining | Baseline start | Baseline finish | Baseline duration | Total slack | Constraint | Deadline | Resources | Work | Actual work |
| --- | --- | --- | --- | --- | --- | --- | --- | --- | --- | --- | --- | --- | --- | --- | --- | --- | --- |
| 66 | CIS1.2.1.15 | **Security** | 1.5d | 2011-04-25 09:00 A | 2011-04-26 14:00 A |  | 100% |  | 2011-04-25 09:00 | 2011-04-26 14:00 | 1.5d |  |  |  |  | 8h | 8h |
| 67 | CIS1.2.1.15.1 | Security Considerations and Justification Document | 1.5d | 2011-04-25 09:00 A | 2011-04-26 14:00 A |  | 100% |  | 2011-04-25 09:00 | 2011-04-26 14:00 | 1.5d |  | start no earlier than 2011-04-25 04:00 |  | Chintalapati [50%] | 6h | 6h |
| 68 | CIS1.2.1.15.2 | Security Meeting (Discuss Security Considerations) | 0.5d | 2011-04-26 09:00 A | 2011-04-26 14:00 A |  | 100% |  | 2011-04-26 09:00 | 2011-04-26 14:00 | 0.5d |  | start no earlier than 2011-04-26 04:00 |  | Chintalapati [50%] | 2h | 2h |
| 69 | CIS1.2.1.16 | **caCIS Requirements Document** | 17.5d | 2011-04-05 04:00 A | 2011-04-28 12:00 A |  | 100% |  | 2011-04-05 04:00 | 2011-04-28 12:00 | 17.5d |  |  |  |  | 132h | 132h |
| 70 | CIS1.2.1.16.1 | Scope and Requirements - Draft 1 | 7.5d | 2011-04-05 04:00 A | 2011-04-14 12:00 A |  | 100% |  | 2011-04-05 04:00 | 2011-04-14 12:00 | 7.5d |  |  |  | ANA - 1 | 60h | 60h |
| 71 | CIS1.2.1.16.2 | Feed back and Review of Scope and Requirements Draft 1 | 4d | 2011-04-15 09:00 A | 2011-04-21 09:00 A | 70 | 100% |  | 2011-04-15 09:00 | 2011-04-21 09:00 | 4d |  | start no earlier than 2011-04-15 04:00 | 2011-04-22 13:00 |  |  |  |
| 72 | CIS1.2.1.16.3 | Scope and Requirements - Draft 2 | 9d | 2011-04-15 09:00 A | 2011-04-28 12:00 A |  | 100% |  | 2011-04-15 09:00 | 2011-04-28 12:00 | 9d |  | finish no earlier than 2011-04-28 13:00 |  | ARCH - 1 | 72h | 72h |
| 73 | CIS1.2.1.17 | **Daily Scrum Meetings (DSL and Team)** | 126.12d | 2011-04-05 09:00 A | 2011-09-30 10:00 |  | 85% | 18.64d | 2011-04-05 09:00 | 2011-09-30 10:00 | 126.12d | 98.75d |  |  |  | 114.5h | 97.5h |
| 74 | CIS1.2.1.17.1 | Daily Scrum Meetings 1 | 0.5h | 2011-04-05 09:00 A | 2011-04-05 09:30 A |  | 100% |  | 2011-04-05 09:00 | 2011-04-05 09:30 | 0.5h |  | start no earlier than 2011-04-05 09:00 |  | Hurley | 0.5h | 0.5h |
| 75 | CIS1.2.1.17.2 | Daily Scrum Meetings 2 | 0.5h | 2011-04-06 09:00 A | 2011-04-06 09:30 A |  | 100% |  | 2011-04-06 09:00 | 2011-04-06 09:30 | 0.5h |  | start no earlier than 2011-04-06 09:00 |  | Hurley | 0.5h | 0.5h |
| 76 | CIS1.2.1.17.3 | Daily Scrum Meetings 3 | 0.5h | 2011-04-07 09:00 A | 2011-04-07 09:30 A |  | 100% |  | 2011-04-07 09:00 | 2011-04-07 09:30 | 0.5h |  | start no earlier than 2011-04-07 09:00 |  | Hurley | 0.5h | 0.5h |
| 77 | CIS1.2.1.17.4 | Daily Scrum Meetings 4 | 0.5h | 2011-04-08 09:00 A | 2011-04-08 09:30 A |  | 100% |  | 2011-04-08 09:00 | 2011-04-08 09:30 | 0.5h |  | start no earlier than 2011-04-08 09:00 |  | Hurley | 0.5h | 0.5h |
| 78 | CIS1.2.1.17.5 | Daily Scrum Meetings 5 | 0.5h | 2011-04-11 09:00 A | 2011-04-11 09:30 A |  | 100% |  | 2011-04-11 09:00 | 2011-04-11 09:30 | 0.5h |  | start no earlier than 2011-04-11 09:00 |  | Hurley | 0.5h | 0.5h |
| 79 | CIS1.2.1.17.6 | Daily Scrum Meetings 6 | 0.5h | 2011-04-12 09:00 A | 2011-04-12 09:30 A |  | 100% |  | 2011-04-12 09:00 | 2011-04-12 09:30 | 0.5h |  | start no earlier than 2011-04-12 09:00 |  | Hurley | 0.5h | 0.5h |
| 80 | CIS1.2.1.17.7 | Daily Scrum Meetings 7 | 0.5h | 2011-04-13 09:00 A | 2011-04-13 09:30 A |  | 100% |  | 2011-04-13 09:00 | 2011-04-13 09:30 | 0.5h |  | start no earlier than 2011-04-13 09:00 |  | Hurley | 0.5h | 0.5h |
| 81 | CIS1.2.1.17.8 | Daily Scrum Meetings 8 | 0.5h | 2011-04-14 09:00 A | 2011-04-14 09:30 A |  | 100% |  | 2011-04-14 09:00 | 2011-04-14 09:30 | 0.5h |  | start no earlier than 2011-04-14 09:00 |  | Hurley | 0.5h | 0.5h |
| 82 | CIS1.2.1.17.9 | Daily Scrum Meetings 9 | 0.5h | 2011-04-15 09:00 A | 2011-04-15 09:30 A |  | 100% |  | 2011-04-15 09:00 | 2011-04-15 09:30 | 0.5h |  | start no earlier than 2011-04-15 09:00 |  | Hurley | 0.5h | 0.5h |
| 83 | CIS1.2.1.17.10 | Daily Scrum Meetings 10 | 0.5h | 2011-04-18 09:00 A | 2011-04-18 09:30 A |  | 100% |  | 2011-04-18 09:00 | 2011-04-18 09:30 | 0.5h |  | start no earlier than 2011-04-18 09:00 |  | Hurley | 0.5h | 0.5h |
| 84 | CIS1.2.1.17.11 | Daily Scrum Meetings 11 | 0.5h | 2011-04-19 09:00 A | 2011-04-19 09:30 A |  | 100% |  | 2011-04-19 09:00 | 2011-04-19 09:30 | 0.5h |  | start no earlier than 2011-04-19 09:00 |  | Hurley | 0.5h | 0.5h |
| 85 | CIS1.2.1.17.12 | Daily Scrum Meetings 12 | 0.5h | 2011-04-20 09:00 A | 2011-04-20 09:30 A |  | 100% |  | 2011-04-20 09:00 | 2011-04-20 09:30 | 0.5h |  | start no earlier than 2011-04-20 09:00 |  | Hurley | 0.5h | 0.5h |
| 86 | CIS1.2.1.17.13 | Daily Scrum Meetings 13 | 0.5h | 2011-04-21 09:00 A | 2011-04-21 09:30 A |  | 100% |  | 2011-04-21 09:00 | 2011-04-21 09:30 | 0.5h |  | start no earlier than 2011-04-21 09:00 |  | Hurley | 0.5h | 0.5h |
| 87 | CIS1.2.1.17.14 | Daily Scrum Meetings 14 | 0.5h | 2011-04-22 09:00 A | 2011-04-22 09:30 A |  | 100% |  | 2011-04-22 09:00 | 2011-04-22 09:30 | 0.5h |  | start no earlier than 2011-04-22 09:00 |  | Hurley | 0.5h | 0.5h |
| 88 | CIS1.2.1.17.15 | Daily Scrum Meetings 15 | 0.5h | 2011-04-25 09:00 A | 2011-04-25 09:30 A |  | 100% |  | 2011-04-25 09:00 | 2011-04-25 09:30 | 0.5h |  | start no earlier than 2011-04-25 09:00 |  | Hurley | 0.5h | 0.5h |
| 89 | CIS1.2.1.17.16 | Daily Scrum Meetings 16 | 0.5h | 2011-04-26 09:00 A | 2011-04-26 09:30 A |  | 100% |  | 2011-04-26 09:00 | 2011-04-26 09:30 | 0.5h |  | start no earlier than 2011-04-26 09:00 |  | Hurley | 0.5h | 0.5h |
| 90 | CIS1.2.1.17.17 | Daily Scrum Meetings 17 | 0.5h | 2011-04-27 09:00 A | 2011-04-27 09:30 A |  | 100% |  | 2011-04-27 09:00 | 2011-04-27 09:30 | 0.5h |  | start no earlier than 2011-04-27 09:00 |  | Hurley | 0.5h | 0.5h |
| 91 | CIS1.2.1.17.18 | Daily Scrum Meetings 18 | 0.5h | 2011-04-28 09:00 A | 2011-04-28 09:30 A |  | 100% |  | 2011-04-28 09:00 | 2011-04-28 09:30 | 0.5h |  | start no earlier than 2011-04-28 09:00 |  | Hurley | 0.5h | 0.5h |
| 92 | CIS1.2.1.17.19 | Daily Scrum Meetings 19 | 0.5h | 2011-04-29 04:00 A | 2011-04-29 08:30 A |  | 100% |  | 2011-04-29 04:00 | 2011-04-29 08:30 | 0.5h |  | start no earlier than 2011-04-29 09:00 |  | Hurley | 0.5h | 0.5h |
| 93 | CIS1.2.1.17.20 | Daily Scrum Meetings 20 | 0.5h | 2011-05-02 09:00 A | 2011-05-02 09:30 A |  | 100% |  | 2011-05-02 09:00 | 2011-05-02 09:30 | 0.5h |  | start no earlier than 2011-05-02 09:00 |  | Hurley | 0.5h | 0.5h |
| 94 | CIS1.2.1.17.21 | Daily Scrum Meetings 21 | 0.5h | 2011-05-03 09:00 A | 2011-05-03 09:30 A |  | 100% |  | 2011-05-03 09:00 | 2011-05-03 09:30 | 0.5h |  | start no earlier than 2011-05-03 09:00 |  | Hurley | 0.5h | 0.5h |
| 95 | CIS1.2.1.17.22 | Daily Scrum Meetings 22 | 1h | 2011-05-04 09:00 A | 2011-05-04 10:00 A |  | 100% |  | 2011-05-04 09:00 | 2011-05-04 10:00 | 1h |  | start no earlier than 2011-05-04 09:00 |  | Hurley | 1h | 1h |
| 96 | CIS1.2.1.17.23 | Daily Scrum Meetings 23 | 1h | 2011-05-05 09:00 A | 2011-05-05 10:00 A |  | 100% |  | 2011-05-05 09:00 | 2011-05-05 10:00 | 1h |  | start no earlier than 2011-05-05 09:00 |  | Hurley | 1h | 1h |
| 97 | CIS1.2.1.17.24 | Daily Scrum Meetings 24 | 1h | 2011-05-06 09:00 A | 2011-05-06 10:00 A |  | 100% |  | 2011-05-06 09:00 | 2011-05-06 10:00 | 1h |  | start no earlier than 2011-05-06 09:00 |  | Hurley | 1h | 1h |
| 98 | CIS1.2.1.17.25 | Daily Scrum Meetings 25 | 1h | 2011-05-09 09:00 A | 2011-05-09 10:00 A |  | 100% |  | 2011-05-09 09:00 | 2011-05-09 10:00 | 1h |  | start no earlier than 2011-05-09 09:00 |  | Hurley | 1h | 1h |
| 99 | CIS1.2.1.17.26 | Daily Scrum Meetings 26 | 1h | 2011-05-10 09:00 A | 2011-05-10 10:00 A |  | 100% |  | 2011-05-10 09:00 | 2011-05-10 10:00 | 1h |  | start no earlier than 2011-05-10 09:00 |  | Hurley | 1h | 1h |
| 100 | CIS1.2.1.17.27 | Daily Scrum Meetings 27 | 1h | 2011-05-11 09:00 A | 2011-05-11 10:00 A |  | 100% |  | 2011-05-11 09:00 | 2011-05-11 10:00 | 1h |  | start no earlier than 2011-05-11 09:00 |  | Hurley | 1h | 1h |
| 101 | CIS1.2.1.17.28 | Daily Scrum Meetings 28 | 1h | 2011-05-12 09:00 A | 2011-05-12 10:00 A |  | 100% |  | 2011-05-12 09:00 | 2011-05-12 10:00 | 1h |  | start no earlier than 2011-05-12 09:00 |  | Hurley | 1h | 1h |
| 102 | CIS1.2.1.17.29 | Daily Scrum Meetings 29 | 1h | 2011-05-13 09:00 A | 2011-05-13 10:00 A |  | 100% |  | 2011-05-13 09:00 | 2011-05-13 10:00 | 1h |  | start no earlier than 2011-05-13 09:00 |  | Hurley | 1h | 1h |
| 103 | CIS1.2.1.17.30 | Daily Scrum Meetings 30 | 1h | 2011-05-16 09:00 A | 2011-05-16 10:00 A |  | 100% |  | 2011-05-16 09:00 | 2011-05-16 10:00 | 1h |  | start no earlier than 2011-05-16 09:00 |  | Hurley | 1h | 1h |
| 104 | CIS1.2.1.17.31 | Daily Scrum Meetings 31 | 1h | 2011-05-17 09:00 A | 2011-05-17 10:00 A |  | 100% |  | 2011-05-17 09:00 | 2011-05-17 10:00 | 1h |  | start no earlier than 2011-05-17 09:00 |  | Hurley | 1h | 1h |
| 105 | CIS1.2.1.17.32 | Daily Scrum Meetings 32 | 1h | 2011-05-18 09:00 A | 2011-05-18 10:00 A |  | 100% |  | 2011-05-18 09:00 | 2011-05-18 10:00 | 1h |  | start no earlier than 2011-05-18 09:00 |  | Hurley | 1h | 1h |
| 106 | CIS1.2.1.17.33 | Daily Scrum Meetings 33 | 1h | 2011-05-19 09:00 A | 2011-05-19 10:00 A |  | 100% |  | 2011-05-19 09:00 | 2011-05-19 10:00 | 1h |  | start no earlier than 2011-05-19 09:00 |  | Hurley | 1h | 1h |
| 107 | CIS1.2.1.17.34 | Daily Scrum Meetings 34 | 1h | 2011-05-20 09:00 A | 2011-05-20 10:00 A |  | 100% |  | 2011-05-20 09:00 | 2011-05-20 10:00 | 1h |  | start no earlier than 2011-05-20 09:00 |  | Hurley | 1h | 1h |
| 108 | CIS1.2.1.17.35 | Daily Scrum Meetings 35 | 1h | 2011-05-23 09:00 A | 2011-05-23 10:00 A |  | 100% |  | 2011-05-23 09:00 | 2011-05-23 10:00 | 1h |  | start no earlier than 2011-05-23 09:00 |  | Hurley | 1h | 1h |
| 109 | CIS1.2.1.17.36 | Daily Scrum Meetings 36 | 1h | 2011-05-24 09:00 A | 2011-05-24 10:00 A |  | 100% |  | 2011-05-24 09:00 | 2011-05-24 10:00 | 1h |  | start no earlier than 2011-05-24 09:00 |  | Hurley | 1h | 1h |
| 110 | CIS1.2.1.17.37 | Daily Scrum Meetings 37 | 1h | 2011-05-25 09:00 A | 2011-05-25 10:00 A |  | 100% |  | 2011-05-25 09:00 | 2011-05-25 10:00 | 1h |  | start no earlier than 2011-05-25 09:00 |  | Hurley | 1h | 1h |
| 111 | CIS1.2.1.17.38 | Daily Scrum Meetings 38 | 1h | 2011-05-26 09:00 A | 2011-05-26 10:00 A |  | 100% |  | 2011-05-26 09:00 | 2011-05-26 10:00 | 1h |  | start no earlier than 2011-05-26 09:00 |  | Hurley | 1h | 1h |
| 112 | CIS1.2.1.17.39 | Daily Scrum Meetings 39 | 1h | 2011-05-27 09:00 A | 2011-05-27 10:00 A |  | 100% |  | 2011-05-27 09:00 | 2011-05-27 10:00 | 1h |  | start no earlier than 2011-05-27 09:00 |  | Hurley | 1h | 1h |
| 113 | CIS1.2.1.17.40 | Daily Scrum Meetings 40 | 1h | 2011-05-31 09:00 A | 2011-05-31 10:00 A |  | 100% |  | 2011-05-31 09:00 | 2011-05-31 10:00 | 1h |  | start no earlier than 2011-05-31 09:00 |  | Hurley | 1h | 1h |
| 114 | CIS1.2.1.17.41 | Daily Scrum Meetings 41 | 1h | 2011-06-01 09:00 A | 2011-06-01 10:00 A |  | 100% |  | 2011-06-01 09:00 | 2011-06-01 10:00 | 1h |  | start no earlier than 2011-06-01 09:00 |  | Hurley | 1h | 1h |
| 115 | CIS1.2.1.17.42 | Daily Scrum Meetings 42 | 1h | 2011-06-02 09:00 A | 2011-06-02 10:00 A |  | 100% |  | 2011-06-02 09:00 | 2011-06-02 10:00 | 1h |  | start no earlier than 2011-06-02 09:00 |  | Undale | 1h | 1h |
| 116 | CIS1.2.1.17.43 | Daily Scrum Meetings 43 | 1h | 2011-06-03 09:00 A | 2011-06-03 10:00 A |  | 100% |  | 2011-06-03 09:00 | 2011-06-03 10:00 | 1h |  | start no earlier than 2011-06-03 09:00 |  | Undale | 1h | 1h |
| 117 | CIS1.2.1.17.44 | Daily Scrum Meetings 44 | 1h | 2011-06-06 09:00 A | 2011-06-06 10:00 A |  | 100% |  | 2011-06-06 09:00 | 2011-06-06 10:00 | 1h |  | start no earlier than 2011-06-06 09:00 |  | Hurley | 1h | 1h |
| 118 | CIS1.2.1.17.45 | Daily Scrum Meetings 45 | 1h | 2011-06-07 09:00 A | 2011-06-07 10:00 A |  | 100% |  | 2011-06-07 09:00 | 2011-06-07 10:00 | 1h |  | start no earlier than 2011-06-07 09:00 |  | Hurley | 1h | 1h |
| 119 | CIS1.2.1.17.46 | Daily Scrum Meetings 46 | 1h | 2011-06-08 09:00 A | 2011-06-08 10:00 A |  | 100% |  | 2011-06-08 09:00 | 2011-06-08 10:00 | 1h |  | start no earlier than 2011-06-08 09:00 |  | Hurley | 1h | 1h |
| 120 | CIS1.2.1.17.47 | Daily Scrum Meetings 47 | 1h | 2011-06-09 09:00 A | 2011-06-09 10:00 A |  | 100% |  | 2011-06-09 09:00 | 2011-06-09 10:00 | 1h |  | start no earlier than 2011-06-09 09:00 |  | Hurley | 1h | 1h |
| 121 | CIS1.2.1.17.48 | Daily Scrum Meetings 48 | 1h | 2011-06-10 09:00 A | 2011-06-10 10:00 A |  | 100% |  | 2011-06-10 09:00 | 2011-06-10 10:00 | 1h |  | start no earlier than 2011-06-10 09:00 |  | Hurley | 1h | 1h |
| 122 | CIS1.2.1.17.49 | Daily Scrum Meetings 49 | 1h | 2011-06-13 09:00 A | 2011-06-13 10:00 A |  | 100% |  | 2011-06-13 09:00 | 2011-06-13 10:00 | 1h |  | start no earlier than 2011-06-13 09:00 |  | Hurley | 1h | 1h |
| 123 | CIS1.2.1.17.50 | Daily Scrum Meetings 50 | 1h | 2011-06-14 09:00 A | 2011-06-14 10:00 A |  | 100% |  | 2011-06-14 09:00 | 2011-06-14 10:00 | 1h |  | start no earlier than 2011-06-14 09:00 |  | Hurley | 1h | 1h |
| 124 | CIS1.2.1.17.51 | Daily Scrum Meetings 51 | 1h | 2011-06-15 09:00 A | 2011-06-15 10:00 A |  | 100% |  | 2011-06-15 09:00 | 2011-06-15 10:00 | 1h |  | start no earlier than 2011-06-15 09:00 |  | Hurley | 1h | 1h |
| 125 | CIS1.2.1.17.52 | Daily Scrum Meetings 52 | 1h | 2011-06-16 09:00 A | 2011-06-16 10:00 A |  | 100% |  | 2011-06-16 09:00 | 2011-06-16 10:00 | 1h |  | start no earlier than 2011-06-16 09:00 |  | Hurley | 1h | 1h |
| 126 | CIS1.2.1.17.53 | Daily Scrum Meetings 53 | 1h | 2011-06-17 09:00 A | 2011-06-17 10:00 A |  | 100% |  | 2011-06-17 09:00 | 2011-06-17 10:00 | 1h |  | start no earlier than 2011-06-17 09:00 |  | Hurley | 1h | 1h |
| 127 | CIS1.2.1.17.54 | Daily Scrum Meetings 54 | 1h | 2011-06-20 09:00 A | 2011-06-20 10:00 A |  | 100% |  | 2011-06-20 09:00 | 2011-06-20 10:00 | 1h |  | start no earlier than 2011-06-20 09:00 |  | Undale | 1h | 1h |
| 128 | CIS1.2.1.17.55 | Daily Scrum Meetings 55 | 1h | 2011-06-21 09:00 A | 2011-06-21 10:00 A |  | 100% |  | 2011-06-21 09:00 | 2011-06-21 10:00 | 1h |  | start no earlier than 2011-06-21 09:00 |  | Undale | 1h | 1h |
| 129 | CIS1.2.1.17.56 | Daily Scrum Meetings 56 | 1h | 2011-06-22 09:00 A | 2011-06-22 10:00 A |  | 100% |  | 2011-06-22 09:00 | 2011-06-22 10:00 | 1h |  | start no earlier than 2011-06-22 09:00 |  | Undale | 1h | 1h |
| 130 | CIS1.2.1.17.57 | Daily Scrum Meetings 57 | 1h | 2011-06-23 09:00 A | 2011-06-23 10:00 A |  | 100% |  | 2011-06-23 09:00 | 2011-06-23 10:00 | 1h |  | start no earlier than 2011-06-23 09:00 |  | Undale | 1h | 1h |
| 131 | CIS1.2.1.17.58 | Daily Scrum Meetings 58 | 1h | 2011-06-24 09:00 A | 2011-06-24 10:00 A |  | 100% |  | 2011-06-24 09:00 | 2011-06-24 10:00 | 1h |  | start no earlier than 2011-06-24 09:00 |  | Undale | 1h | 1h |
| 132 | CIS1.2.1.17.59 | Daily Scrum Meetings 59 | 1h | 2011-06-27 09:00 A | 2011-06-27 10:00 A |  | 100% |  | 2011-06-27 09:00 | 2011-06-27 10:00 | 1h |  | start no earlier than 2011-06-27 09:00 |  | Hurley | 1h | 1h |
| 133 | CIS1.2.1.17.60 | Daily Scrum Meetings 60 | 1h | 2011-06-28 09:00 A | 2011-06-28 10:00 A |  | 100% |  | 2011-06-28 09:00 | 2011-06-28 10:00 | 1h |  | start no earlier than 2011-06-28 09:00 |  | Hurley | 1h | 1h |
| 134 | CIS1.2.1.17.61 | Daily Scrum Meetings 61 | 1h | 2011-06-29 09:00 A | 2011-06-29 10:00 A |  | 100% |  | 2011-06-29 09:00 | 2011-06-29 10:00 | 1h |  | start no earlier than 2011-06-29 09:00 |  | Hurley | 1h | 1h |
| 135 | CIS1.2.1.17.62 | Daily Scrum Meetings 62 | 1h | 2011-06-30 09:00 A | 2011-06-30 10:00 A |  | 100% |  | 2011-06-30 09:00 | 2011-06-30 10:00 | 1h |  | start no earlier than 2011-06-30 09:00 |  | Hurley | 1h | 1h |

| ID | WBS | Task | Duration | Start | Finish | Complete | Baseline start | Baseline finish | Baseline duration | Total slack | Constraint | Resources | Work | Actual work |
| --- | --- | --- | --- | --- | --- | --- | --- | --- | --- | --- | --- | --- | --- | --- |
| 136 | CIS1.2.1.17.63 | Daily Scrum Meetings 63 | 1h | 2011-07-01 09:00 A | 2011-07-01 10:00 A | 100% | 2011-07-01 09:00 | 2011-07-01 10:00 | 1h |  | start no earlier than 2011-07-01 09:00 | Undale | 1h | 1h |
| 137 | CIS1.2.1.17.64 | Daily Scrum Meetings 64 | 1h | 2011-07-05 09:00 A | 2011-07-05 10:00 A | 100% | 2011-07-05 09:00 | 2011-07-05 10:00 | 1h |  | start no earlier than 2011-07-05 09:00 | Hurley | 1h | 1h |
| 138 | CIS1.2.1.17.65 | Daily Scrum Meetings 65 | 1h | 2011-07-06 09:00 A | 2011-07-06 10:00 A | 100% | 2011-07-06 09:00 | 2011-07-06 10:00 | 1h |  | start no earlier than 2011-07-06 09:00 | Hurley | 1h | 1h |
| 139 | CIS1.2.1.17.66 | Daily Scrum Meetings 66 | 1h | 2011-07-07 09:00 A | 2011-07-07 10:00 A | 100% | 2011-07-07 09:00 | 2011-07-07 10:00 | 1h |  | start no earlier than 2011-07-07 09:00 | Hurley | 1h | 1h |
| 140 | CIS1.2.1.17.67 | Daily Scrum Meetings 67 | 1h | 2011-07-08 09:00 A | 2011-07-08 10:00 A | 100% | 2011-07-08 09:00 | 2011-07-08 10:00 | 1h |  | start no earlier than 2011-07-08 09:00 | Hurley | 1h | 1h |
| 141 | CIS1.2.1.17.68 | Daily Scrum Meetings 68 | 0.5h | 2011-07-11 09:00 A | 2011-07-11 09:30 A | 100% | 2011-07-11 09:00 | 2011-07-11 10:00 | 1h |  | start no earlier than 2011-07-11 09:00 | Hurley | 0.5h | 0.5h |
| 142 | CIS1.2.1.17.69 | Daily Scrum Meetings 69 | 1h | 2011-07-12 09:00 A | 2011-07-12 10:00 A | 100% | 2011-07-12 09:00 | 2011-07-12 10:00 | 1h |  | start no earlier than 2011-07-12 09:00 | Hurley | 1h | 1h |
| 143 | CIS1.2.1.17.70 | Daily Scrum Meetings 70 | 1h | 2011-07-13 09:00 A | 2011-07-13 10:00 A | 100% | 2011-07-13 09:00 | 2011-07-13 10:00 | 1h |  | start no earlier than 2011-07-13 09:00 | Hurley | 1h | 1h |
| 144 | CIS1.2.1.17.71 | Daily Scrum Meetings 71 | 1h | 2011-07-14 09:00 A | 2011-07-14 10:00 A | 100% | 2011-07-14 09:00 | 2011-07-14 10:00 | 1h |  | start no earlier than 2011-07-14 09:00 | Hurley | 1h | 1h |
| 145 | CIS1.2.1.17.72 | Daily Scrum Meetings 72 | 1h | 2011-07-15 09:00 A | 2011-07-15 10:00 A | 100% | 2011-07-15 09:00 | 2011-07-15 10:00 | 1h |  | start no earlier than 2011-07-15 09:00 | Hurley | 1h | 1h |
| 146 | CIS1.2.1.17.73 | Daily Scrum Meetings 73 | 1h | 2011-07-18 09:00 A | 2011-07-18 10:00 A | 100% | 2011-07-18 09:00 | 2011-07-18 10:00 | 1h |  | start no earlier than 2011-07-18 09:00 | Hurley | 1h | 1h |
| 147 | CIS1.2.1.17.74 | Daily Scrum Meetings 74 | 1h | 2011-07-19 09:00 A | 2011-07-19 10:00 A | 100% | 2011-07-19 09:00 | 2011-07-19 10:00 | 1h |  | start no earlier than 2011-07-19 09:00 | Hurley | 1h | 1h |
| 148 | CIS1.2.1.17.75 | Daily Scrum Meetings 75 | 1h | 2011-07-20 09:00 A | 2011-07-20 10:00 A | 100% | 2011-07-20 09:00 | 2011-07-20 10:00 | 1h |  | start no earlier than 2011-07-20 09:00 | Hurley | 1h | 1h |
| 149 | CIS1.2.1.17.76 | Daily Scrum Meetings 76 | 1h | 2011-07-21 09:00 A | 2011-07-21 10:00 A | 100% | 2011-07-21 09:00 | 2011-07-21 10:00 | 1h |  | start no earlier than 2011-07-21 09:00 | Hurley | 1h | 1h |
| 150 | CIS1.2.1.17.77 | Daily Scrum Meetings 77 | 1h | 2011-07-22 09:00 A | 2011-07-22 10:00 A | 100% | 2011-07-22 09:00 | 2011-07-22 10:00 | 1h |  | start no earlier than 2011-07-22 09:00 | Hurley | 1h | 1h |
| 151 | CIS1.2.1.17.78 | Daily Scrum Meetings 78 | 1h | 2011-07-25 09:00 A | 2011-07-25 10:00 A | 100% | 2011-07-25 09:00 | 2011-07-25 10:00 | 1h |  | start no earlier than 2011-07-25 09:00 | Hurley | 1h | 1h |
| 152 | CIS1.2.1.17.79 | Daily Scrum Meetings 79 | 1h | 2011-07-26 09:00 A | 2011-07-26 10:00 A | 100% | 2011-07-26 09:00 | 2011-07-26 10:00 | 1h |  | start no earlier than 2011-07-26 09:00 | Hurley | 1h | 1h |
| 153 | CIS1.2.1.17.80 | Daily Scrum Meetings 80 | 1h | 2011-07-27 09:00 A | 2011-07-27 10:00 A | 100% | 2011-07-27 09:00 | 2011-07-27 10:00 | 1h |  | start no earlier than 2011-07-27 09:00 | Hurley | 1h | 1h |
| 154 | CIS1.2.1.17.81 | Daily Scrum Meetings 81 | 1h | 2011-07-28 09:00 A | 2011-07-28 10:00 A | 100% | 2011-07-28 09:00 | 2011-07-28 10:00 | 1h |  | start no earlier than 2011-07-28 09:00 | Hurley | 1h | 1h |
| 155 | CIS1.2.1.17.82 | Daily Scrum Meetings 82 | 1h | 2011-07-29 09:00 A | 2011-07-29 10:00 A | 100% | 2011-07-29 09:00 | 2011-07-29 10:00 | 1h |  | start no earlier than 2011-07-29 09:00 | Hurley | 1h | 1h |
| 156 | CIS1.2.1.17.83 | Daily Scrum Meetings 83 | 1h | 2011-08-01 09:00 A | 2011-08-01 10:00 A | 100% | 2011-08-01 09:00 | 2011-08-01 10:00 | 1h |  | start no earlier than 2011-08-01 09:00 | Hurley | 1h | 1h |
| 157 | CIS1.2.1.17.84 | Daily Scrum Meetings 84 | 1h | 2011-08-02 09:00 A | 2011-08-02 10:00 A | 100% | 2011-08-02 09:00 | 2011-08-02 10:00 | 1h |  | start no earlier than 2011-08-02 09:00 | Hurley | 1h | 1h |
| 158 | CIS1.2.1.17.85 | Daily Scrum Meetings 85 | 1h | 2011-08-03 09:00 A | 2011-08-03 10:00 A | 100% | 2011-08-03 09:00 | 2011-08-03 10:00 | 1h |  | start no earlier than 2011-08-03 09:00 | Hurley | 1h | 1h |
| 159 | CIS1.2.1.17.86 | Daily Scrum Meetings 86 | 1h | 2011-08-04 09:00 A | 2011-08-04 10:00 A | 100% | 2011-08-04 09:00 | 2011-08-04 10:00 | 1h |  | start no earlier than 2011-08-04 09:00 | Hurley | 1h | 1h |
| 160 | CIS1.2.1.17.87 | Daily Scrum Meetings 87 | 1h | 2011-08-05 09:00 A | 2011-08-05 10:00 A | 100% | 2011-08-05 09:00 | 2011-08-05 10:00 | 1h |  | start no earlier than 2011-08-05 09:00 | Hurley | 1h | 1h |
| 161 | CIS1.2.1.17.88 | Daily Scrum Meetings 88 | 1h | 2011-08-08 09:00 A | 2011-08-08 10:00 A | 100% | 2011-08-08 09:00 | 2011-08-08 10:00 | 1h |  | start no earlier than 2011-08-08 09:00 | Hurley | 1h | 1h |
| 162 | CIS1.2.1.17.89 | Daily Scrum Meetings 89 | 1h | 2011-08-09 09:00 A | 2011-08-09 10:00 A | 100% | 2011-08-09 09:00 | 2011-08-09 10:00 | 1h |  | start no earlier than 2011-08-09 09:00 | Hurley | 1h | 1h |
| 163 | CIS1.2.1.17.90 | Daily Scrum Meetings 90 | 1h | 2011-08-10 09:00 A | 2011-08-10 10:00 A | 100% | 2011-08-10 09:00 | 2011-08-10 10:00 | 1h |  | start no earlier than 2011-08-10 09:00 | Hurley | 1h | 1h |
| 164 | CIS1.2.1.17.91 | Daily Scrum Meetings 91 | 1h | 2011-08-11 09:00 A | 2011-08-11 10:00 A | 100% | 2011-08-11 09:00 | 2011-08-11 10:00 | 1h |  | start no earlier than 2011-08-11 09:00 | Hurley | 1h | 1h |
| 165 | CIS1.2.1.17.92 | Daily Scrum Meetings 92 | 1h | 2011-08-12 09:00 A | 2011-08-12 10:00 A | 100% | 2011-08-12 09:00 | 2011-08-12 10:00 | 1h |  | start no earlier than 2011-08-12 09:00 | Hurley | 1h | 1h |
| 166 | CIS1.2.1.17.93 | Daily Scrum Meetings 93 | 1h | 2011-08-15 09:00 A | 2011-08-15 10:00 A | 100% | 2011-08-15 09:00 | 2011-08-15 10:00 | 1h |  | start no earlier than 2011-08-15 09:00 | Hurley | 1h | 1h |
| 167 | CIS1.2.1.17.94 | Daily Scrum Meetings 94 | 1h | 2011-08-16 09:00 A | 2011-08-16 10:00 A | 100% | 2011-08-16 09:00 | 2011-08-16 10:00 | 1h |  | start no earlier than 2011-08-16 09:00 | Hurley | 1h | 1h |
| 168 | CIS1.2.1.17.95 | Daily Scrum Meetings 95 | 1h | 2011-08-17 09:00 A | 2011-08-17 10:00 A | 100% | 2011-08-17 09:00 | 2011-08-17 10:00 | 1h |  | start no earlier than 2011-08-17 09:00 | Hurley | 1h | 1h |
| 169 | CIS1.2.1.17.96 | Daily Scrum Meetings 96 | 1h | 2011-08-18 09:00 A | 2011-08-18 10:00 A | 100% | 2011-08-18 09:00 | 2011-08-18 10:00 | 1h |  | start no earlier than 2011-08-18 09:00 | Hurley | 1h | 1h |
| 170 | CIS1.2.1.17.97 | Daily Scrum Meetings 97 | 1h | 2011-08-19 09:00 A | 2011-08-19 10:00 A | 100% | 2011-08-19 09:00 | 2011-08-19 10:00 | 1h |  | start no earlier than 2011-08-19 09:00 | Hurley | 1h | 1h |
| 171 | CIS1.2.1.17.98 | Daily Scrum Meetings 98 | 1h | 2011-08-22 09:00 A | 2011-08-22 10:00 A | 100% | 2011-08-22 09:00 | 2011-08-22 10:00 | 1h |  | start no earlier than 2011-08-22 09:00 | Hurley | 1h | 1h |
| 172 | CIS1.2.1.17.99 | Daily Scrum Meetings 99 | 1h | 2011-08-23 09:00 A | 2011-08-23 10:00 A | 100% | 2011-08-23 09:00 | 2011-08-23 10:00 | 1h |  | start no earlier than 2011-08-23 09:00 | Hurley | 1h | 1h |
| 173 | CIS1.2.1.17.100 | Daily Scrum Meetings 100 | 1h | 2011-08-24 09:00 A | 2011-08-24 10:00 A | 100% | 2011-08-24 09:00 | 2011-08-24 10:00 | 1h |  | start no earlier than 2011-08-24 09:00 | Hurley | 0.5h | 0.5h |
| 174 | CIS1.2.1.17.101 | Daily Scrum Meetings 101 | 1h | 2011-08-25 09:00 A | 2011-08-25 10:00 A | 100% | 2011-08-25 09:00 | 2011-08-25 10:00 | 1h |  | start no earlier than 2011-08-25 09:00 | Hurley | 1h | 1h |
| 175 | CIS1.2.1.17.102 | Daily Scrum Meetings 102 | 1h | 2011-08-26 09:00 A | 2011-08-26 10:00 A | 100% | 2011-08-26 09:00 | 2011-08-26 10:00 | 1h |  | start no earlier than 2011-08-26 09:00 | Hurley | 1h | 1h |
| 176 | CIS1.2.1.17.103 | Daily Scrum Meetings 103 | 1h | 2011-08-29 09:00 A | 2011-08-29 10:00 A | 100% | 2011-08-29 09:00 | 2011-08-29 10:00 | 1h |  | start no earlier than 2011-08-29 09:00 | Hurley | 1h | 1h |
| 177 | CIS1.2.1.17.104 | Daily Scrum Meetings 104 | 1h | 2011-08-30 09:00 A | 2011-08-30 10:00 A | 100% | 2011-08-30 09:00 | 2011-08-30 10:00 | 1h |  | start no earlier than 2011-08-30 09:00 | Hurley | 1h | 1h |
| 178 | CIS1.2.1.17.105 | Daily Scrum Meetings 105 | 1h | 2011-08-31 09:00 A | 2011-08-31 10:00 A | 100% | 2011-08-31 09:00 | 2011-08-31 10:00 | 1h |  | start no earlier than 2011-08-31 09:00 | Hurley | 1h | 1h |
| 179 | CIS1.2.1.17.106 | Daily Scrum Meetings 106 | 1h | 2011-09-01 09:00 A | 2011-09-01 10:00 A | 100% | 2011-09-01 09:00 | 2011-09-01 10:00 | 1h |  | start no earlier than 2011-09-01 09:00 | Hurley | 1h | 1h |
| 180 | CIS1.2.1.17.107 | Daily Scrum Meetings 107 | 1h | 2011-09-02 09:00 A | 2011-09-02 10:00 A | 100% | 2011-09-02 09:00 | 2011-09-02 10:00 | 1h |  | start no earlier than 2011-09-02 09:00 | Hurley | 1h | 1h |
| 181 | CIS1.2.1.17.108 | Daily Scrum Meetings 108 | 1h | 2011-09-06 09:00 A | 2011-09-06 10:00 A | 100% | 2011-09-06 09:00 | 2011-09-06 10:00 | 1h |  | start no earlier than 2011-09-06 09:00 | Hurley | 1h | 1h |
| 182 | CIS1.2.1.17.109 | Daily Scrum Meetings 109 | 1h | 2011-09-07 09:00 A | 2011-09-07 10:00 A | 100% | 2011-09-07 09:00 | 2011-09-07 10:00 | 1h |  | start no earlier than 2011-09-07 09:00 | Hurley | 1h | 1h |
| 183 | CIS1.2.1.17.110 | Daily Scrum Meetings 110 | 1h | 2011-09-08 09:00 | 2011-09-08 10:00 |  | 2011-09-08 09:00 | 2011-09-08 10:00 | 1h | 114.75d | start no earlier than 2011-09-08 09:00 | Hurley | 1h |  |
| 184 | CIS1.2.1.17.111 | Daily Scrum Meetings 111 | 1h | 2011-09-09 09:00 | 2011-09-09 10:00 |  | 2011-09-09 09:00 | 2011-09-09 10:00 | 1h | 113.75d | start no earlier than 2011-09-09 09:00 | Hurley | 1h |  |
| 185 | CIS1.2.1.17.112 | Daily Scrum Meetings 112 | 1h | 2011-09-12 09:00 | 2011-09-12 10:00 |  | 2011-09-12 09:00 | 2011-09-12 10:00 | 1h | 112.75d | start no earlier than 2011-09-12 09:00 | Hurley | 1h |  |
| 186 | CIS1.2.1.17.113 | Daily Scrum Meetings 113 | 1h | 2011-09-13 09:00 | 2011-09-13 10:00 |  | 2011-09-13 09:00 | 2011-09-13 10:00 | 1h | 111.75d | start no earlier than 2011-09-13 09:00 | Hurley | 1h |  |
| 187 | CIS1.2.1.17.114 | Daily Scrum Meetings 114 | 1h | 2011-09-14 09:00 | 2011-09-14 10:00 |  | 2011-09-14 09:00 | 2011-09-14 10:00 | 1h | 110.75d | start no earlier than 2011-09-14 09:00 | Hurley | 1h |  |
| 188 | CIS1.2.1.17.115 | Daily Scrum Meetings 115 | 1h | 2011-09-15 09:00 | 2011-09-15 10:00 |  | 2011-09-15 09:00 | 2011-09-15 10:00 | 1h | 109.75d | start no earlier than 2011-09-15 09:00 | Hurley | 1h |  |
| 189 | CIS1.2.1.17.116 | Daily Scrum Meetings 116 | 1h | 2011-09-16 09:00 | 2011-09-16 10:00 |  | 2011-09-16 09:00 | 2011-09-16 10:00 | 1h | 108.75d | start no earlier than 2011-09-16 09:00 | Hurley | 1h |  |
| 190 | CIS1.2.1.17.117 | Daily Scrum Meetings 117 | 1h | 2011-09-19 09:00 | 2011-09-19 10:00 |  | 2011-09-19 09:00 | 2011-09-19 10:00 | 1h | 107.75d | start no earlier than 2011-09-19 09:00 | Hurley | 1h |  |
| 191 | CIS1.2.1.17.118 | Daily Scrum Meetings 118 | 1h | 2011-09-20 09:00 | 2011-09-20 10:00 |  | 2011-09-20 09:00 | 2011-09-20 10:00 | 1h | 106.75d | start no earlier than 2011-09-20 09:00 | Hurley | 1h |  |
| 192 | CIS1.2.1.17.119 | Daily Scrum Meetings 119 | 1h | 2011-09-21 09:00 | 2011-09-21 10:00 |  | 2011-09-21 09:00 | 2011-09-21 10:00 | 1h | 105.75d | start no earlier than 2011-09-21 09:00 | Hurley | 1h |  |
| 193 | CIS1.2.1.17.120 | Daily Scrum Meetings 120 | 1h | 2011-09-22 09:00 | 2011-09-22 10:00 |  | 2011-09-22 09:00 | 2011-09-22 10:00 | 1h | 104.75d | start no earlier than 2011-09-22 09:00 | Hurley | 1h |  |
| 194 | CIS1.2.1.17.121 | Daily Scrum Meetings 121 | 1h | 2011-09-23 09:00 | 2011-09-23 10:00 |  | 2011-09-23 09:00 | 2011-09-23 10:00 | 1h | 103.75d | start no earlier than 2011-09-23 09:00 | Hurley | 1h |  |
| 195 | CIS1.2.1.17.122 | Daily Scrum Meetings 122 | 1h | 2011-09-26 09:00 | 2011-09-26 10:00 |  | 2011-09-26 09:00 | 2011-09-26 10:00 | 1h | 102.75d | start no earlier than 2011-09-26 09:00 | Hurley | 1h |  |
| 196 | CIS1.2.1.17.123 | Daily Scrum Meetings 123 | 1h | 2011-09-27 09:00 | 2011-09-27 10:00 |  | 2011-09-27 09:00 | 2011-09-27 10:00 | 1h | 101.75d | start no earlier than 2011-09-27 09:00 | Hurley | 1h |  |
| 197 | CIS1.2.1.17.124 | Daily Scrum Meetings 124 | 1h | 2011-09-28 09:00 | 2011-09-28 10:00 |  | 2011-09-28 09:00 | 2011-09-28 10:00 | 1h | 100.75d | start no earlier than 2011-09-28 09:00 | Hurley | 1h |  |
| 198 | CIS1.2.1.17.125 | Daily Scrum Meetings 125 | 1h | 2011-09-29 09:00 | 2011-09-29 10:00 |  | 2011-09-29 09:00 | 2011-09-29 10:00 | 1h | 99.75d | start no earlier than 2011-09-29 09:00 | Hurley | 1h |  |
| 199 | CIS1.2.1.17.126 | Daily Scrum Meetings 126 | 1h | 2011-09-30 09:00 | 2011-09-30 10:00 |  | 2011-09-30 09:00 | 2011-09-30 10:00 | 1h | 98.75d | start no earlier than 2011-09-30 09:00 | Hurley | 1h |  |

| ID | WBS | Task | Type | Duration | Start | Finish | Predecessors | Complete | Remaining | Baseline start | Baseline finish | Baseline duration | Total slack | Constraint | Resources | Work | Actual work |
| --- | --- | --- | --- | --- | --- | --- | --- | --- | --- | --- | --- | --- | --- | --- | --- | --- | --- |
| 200 | CIS1.2.2 | **Schedule Management** |  | 192.88d | 2011-03-29 09:00 A | 2011-12-30 17:00 |  | 25% | 144.28d | 2011-03-29 09:00 | 2011-09-26 09:00 | 127d | 37d |  |  | 372h | 151.5h |
| 201 | CIS1.2.2.1 | Create Initial Schedule |  | 4.5d | 2011-03-29 09:00 A | 2011-04-04 14:00 A |  | 100% |  | 2011-03-29 09:00 | 2011-04-04 14:00 | 4.5d |  | finish no earlier than 2011-04-04 13:00 | Hurley [25%] | 9h | 9h |
| 202 | CIS1.2.2.2 | 3 Week Transition Schedule |  | 2.5d | 2011-04-05 04:00 A | 2011-04-07 12:00 A | 201 | 100% |  | 2011-04-05 04:00 | 2011-04-07 12:00 | 2.5d |  | finish no earlier than 2011-04-07 13:00 | Hurley | 20h | 20h |
| 203 | CIS1.2.2.3 | Draft 1 Full Project Schedule |  | 5d | 2011-04-18 09:00 A | 2011-04-25 09:00 A |  | 100% |  | 2011-04-18 09:00 | 2011-04-25 09:00 | 5d |  | start no earlier than 2011-04-18 04:00 | Hurley [25%] | 10h | 10h |
| 204 | CIS1.2.2.4 | Schedule Issued for Review | milestone | 0d | 2011-04-22 17:00 A | 2011-04-22 17:00 A | 203 | 100% |  | 2011-04-22 17:00 | 2011-04-22 17:00 | 0d |  |  | Hurley |  |  |
| 205 | CIS1.2.2.5 | Schedule Baseline 0 Complete | milestone | 0d | 2011-05-09 04:00 A | 2011-05-09 09:00 A | 40, 204 | 100% |  | 2011-05-09 04:00 | 2011-05-09 09:00 | 0d |  | start no earlier than 2011-05-09 04:00 | Hurley |  |  |
| 206 | CIS1.2.2.6 | Update plan based on architectural updates to the overall solution |  | 3d | 2011-06-10 08:00 A | 2011-06-14 17:00 A | 62 | 100% |  | 2011-06-10 08:00 | 2011-06-14 17:00 | 3d |  |  | Hurley | 16h | 16h |
| 207 | CIS1.2.2.7 | Schedule Baseline 1 Complete |  | 0.5d | 2011-06-17 08:00 A | 2011-06-17 12:00 A | 206 | 100% |  | 2011-06-17 08:00 | 2011-06-17 12:00 | 0.5d |  | start no earlier than 2011-06-17 08:00 |  |  |  |
| 208 | CIS1.2.2.8 | Schedule Baseline 2 Complete |  | 0.5d | 2011-07-08 08:00 A | 2011-07-08 12:00 A | 207 | 100% |  | 2011-07-05 08:00 | 2011-07-05 12:00 | 0.5d |  | start no earlier than 2011-07-08 08:00 |  |  |  |
| 209 | CIS1.2.2.9 | Progress Reporting Established (SPI, SV, CPI, CV) |  | 70.5d | 2011-05-27 08:00 A | 2011-12-02 17:00 | 206 | 4% | 68d | 2011-05-27 08:00 | 2011-07-27 12:00 | 16.5d | 56d | finish no earlier than 2011-05-27 17:00 | Hurley [25%]; Undale | 50.5h | 15h |
| 210 | CIS1.2.2.11 | Daily Schedule Management |  | 118d | 2011-07-13 08:00 A | 2011-12-30 17:00 | 382 | 26% | 87d |  |  |  | 37d | start no earlier than 2011-07-13 08:00 | Hurley [25%] | 231h | 62h |
| 211 | CIS1.2.2.10 | **Schedule Progress Review** |  | 185d | 2011-04-04 09:00 A | 2011-12-27 09:00 |  | 63% | 68.84d | 2011-04-04 09:00 | 2011-09-26 09:00 | 123d | 40.88d |  |  | 35.5h | 19.5h |
| 212 | CIS1.2.2.10.1 | Schedule Progress Review 1 |  | 1h | 2011-04-04 09:00 A | 2011-04-04 10:00 A |  | 100% |  | 2011-04-04 09:00 | 2011-04-04 10:00 | 1h |  | start no earlier than 2011-04-04 04:00 | Hurley | 1h | 1h |
| 213 | CIS1.2.2.10.2 | Schedule Progress Review 2 |  | 1h | 2011-04-11 09:00 A | 2011-04-11 10:00 A |  | 100% |  | 2011-04-11 09:00 | 2011-04-11 10:00 | 1h |  | start no earlier than 2011-04-11 04:00 | Hurley | 1h | 1h |
| 214 | CIS1.2.2.10.3 | Schedule Progress Review 3 |  | 1h | 2011-04-18 09:00 A | 2011-04-18 10:00 A |  | 100% |  | 2011-04-18 09:00 | 2011-04-18 10:00 | 1h |  | start no earlier than 2011-04-18 04:00 | Hurley | 1h | 1h |
| 215 | CIS1.2.2.10.4 | Schedule Progress Review 4 |  | 1h | 2011-04-26 04:00 A | 2011-04-26 09:00 A |  | 100% |  | 2011-04-26 04:00 | 2011-04-26 09:00 | 1h |  | start no earlier than 2011-04-25 04:00 | Hurley | 1h | 1h |
| 216 | CIS1.2.2.10.5 | Schedule Progress Review 5 |  | 1h | 2011-05-02 09:00 A | 2011-05-02 10:00 A |  | 100% |  | 2011-05-02 09:00 | 2011-05-02 10:00 | 1h |  | start no earlier than 2011-05-02 04:00 | Hurley | 1h | 1h |
| 217 | CIS1.2.2.10.6 | Schedule Progress Review 6 |  | 1h | 2011-05-09 09:00 A | 2011-05-09 10:00 A |  | 100% |  | 2011-05-09 09:00 | 2011-05-09 10:00 | 1h |  | start no earlier than 2011-05-09 04:00 | Hurley | 1h | 1h |
| 218 | CIS1.2.2.10.7 | Schedule Progress Review 7 |  | 1h | 2011-05-16 09:00 A | 2011-05-16 10:00 A |  | 100% |  | 2011-05-16 09:00 | 2011-05-16 10:00 | 1h |  | start no earlier than 2011-05-16 04:00 | Hurley | 1h | 1h |
| 219 | CIS1.2.2.10.8 | Schedule Progress Review 8 |  | 1h | 2011-05-23 09:00 A | 2011-05-23 10:00 A |  | 100% |  | 2011-05-23 09:00 | 2011-05-23 10:00 | 1h |  | start no earlier than 2011-05-23 04:00 | Hurley | 1h | 1h |
| 220 | CIS1.2.2.10.9 | Schedule Progress Review 9 |  | 1h | 2011-05-31 09:00 A | 2011-05-31 10:00 A |  | 100% |  | 2011-05-31 09:00 | 2011-05-31 10:00 | 1h |  | start no earlier than 2011-05-30 04:00 | Hurley | 1h | 1h |
| 221 | CIS1.2.2.10.10 | Schedule Progress Review 10 |  | 1h | 2011-06-06 09:00 A | 2011-06-06 10:00 A |  | 100% |  | 2011-06-06 09:00 | 2011-06-06 10:00 | 1h |  | start no earlier than 2011-06-06 04:00 | Hurley | 1h | 1h |
| 222 | CIS1.2.2.10.11 | Schedule Progress Review 11 |  | 1h | 2011-06-13 08:00 A | 2011-06-13 09:00 A |  | 100% |  | 2011-06-13 08:00 | 2011-06-13 09:00 | 1h |  | start no earlier than 2011-06-13 04:00 | Hurley | 1h | 1h |
| 223 | CIS1.2.2.10.12 | Schedule Progress Review 12 (Cancelled) | milestone | 0h | 2011-06-20 04:00 A | 2011-06-20 04:00 A |  | 100% |  | 2011-06-20 08:00 | 2011-06-20 09:00 | 1h |  | start no earlier than 2011-06-20 04:00 | Hurley |  |  |
| 224 | CIS1.2.2.10.13 | Schedule Progress Review 13 (Cancelled) | milestone | 0h | 2011-06-27 04:00 A | 2011-06-27 04:00 A |  | 100% |  | 2011-06-27 08:00 | 2011-06-27 09:00 | 1h |  | start no earlier than 2011-06-27 04:00 | Hurley |  |  |
| 225 | CIS1.2.2.10.14 | Schedule Progress Review 14 |  | 1h | 2011-07-05 08:00 A | 2011-07-05 09:00 A |  | 100% |  | 2011-07-05 08:00 | 2011-07-05 09:00 | 1h |  | start no earlier than 2011-07-04 04:00 | Hurley | 1h | 1h |
| 226 | CIS1.2.2.10.15 | Schedule Progress Review 15 (Cancelled due to TRANSCEND mtg) | milestone | 0h | 2011-07-11 04:00 A | 2011-07-11 04:00 A |  | 100% |  | 2011-07-11 08:00 | 2011-07-11 09:00 | 1h |  | start no earlier than 2011-07-11 04:00 | Hurley |  |  |
| 227 | CIS1.2.2.10.16 | Schedule Progress Review 16 |  | 1h | 2011-07-18 08:00 A | 2011-07-18 09:00 A |  | 100% |  | 2011-07-18 08:00 | 2011-07-18 09:00 | 1h |  | start no earlier than 2011-07-18 04:00 | Hurley | 1h | 1h |
| 228 | CIS1.2.2.10.17 | Schedule Progress Review 17 |  | 1h | 2011-07-25 08:00 A | 2011-07-25 09:00 A |  | 100% |  | 2011-07-25 08:00 | 2011-07-25 09:00 | 1h |  | start no earlier than 2011-07-25 04:00 | Hurley | 1h | 1h |
| 229 | CIS1.2.2.10.18 | Schedule Progress Review 18 |  | 1h | 2011-08-01 08:00 A | 2011-08-01 09:00 A |  | 100% |  | 2011-08-01 08:00 | 2011-08-01 09:00 | 1h |  | start no earlier than 2011-08-01 04:00 | Hurley | 1h | 1h |
| 230 | CIS1.2.2.10.19 | Schedule Progress Review 19 |  | 1h | 2011-08-08 08:00 A | 2011-08-08 09:00 A |  | 100% |  | 2011-08-08 08:00 | 2011-08-08 09:00 | 1h |  | start no earlier than 2011-08-08 04:00 | Hurley | 1h | 1h |
| 231 | CIS1.2.2.10.20 | Schedule Progress Review 20 |  | 1h | 2011-08-15 08:00 A | 2011-08-15 09:00 A |  | 100% |  | 2011-08-15 08:00 | 2011-08-15 09:00 | 1h |  | start no earlier than 2011-08-15 04:00 | Hurley | 1h | 1h |
| 232 | CIS1.2.2.10.21 | Schedule Progress Review 21 |  | 8h | 2011-08-22 08:00 A | 2011-08-22 17:00 A |  | 100% |  | 2011-08-22 08:00 | 2011-08-22 09:00 | 1h |  | start no earlier than 2011-08-22 04:00 | Hurley [6.2%] | 0.5h | 0.5h |
| 233 | CIS1.2.2.10.22 | Schedule Progress Review 22 |  | 1h | 2011-08-29 08:00 A | 2011-08-29 09:00 A |  | 100% |  | 2011-08-29 08:00 | 2011-08-29 09:00 | 1h |  | start no earlier than 2011-08-29 04:00 | Hurley | 1h | 1h |
| 234 | CIS1.2.2.10.23 | Schedule Progress Review 23 |  | 1h | 2011-09-06 08:00 A | 2011-09-06 09:00 A |  | 100% |  | 2011-09-06 08:00 | 2011-09-06 09:00 | 1h |  | start no earlier than 2011-09-05 04:00 | Hurley | 1h | 1h |
| 235 | CIS1.2.2.10.24 | Schedule Progress Review 24 |  | 1h | 2011-09-12 08:00 | 2011-09-12 09:00 |  |  |  | 2011-09-12 08:00 | 2011-09-12 09:00 | 1h | 112.88d | start no earlier than 2011-09-12 04:00 | Hurley | 1h |  |
| 236 | CIS1.2.2.10.25 | Schedule Progress Review 25 |  | 1h | 2011-09-19 08:00 | 2011-09-19 09:00 |  |  |  | 2011-09-19 08:00 | 2011-09-19 09:00 | 1h | 107.88d | start no earlier than 2011-09-19 04:00 | Hurley | 1h |  |
| 237 | CIS1.2.2.10.26 | Schedule Progress Review 26 |  | 1h | 2011-09-26 08:00 | 2011-09-26 09:00 |  |  |  | 2011-09-26 08:00 | 2011-09-26 09:00 | 1h | 102.88d | start no earlier than 2011-09-26 04:00 | Hurley | 1h |  |
| 238 | CIS1.2.2.10.27 | Schedule Progress Review 27 |  | 1h | 2011-10-03 08:00 | 2011-10-03 09:00 |  |  |  |  |  |  | 97.88d | start no earlier than 2011-10-03 04:00 | Hurley | 1h |  |
| 239 | CIS1.2.2.10.28 | Schedule Progress Review 28 |  | 1h | 2011-10-11 08:00 | 2011-10-11 09:00 |  |  |  |  |  |  | 92.88d | start no earlier than 2011-10-10 04:00 | Hurley | 1h |  |
| 240 | CIS1.2.2.10.29 | Schedule Progress Review 29 |  | 1h | 2011-10-17 08:00 | 2011-10-17 09:00 |  |  |  |  |  |  | 88.88d | start no earlier than 2011-10-17 04:00 | Hurley | 1h |  |
| 241 | CIS1.2.2.10.30 | Schedule Progress Review 30 |  | 1h | 2011-10-24 08:00 | 2011-10-24 09:00 |  |  |  |  |  |  | 83.88d | start no earlier than 2011-10-24 04:00 | Hurley | 1h |  |
| 242 | CIS1.2.2.10.31 | Schedule Progress Review 31 |  | 1h | 2011-10-31 08:00 | 2011-10-31 09:00 |  |  |  |  |  |  | 78.88d | start no earlier than 2011-10-31 04:00 | Hurley | 1h |  |
| 243 | CIS1.2.2.10.32 | Schedule Progress Review 32 |  | 1h | 2011-11-07 08:00 | 2011-11-07 09:00 |  |  |  |  |  |  | 73.88d | start no earlier than 2011-11-07 04:00 | Hurley | 1h |  |
| 244 | CIS1.2.2.10.33 | Schedule Progress Review 33 |  | 1h | 2011-11-14 08:00 | 2011-11-14 09:00 |  |  |  |  |  |  | 69.88d | start no earlier than 2011-11-14 04:00 | Hurley | 1h |  |
| 245 | CIS1.2.2.10.34 | Schedule Progress Review 34 |  | 1h | 2011-11-21 08:00 | 2011-11-21 09:00 |  |  |  |  |  |  | 64.88d | start no earlier than 2011-11-21 04:00 | Hurley | 1h |  |
| 246 | CIS1.2.2.10.35 | Schedule Progress Review 35 |  | 1h | 2011-11-28 08:00 | 2011-11-28 09:00 |  |  |  |  |  |  | 60.88d | start no earlier than 2011-11-28 04:00 | Hurley | 1h |  |
| 247 | CIS1.2.2.10.36 | Schedule Progress Review 36 |  | 1h | 2011-12-05 08:00 | 2011-12-05 09:00 |  |  |  |  |  |  | 55.88d | start no earlier than 2011-12-05 04:00 | Hurley | 1h |  |
| 248 | CIS1.2.2.10.37 | Schedule Progress Review 37 |  | 1h | 2011-12-12 08:00 | 2011-12-12 09:00 |  |  |  |  |  |  | 50.88d | start no earlier than 2011-12-12 04:00 | Hurley | 1h |  |
| 249 | CIS1.2.2.10.38 | Schedule Progress Review 38 |  | 1h | 2011-12-19 08:00 | 2011-12-19 09:00 |  |  |  |  |  |  | 45.88d | start no earlier than 2011-12-19 04:00 | Hurley | 1h |  |
| 250 | CIS1.2.2.10.39 | Schedule Progress Review 39 |  | 1h | 2011-12-27 08:00 | 2011-12-27 09:00 |  |  |  |  |  |  | 40.88d | start no earlier than 2011-12-26 04:00 | Hurley | 1h |  |

Notes:
- 205: Proposed Architectural Solution Key Deliverable to Baseline Plan
- 209: Started this task early to get a framework in place that PMO can use.

| ID | WBS | Task | Duration | Start | Finish | Complete | Remaining | Baseline start | Baseline finish | Baseline duration | Total slack | Constraint | Resources | Work | Actual work |
| --- | --- | --- | --- | --- | --- | --- | --- | --- | --- | --- | --- | --- | --- | --- | --- |
| 251 | CIS1.2.3 | **Cost Management** | 194d | 2011-03-28 08:00 A | 2011-12-30 17:00 | 55% | 88d | 2011-03-28 08:00 | 2011-09-30 13:00 | 132.5d | 37d |  |  | 600h | 485.43h |
| 252 | CIS1.2.3.1 | SAIC-F Cost Management Per Schedule and Resource (GOVT/SAIC-F Only) | 194d | 2011-03-28 08:00 A | 2011-12-30 17:00 | 55% | 88d | 2011-03-28 08:00 | 2011-09-30 13:00 | 132.5d | 37d | finish no earlier than 2011-12-30 17:00 | Undale | 600h | 485.43h |
| 253 | CIS1.2.4 | **Quality Management** | 15d | 2011-04-15 09:00 A | 2011-05-06 09:00 A | 100% |  | 2011-04-15 09:00 | 2011-05-06 09:00 | 15d |  |  |  | 120h | 120h |
| 254 | CIS1.2.4.1 | Quality Management Plan | 15d | 2011-04-15 09:00 A | 2011-05-06 09:00 A | 100% |  | 2011-04-15 09:00 | 2011-05-06 09:00 | 15d |  | start no earlier than 2011-04-15 04:00 | Pierce | 120h | 120h |
| 255 | CIS1.2.5 | **Resource Management** | 165.12d | 2011-04-04 04:00 A | 2011-11-28 09:00 | 66% | 56.61d | 2011-04-04 04:00 | 2011-09-26 09:00 | 123.12d | 60.88d |  |  | 26.25h | 17.25h |
| 256 | CIS1.2.5.1 | **SAIC-F Weekly Review** | 165.12d | 2011-04-04 04:00 A | 2011-11-28 09:00 | 66% | 56.61d | 2011-04-04 04:00 | 2011-09-26 09:00 | 123.12d | 60.88d |  |  | 26.25h | 17.25h |
| 257 | CIS1.2.5.1.1 | SAIC-F Weekly Review 1 | 1h | 2011-04-04 04:00 A | 2011-04-04 09:00 A | 100% |  | 2011-04-04 04:00 | 2011-04-04 09:00 | 1h |  | start no earlier than 2011-04-04 04:00 | Cabral [75%] | 0.75h | 0.75h |
| 258 | CIS1.2.5.1.2 | SAIC-F Weekly Review 2 | 1h | 2011-04-11 09:00 A | 2011-04-11 10:00 A | 100% |  | 2011-04-11 09:00 | 2011-04-11 10:00 | 1h |  | start no earlier than 2011-04-11 04:00 | Cabral [75%] | 0.75h | 0.75h |
| 259 | CIS1.2.5.1.3 | SAIC-F Weekly Review 3 | 1h | 2011-04-18 09:00 A | 2011-04-18 10:00 A | 100% |  | 2011-04-18 09:00 | 2011-04-18 10:00 | 1h |  | start no earlier than 2011-04-18 04:00 | Cabral [75%] | 0.75h | 0.75h |
| 260 | CIS1.2.5.1.4 | SAIC-F Weekly Review 4 | 1h | 2011-04-26 09:00 A | 2011-04-26 10:00 A | 100% |  | 2011-04-26 09:00 | 2011-04-26 10:00 | 1h |  | start no earlier than 2011-04-26 04:00 | Cabral [75%] | 0.75h | 0.75h |
| 261 | CIS1.2.5.1.5 | SAIC-F Weekly Review 5 | 1h | 2011-05-02 09:00 A | 2011-05-02 10:00 A | 100% |  | 2011-05-02 09:00 | 2011-05-02 10:00 | 1h |  | start no earlier than 2011-05-02 04:00 | Cabral [75%] | 0.75h | 0.75h |
| 262 | CIS1.2.5.1.6 | SAIC-F Weekly Review 6 | 1h | 2011-05-09 09:00 A | 2011-05-09 10:00 A | 100% |  | 2011-05-09 09:00 | 2011-05-09 10:00 | 1h |  | start no earlier than 2011-05-09 04:00 | Cabral [75%] | 0.75h | 0.75h |
| 263 | CIS1.2.5.1.7 | SAIC-F Weekly Review 7 | 1h | 2011-05-16 09:00 A | 2011-05-16 10:00 A | 100% |  | 2011-05-16 09:00 | 2011-05-16 10:00 | 1h |  | start no earlier than 2011-05-16 04:00 | Cabral [75%] | 0.75h | 0.75h |
| 264 | CIS1.2.5.1.8 | SAIC-F Weekly Review 8 | 1h | 2011-05-23 09:00 A | 2011-05-23 10:00 A | 100% |  | 2011-05-23 09:00 | 2011-05-23 10:00 | 1h |  | start no earlier than 2011-05-23 04:00 | Cabral [75%] | 0.75h | 0.75h |
| 265 | CIS1.2.5.1.9 | SAIC-F Weekly Review 9 | 1h | 2011-05-31 09:00 A | 2011-05-31 10:00 A | 100% |  | 2011-05-31 09:00 | 2011-05-31 10:00 | 1h |  | start no earlier than 2011-05-30 04:00 | Cabral [75%] | 0.75h | 0.75h |
| 266 | CIS1.2.5.1.10 | SAIC-F Weekly Review 10 | 1h | 2011-06-06 09:00 A | 2011-06-06 10:00 A | 100% |  | 2011-06-06 09:00 | 2011-06-06 10:00 | 1h |  | start no earlier than 2011-06-06 04:00 | Cabral [75%] | 0.75h | 0.75h |
| 267 | CIS1.2.5.1.11 | SAIC-F Weekly Review 11 | 1h | 2011-06-13 08:00 A | 2011-06-13 09:00 A | 100% |  | 2011-06-13 08:00 | 2011-06-13 09:00 | 1h |  | start no earlier than 2011-06-13 04:00 | Cabral [75%] | 0.75h | 0.75h |
| 268 | CIS1.2.5.1.12 | SAIC-F Weekly Review 12 | 1h | 2011-06-20 08:00 A | 2011-06-20 09:00 A | 100% |  | 2011-06-20 08:00 | 2011-06-20 09:00 | 1h |  | start no earlier than 2011-06-20 04:00 | Cabral [75%] | 0.75h | 0.75h |
| 269 | CIS1.2.5.1.13 | SAIC-F Weekly Review 13 | 1h | 2011-06-27 08:00 A | 2011-06-27 09:00 A | 100% |  | 2011-06-27 08:00 | 2011-06-27 09:00 | 1h |  | start no earlier than 2011-06-27 04:00 | Cabral [75%] | 0.75h | 0.75h |
| 270 | CIS1.2.5.1.14 | SAIC-F Weekly Review 14 | 1h | 2011-07-05 08:00 A | 2011-07-05 09:00 A | 100% |  | 2011-07-05 08:00 | 2011-07-05 09:00 | 1h |  | start no earlier than 2011-07-04 04:00 | Cabral [75%] | 0.75h | 0.75h |
| 271 | CIS1.2.5.1.15 | SAIC-F Weekly Review 15 | 1h | 2011-07-11 08:00 A | 2011-07-11 09:00 A | 100% |  | 2011-07-11 08:00 | 2011-07-11 09:00 | 1h |  | start no earlier than 2011-07-11 04:00 | Cabral [75%] | 0.75h | 0.75h |
| 272 | CIS1.2.5.1.16 | SAIC-F Weekly Review 16 | 1h | 2011-07-18 08:00 A | 2011-07-18 09:00 A | 100% |  | 2011-07-18 08:00 | 2011-07-18 09:00 | 1h |  | start no earlier than 2011-07-18 04:00 | Cabral [75%] | 0.75h | 0.75h |
| 273 | CIS1.2.5.1.17 | SAIC-F Weekly Review 17 | 1h | 2011-07-25 08:00 A | 2011-07-25 09:00 A | 100% |  | 2011-07-25 08:00 | 2011-07-25 09:00 | 1h |  | start no earlier than 2011-07-25 04:00 | Cabral [75%] | 0.75h | 0.75h |
| 274 | CIS1.2.5.1.18 | SAIC-F Weekly Review 18 | 1h | 2011-08-01 08:00 A | 2011-08-01 09:00 A | 100% |  | 2011-08-01 08:00 | 2011-08-01 09:00 | 1h |  | start no earlier than 2011-08-01 04:00 | Cabral [75%] | 0.75h | 0.75h |
| 275 | CIS1.2.5.1.19 | SAIC-F Weekly Review 19 | 1h | 2011-08-08 08:00 A | 2011-08-08 09:00 A | 100% |  | 2011-08-08 08:00 | 2011-08-08 09:00 | 1h |  | start no earlier than 2011-08-08 04:00 | Cabral [75%] | 0.75h | 0.75h |
| 276 | CIS1.2.5.1.20 | SAIC-F Weekly Review 20 | 1h | 2011-08-15 08:00 A | 2011-08-15 09:00 A | 100% |  | 2011-08-15 08:00 | 2011-08-15 09:00 | 1h |  | start no earlier than 2011-08-15 04:00 | Cabral [75%] | 0.75h | 0.75h |
| 277 | CIS1.2.5.1.21 | SAIC-F Weekly Review 21 | 1h | 2011-08-22 08:00 A | 2011-08-22 09:00 A | 100% |  | 2011-08-22 08:00 | 2011-08-22 09:00 | 1h |  | start no earlier than 2011-08-22 04:00 | Cabral [75%] | 0.75h | 0.75h |
| 278 | CIS1.2.5.1.22 | SAIC-F Weekly Review 22 | 1h | 2011-08-29 08:00 A | 2011-08-29 09:00 A | 100% |  | 2011-08-29 08:00 | 2011-08-29 09:00 | 1h |  | start no earlier than 2011-08-29 04:00 | Cabral [75%] | 0.75h | 0.75h |
| 279 | CIS1.2.5.1.23 | SAIC-F Weekly Review 23 | 1h | 2011-09-06 08:00 A | 2011-09-06 09:00 A | 100% |  | 2011-09-06 08:00 | 2011-09-06 09:00 | 1h |  | start no earlier than 2011-09-05 04:00 | Cabral [75%] | 0.75h | 0.75h |
| 280 | CIS1.2.5.1.24 | SAIC-F Weekly Review 24 | 1h | 2011-09-12 08:00 | 2011-09-12 09:00 |  |  | 2011-09-12 08:00 | 2011-09-12 09:00 | 1h | 112.88d | start no earlier than 2011-09-12 04:00 | Cabral [75%] | 0.75h |  |
| 281 | CIS1.2.5.1.25 | SAIC-F Weekly Review 25 | 1h | 2011-09-19 08:00 | 2011-09-19 09:00 |  |  | 2011-09-19 08:00 | 2011-09-19 09:00 | 1h | 107.88d | start no earlier than 2011-09-19 04:00 | Cabral [75%] | 0.75h |  |
| 282 | CIS1.2.5.1.26 | SAIC-F Weekly Review 26 | 1h | 2011-09-26 08:00 | 2011-09-26 09:00 |  |  | 2011-09-26 08:00 | 2011-09-26 09:00 | 1h | 102.88d | start no earlier than 2011-09-26 04:00 | Cabral [75%] | 0.75h |  |
| 283 | CIS1.2.5.1.27 | SAIC-F Weekly Review 27 | 1h | 2011-10-03 08:00 | 2011-10-03 09:00 |  |  |  |  |  | 97.88d | start no earlier than 2011-10-03 04:00 | Cabral [75%] | 0.75h |  |
| 284 | CIS1.2.5.1.28 | SAIC-F Weekly Review 28 | 1h | 2011-10-11 08:00 | 2011-10-11 09:00 |  |  |  |  |  | 92.88d | start no earlier than 2011-10-10 04:00 | Cabral [75%] | 0.75h |  |
| 285 | CIS1.2.5.1.29 | SAIC-F Weekly Review 29 | 1h | 2011-10-17 08:00 | 2011-10-17 09:00 |  |  |  |  |  | 88.88d | start no earlier than 2011-10-17 04:00 | Cabral [75%] | 0.75h |  |
| 286 | CIS1.2.5.1.30 | SAIC-F Weekly Review 30 | 1h | 2011-10-24 08:00 | 2011-10-24 09:00 |  |  |  |  |  | 83.88d | start no earlier than 2011-10-24 04:00 | Cabral [75%] | 0.75h |  |
| 287 | CIS1.2.5.1.31 | SAIC-F Weekly Review 31 | 1h | 2011-10-31 08:00 | 2011-10-31 09:00 |  |  |  |  |  | 78.88d | start no earlier than 2011-10-31 04:00 | Cabral [75%] | 0.75h |  |
| 288 | CIS1.2.5.1.32 | SAIC-F Weekly Review 32 | 1h | 2011-11-07 08:00 | 2011-11-07 09:00 |  |  |  |  |  | 73.88d | start no earlier than 2011-11-07 04:00 | Cabral [75%] | 0.75h |  |
| 289 | CIS1.2.5.1.33 | SAIC-F Weekly Review 33 | 1h | 2011-11-14 08:00 | 2011-11-14 09:00 |  |  |  |  |  | 69.88d | start no earlier than 2011-11-14 04:00 | Cabral [75%] | 0.75h |  |
| 290 | CIS1.2.5.1.34 | SAIC-F Weekly Review 34 | 1h | 2011-11-21 08:00 | 2011-11-21 09:00 |  |  |  |  |  | 64.88d | start no earlier than 2011-11-21 04:00 | Cabral [75%] | 0.75h |  |
| 291 | CIS1.2.5.1.35 | SAIC-F Weekly Review 35 | 1h | 2011-11-28 08:00 | 2011-11-28 09:00 |  |  |  |  |  | 60.88d | start no earlier than 2011-11-28 04:00 | Cabral [75%] | 0.75h |  |

| ID | WBS | Task | Type | Duration | Start | Finish | Complete | Remaining | Baseline start | Baseline finish | Baseline duration | Total slack | Constraint | Resources | Work | Actual work |
| --- | --- | --- | --- | --- | --- | --- | --- | --- | --- | --- | --- | --- | --- | --- | --- | --- |
| 292 | CIS1.2.6 | **Communications Management** |  | 180.94d | 2011-04-12 09:00 A | 2011-12-29 08:30 | 92% | 15.38d | 2011-04-12 09:00 | 2011-09-30 13:00 | 121.38d | 38.94d |  |  | 40h | 31.5h |
| 293 | CIS1.2.6.1 | Stakeholder Strategy Document (Includes SH Register) |  | 10d | 2011-04-12 09:00 A | 2011-04-26 09:00 A | 100% |  | 2011-04-12 09:00 | 2011-04-26 09:00 | 10d |  | start no earlier than 2011-04-12 04:00 | Hurley [25%] | 20h | 20h |
| 294 | CIS1.2.6.2 | **Weekly DSL Progress Meetings** |  | 180.94d | 2011-04-12 09:00 A | 2011-12-29 08:30 | 57% | 76.9d | 2011-04-12 09:00 | 2011-09-27 08:30 | 117.94d | 38.94d |  |  | 20h | 11.5h |
| 295 | CIS1.2.6.2.1 | Weekly DSL Progress Meetings 1 |  | 0.5h | 2011-04-12 09:00 A | 2011-04-12 09:30 A | 100% |  | 2011-04-12 09:00 | 2011-04-12 09:30 | 0.5h |  | start no earlier than 2011-04-12 04:00 | Hurley | 0.5h | 0.5h |
| 296 | CIS1.2.6.2.2 | Weekly DSL Progress Meetings 2 |  | 0.5h | 2011-04-19 09:00 A | 2011-04-19 09:30 A | 100% |  | 2011-04-19 09:00 | 2011-04-19 09:30 | 0.5h |  | start no earlier than 2011-04-19 04:00 | Hurley | 0.5h | 0.5h |
| 297 | CIS1.2.6.2.3 | Weekly DSL Progress Meetings 3 |  | 0.5h | 2011-04-26 09:00 A | 2011-04-26 09:30 A | 100% |  | 2011-04-26 09:00 | 2011-04-26 09:30 | 0.5h |  | start no earlier than 2011-04-26 04:00 | Hurley | 0.5h | 0.5h |
| 298 | CIS1.2.6.2.4 | Weekly DSL Progress Meetings 4 |  | 0.5h | 2011-05-03 09:00 A | 2011-05-03 09:30 A | 100% |  | 2011-05-03 09:00 | 2011-05-03 09:30 | 0.5h |  | start no earlier than 2011-05-03 04:00 | Hurley | 0.5h | 0.5h |
| 299 | CIS1.2.6.2.5 | Weekly DSL Progress Meetings 5 |  | 0.5h | 2011-05-10 08:00 A | 2011-05-10 08:30 A | 100% |  | 2011-05-10 08:00 | 2011-05-10 08:30 | 0.5h |  | start no earlier than 2011-05-10 04:00 | Hurley | 0.5h | 0.5h |
| 300 | CIS1.2.6.2.6 | Weekly DSL Progress Meetings 6 |  | 0.5h | 2011-05-17 09:00 A | 2011-05-17 09:30 A | 100% |  | 2011-05-17 09:00 | 2011-05-17 09:30 | 0.5h |  | start no earlier than 2011-05-17 04:00 | Hurley | 0.5h | 0.5h |
| 301 | CIS1.2.6.2.7 | Weekly DSL Progress Meetings 7 (Meeting Cancelled) |  | 0.5h | 2011-05-24 09:00 A | 2011-05-24 09:30 A | 100% |  | 2011-05-24 09:00 | 2011-05-24 09:30 | 0.5h |  | start no earlier than 2011-05-24 04:00 | Hurley | 0.5h | 0.5h |
| 302 | CIS1.2.6.2.8 | Weekly DSL Progress Meetings 8 |  | 2h | 2011-05-31 09:00 A | 2011-05-31 11:00 A | 100% |  | 2011-05-31 09:00 | 2011-05-31 11:00 | 2h |  | start no earlier than 2011-05-31 04:00 | Hurley | 2h | 2h |
| 303 | CIS1.2.6.2.9 | Weekly DSL Progress Meetings 9 |  | 0.5h | 2011-06-07 09:00 A | 2011-06-07 09:30 A | 100% |  | 2011-06-07 09:00 | 2011-06-07 09:30 | 0.5h |  | start no earlier than 2011-06-07 04:00 | Hurley | 0.5h | 0.5h |
| 304 | CIS1.2.6.2.10 | Weekly DSL Progress Meetings 10 |  | 0.5h | 2011-06-14 08:00 A | 2011-06-14 08:30 A | 100% |  | 2011-06-14 08:00 | 2011-06-14 08:30 | 0.5h |  | start no earlier than 2011-06-14 04:00 | Hurley | 0.5h | 0.5h |
| 305 | CIS1.2.6.2.11 | Weekly DSL Progress Meetings 11 (Meeting Cancelled) | milestone | 0h | 2011-06-21 08:00 A | 2011-06-21 08:00 A | 100% |  | 2011-06-21 08:00 | 2011-06-21 08:30 | 0.5h |  | start no earlier than 2011-06-21 04:00 | Hurley |  |  |
| 306 | CIS1.2.6.2.12 | Weekly DSL Progress Meetings 12 |  | 0.5h | 2011-06-28 08:00 A | 2011-06-28 08:30 A | 100% |  | 2011-06-28 08:00 | 2011-06-28 08:30 | 0.5h |  | start no earlier than 2011-06-28 04:00 | Hurley | 0.5h | 0.5h |
| 307 | CIS1.2.6.2.13 | Weekly DSL Progress Meetings 13 |  | 0.5h | 2011-07-06 08:00 A | 2011-07-06 08:30 A | 100% |  | 2011-07-05 08:00 | 2011-07-05 08:30 | 0.5h |  | start no earlier than 2011-07-06 08:00 | Hurley | 0.5h | 0.5h |
| 308 | CIS1.2.6.2.14 | Weekly DSL Progress Meetings 14 |  | 0.5h | 2011-07-12 08:00 A | 2011-07-12 08:30 A | 100% |  | 2011-07-12 08:00 | 2011-07-12 08:30 | 0.5h |  | start no earlier than 2011-07-12 04:00 | Hurley | 0.5h | 0.5h |
| 309 | CIS1.2.6.2.15 | Weekly DSL Progress Meetings 15 |  | 0.5h | 2011-07-21 08:00 A | 2011-07-21 08:30 A | 100% |  | 2011-07-19 08:00 | 2011-07-19 08:30 | 0.5h |  | start no earlier than 2011-07-21 08:00 | Hurley | 0.5h | 0.5h |
| 310 | CIS1.2.6.2.16 | Weekly DSL Progress Meetings 16 |  | 0.5h | 2011-07-28 08:00 A | 2011-07-28 08:30 A | 100% |  | 2011-07-26 08:00 | 2011-07-26 08:30 | 0.5h |  | start no earlier than 2011-07-28 04:00 | Hurley | 0.5h | 0.5h |
| 311 | CIS1.2.6.2.17 | Weekly DSL Progress Meetings 17 |  | 0.5h | 2011-08-04 08:00 A | 2011-08-04 08:30 A | 100% |  | 2011-08-02 08:00 | 2011-08-02 08:30 | 0.5h |  | start no earlier than 2011-08-04 04:00 | Hurley | 0.5h | 0.5h |
| 312 | CIS1.2.6.2.18 | Weekly DSL Progress Meetings 18 |  | 0.5h | 2011-08-11 08:00 A | 2011-08-11 08:30 A | 100% |  | 2011-08-09 08:00 | 2011-08-09 08:30 | 0.5h |  | start no earlier than 2011-08-11 04:00 | Hurley | 0.5h | 0.5h |
| 313 | CIS1.2.6.2.19 | Weekly DSL Progress Meetings 19 |  | 0.5h | 2011-08-18 08:00 A | 2011-08-18 08:30 A | 100% |  | 2011-08-16 08:00 | 2011-08-16 08:30 | 0.5h |  | start no earlier than 2011-08-18 08:00 | Hurley | 0.5h | 0.5h |
| 314 | CIS1.2.6.2.20 | Weekly DSL Progress Meetings 20 |  | 0.5h | 2011-08-25 08:00 A | 2011-08-25 08:30 A | 100% |  | 2011-08-23 08:00 | 2011-08-23 08:30 | 0.5h |  | start no earlier than 2011-08-25 04:00 | Hurley | 0.5h | 0.5h |
| 315 | CIS1.2.6.2.21 | Weekly DSL Progress Meetings 21 |  | 0.5h | 2011-09-01 08:00 A | 2011-09-01 08:30 A | 100% |  | 2011-08-30 08:00 | 2011-08-30 08:30 | 0.5h |  | start no earlier than 2011-09-01 04:00 | Hurley | 0.5h | 0.5h |
| 316 | CIS1.2.6.2.22 | Weekly DSL Progress Meetings 22 |  | 0.5h | 2011-09-09 08:00 | 2011-09-09 08:30 |  |  | 2011-09-06 08:00 | 2011-09-06 08:30 | 0.5h | 113.94d | start no earlier than 2011-09-09 08:00 | Hurley | 0.5h |  |
| 317 | CIS1.2.6.2.23 | Weekly DSL Progress Meetings 23 |  | 0.5h | 2011-09-15 08:00 | 2011-09-15 08:30 |  |  | 2011-09-13 08:00 | 2011-09-13 08:30 | 0.5h | 109.94d | start no earlier than 2011-09-15 04:00 | Hurley | 0.5h |  |
| 318 | CIS1.2.6.2.24 | Weekly DSL Progress Meetings 24 |  | 0.5h | 2011-09-22 08:00 | 2011-09-22 08:30 |  |  | 2011-09-20 08:00 | 2011-09-20 08:30 | 0.5h | 104.94d | start no earlier than 2011-09-22 04:00 | Hurley | 0.5h |  |
| 319 | CIS1.2.6.2.25 | Weekly DSL Progress Meetings 25 |  | 0.5h | 2011-09-29 08:00 | 2011-09-29 08:30 |  |  | 2011-09-27 08:00 | 2011-09-27 08:30 | 0.5h | 99.94d | start no earlier than 2011-09-29 04:00 | Hurley | 0.5h |  |
| 320 | CIS1.2.6.2.26 | Weekly DSL Progress Meetings 26 |  | 0.5h | 2011-10-06 08:00 | 2011-10-06 08:30 |  |  |  |  |  | 94.94d | start no earlier than 2011-10-06 04:00 | Hurley | 0.5h |  |
| 321 | CIS1.2.6.2.27 | Weekly DSL Progress Meetings 27 |  | 0.5h | 2011-10-13 08:00 | 2011-10-13 08:30 |  |  |  |  |  | 90.94d | start no earlier than 2011-10-13 04:00 | Hurley | 0.5h |  |
| 322 | CIS1.2.6.2.28 | Weekly DSL Progress Meetings 28 |  | 0.5h | 2011-10-20 08:00 | 2011-10-20 08:30 |  |  |  |  |  | 85.94d | start no earlier than 2011-10-20 04:00 | Hurley | 0.5h |  |
| 323 | CIS1.2.6.2.29 | Weekly DSL Progress Meetings 29 |  | 0.5h | 2011-10-27 08:00 | 2011-10-27 08:30 |  |  |  |  |  | 80.94d | start no earlier than 2011-10-27 04:00 | Hurley | 0.5h |  |
| 324 | CIS1.2.6.2.30 | Weekly DSL Progress Meetings 30 |  | 0.5h | 2011-11-03 08:00 | 2011-11-03 08:30 |  |  |  |  |  | 75.94d | start no earlier than 2011-11-03 04:00 | Hurley | 0.5h |  |
| 325 | CIS1.2.6.2.31 | Weekly DSL Progress Meetings 31 |  | 0.5h | 2011-11-10 08:00 | 2011-11-10 08:30 |  |  |  |  |  | 70.94d | start no earlier than 2011-11-10 04:00 | Hurley | 0.5h |  |
| 326 | CIS1.2.6.2.32 | Weekly DSL Progress Meetings 32 |  | 0.5h | 2011-11-17 08:00 | 2011-11-17 08:30 |  |  |  |  |  | 66.94d | start no earlier than 2011-11-17 04:00 | Hurley | 0.5h |  |
| 327 | CIS1.2.6.2.33 | Weekly DSL Progress Meetings 33 |  | 0.5h | 2011-11-25 08:00 | 2011-11-25 08:30 |  |  |  |  |  | 61.94d | start no earlier than 2011-11-24 04:00 | Hurley | 0.5h |  |
| 328 | CIS1.2.6.2.34 | Weekly DSL Progress Meetings 34 |  | 0.5h | 2011-12-01 08:00 | 2011-12-01 08:30 |  |  |  |  |  | 57.94d | start no earlier than 2011-12-01 04:00 | Hurley | 0.5h |  |
| 329 | CIS1.2.6.2.35 | Weekly DSL Progress Meetings 35 |  | 0.5h | 2011-12-08 08:00 | 2011-12-08 08:30 |  |  |  |  |  | 52.94d | start no earlier than 2011-12-08 04:00 | Hurley | 0.5h |  |
| 330 | CIS1.2.6.2.36 | Weekly DSL Progress Meetings 36 |  | 0.5h | 2011-12-15 08:00 | 2011-12-15 08:30 |  |  |  |  |  | 47.94d | start no earlier than 2011-12-15 04:00 | Hurley | 0.5h |  |
| 331 | CIS1.2.6.2.37 | Weekly DSL Progress Meetings 37 |  | 0.5h | 2011-12-22 08:00 | 2011-12-22 08:30 |  |  |  |  |  | 42.94d | start no earlier than 2011-12-22 04:00 | Hurley | 0.5h |  |
| 332 | CIS1.2.6.2.38 | Weekly DSL Progress Meetings 38 |  | 0.5h | 2011-12-29 08:00 | 2011-12-29 08:30 |  |  |  |  |  | 38.94d | start no earlier than 2011-12-29 04:00 | Hurley | 0.5h |  |

| ID | WBS | Task | Type | Duration | Start | Finish | Complete | Remaining | Baseline start | Baseline finish | Baseline duration | Total slack | Constraint | Resources | Work | Actual work |
| --- | --- | --- | --- | --- | --- | --- | --- | --- | --- | --- | --- | --- | --- | --- | --- | --- |
| 333 | CIS1.2.7 | **Risk Management** |  | 180.94d | 2011-04-12 09:00 A | 2011-12-29 08:30 | 57% | 78.24d | 2011-04-12 09:00 | 2011-09-27 08:30 | 117.94d | 38.94d |  |  | 18.5h | 10.5h |
| 334 | CIS1.2.7.1 | **Weekly Risk Review (DSL Meeting)** |  | 180.94d | 2011-04-12 09:00 A | 2011-12-29 08:30 | 57% | 78.24d | 2011-04-12 09:00 | 2011-09-27 08:30 | 117.94d | 38.94d |  |  | 18.5h | 10.5h |
| 335 | CIS1.2.7.1.1 | Weekly Risk Review (DSL Meeting) 1 |  | 0.5h | 2011-04-12 09:00 A | 2011-04-12 09:30 A | 100% |  | 2011-04-12 09:00 | 2011-04-12 09:30 | 0.5h |  | start no earlier than 2011-04-12 04:00 | Hurley | 0.5h | 0.5h |
| 336 | CIS1.2.7.1.2 | Weekly Risk Review (DSL Meeting) 2 |  | 0.5h | 2011-04-19 09:00 A | 2011-04-19 09:30 A | 100% |  | 2011-04-19 09:00 | 2011-04-19 09:30 | 0.5h |  | start no earlier than 2011-04-19 04:00 | Hurley | 0.5h | 0.5h |
| 337 | CIS1.2.7.1.3 | Weekly Risk Review (DSL Meeting) 3 |  | 0.5h | 2011-04-26 09:00 A | 2011-04-26 09:30 A | 100% |  | 2011-04-26 09:00 | 2011-04-26 09:30 | 0.5h |  | start no earlier than 2011-04-26 04:00 | Hurley | 0.5h | 0.5h |
| 338 | CIS1.2.7.1.4 | Weekly Risk Review (DSL Meeting) 4 |  | 0.5h | 2011-05-03 09:00 A | 2011-05-03 09:30 A | 100% |  | 2011-05-03 09:00 | 2011-05-03 09:30 | 0.5h |  | start no earlier than 2011-05-03 04:00 | Hurley | 0.5h | 0.5h |
| 339 | CIS1.2.7.1.5 | Weekly Risk Review (DSL Meeting) 5 |  | 0.5h | 2011-05-10 09:00 A | 2011-05-10 09:30 A | 100% |  | 2011-05-10 09:00 | 2011-05-10 09:30 | 0.5h |  | start no earlier than 2011-05-10 04:00 | Hurley | 0.5h | 0.5h |
| 340 | CIS1.2.7.1.6 | Weekly Risk Review (DSL Meeting) 6 |  | 0.5h | 2011-05-17 09:00 A | 2011-05-17 09:30 A | 100% |  | 2011-05-17 09:00 | 2011-05-17 09:30 | 0.5h |  | start no earlier than 2011-05-17 04:00 | Hurley | 0.5h | 0.5h |
| 341 | CIS1.2.7.1.7 | Weekly Risk Review (DSL Meeting) 7 (off-line risk review) |  | 0.5h | 2011-05-24 09:00 A | 2011-05-24 09:30 A | 100% |  | 2011-05-24 09:00 | 2011-05-24 09:30 | 0.5h |  | start no earlier than 2011-05-24 04:00 | Hurley | 0.5h | 0.5h |
| 342 | CIS1.2.7.1.8 | Weekly Risk Review (DSL Meeting) 8 (off-line review) |  | 0.5h | 2011-05-31 09:00 A | 2011-05-31 09:30 A | 100% |  | 2011-05-31 09:00 | 2011-05-31 09:30 | 0.5h |  | start no earlier than 2011-05-31 04:00 | Hurley | 0.5h | 0.5h |
| 343 | CIS1.2.7.1.9 | Weekly Risk Review (DSL Meeting) 9 |  | 0.5h | 2011-06-07 09:00 A | 2011-06-07 09:30 A | 100% |  | 2011-06-07 09:00 | 2011-06-07 09:30 | 0.5h |  | start no earlier than 2011-06-07 04:00 | Hurley | 0.5h | 0.5h |
| 344 | CIS1.2.7.1.10 | Weekly Risk Review (DSL Meeting) 10 |  | 0.5h | 2011-06-14 08:00 A | 2011-06-14 08:30 A | 100% |  | 2011-06-14 08:00 | 2011-06-14 08:30 | 0.5h |  | start no earlier than 2011-06-14 04:00 | Hurley | 0.5h | 0.5h |
| 345 | CIS1.2.7.1.11 | Weekly Risk Review (DSL Meeting) 11 (meeting cancelled) | milestone | 0h | 2011-06-21 08:00 A | 2011-06-21 08:00 A | 100% |  | 2011-06-21 08:00 | 2011-06-21 08:30 | 0.5h |  | start no earlier than 2011-06-21 04:00 | Hurley |  |  |
| 346 | CIS1.2.7.1.12 | Weekly Risk Review (DSL Meeting) 12 |  | 0.5h | 2011-06-28 08:00 A | 2011-06-28 08:30 A | 100% |  | 2011-06-28 08:00 | 2011-06-28 08:30 | 0.5h |  | start no earlier than 2011-06-28 04:00 | Hurley | 0.5h | 0.5h |
| 347 | CIS1.2.7.1.13 | Weekly Risk Review (DSL Meeting) 13 |  | 0.5h | 2011-07-06 08:00 A | 2011-07-06 08:30 A | 100% |  | 2011-07-05 08:00 | 2011-07-05 08:30 | 0.5h |  | start no earlier than 2011-07-06 08:00 | Hurley | 0.5h | 0.5h |
| 348 | CIS1.2.7.1.14 | Weekly Risk Review (DSL Meeting) 14 |  | 0.5h | 2011-07-12 08:00 A | 2011-07-12 08:30 A | 100% |  | 2011-07-12 08:00 | 2011-07-12 08:30 | 0.5h |  | start no earlier than 2011-07-12 04:00 | Hurley | 0.5h | 0.5h |
| 349 | CIS1.2.7.1.15 | Weekly Risk Review (DSL Meeting) 15 |  | 0.5h | 2011-07-21 08:00 A | 2011-07-21 08:30 A | 100% |  | 2011-07-19 08:00 | 2011-07-19 08:30 | 0.5h |  | start no earlier than 2011-07-21 08:00 | Hurley | 0.5h | 0.5h |
| 350 | CIS1.2.7.1.16 | Weekly Risk Review (DSL Meeting) 16 |  | 0.5h | 2011-07-28 08:00 A | 2011-07-28 08:30 A | 100% |  | 2011-07-26 08:00 | 2011-07-26 08:30 | 0.5h |  | start no earlier than 2011-07-28 08:00 | Hurley | 0.5h | 0.5h |
| 351 | CIS1.2.7.1.17 | Weekly Risk Review (DSL Meeting) 17 |  | 0.5h | 2011-08-04 08:00 A | 2011-08-04 08:30 A | 100% |  | 2011-08-02 08:00 | 2011-08-02 08:30 | 0.5h |  | start no earlier than 2011-08-04 08:00 | Hurley | 0.5h | 0.5h |
| 352 | CIS1.2.7.1.18 | Weekly Risk Review (DSL Meeting) 18 |  | 0.5h | 2011-08-11 08:00 A | 2011-08-11 08:30 A | 100% |  | 2011-08-09 08:00 | 2011-08-09 08:30 | 0.5h |  | start no earlier than 2011-08-11 08:00 | Hurley | 0.5h | 0.5h |
| 353 | CIS1.2.7.1.19 | Weekly Risk Review (DSL Meeting) 19 |  | 0.5h | 2011-08-18 08:00 A | 2011-08-18 08:30 A | 100% |  | 2011-08-16 08:00 | 2011-08-16 08:30 | 0.5h |  | start no earlier than 2011-08-18 08:00 | Hurley | 0.5h | 0.5h |
| 354 | CIS1.2.7.1.20 | Weekly Risk Review (DSL Meeting) 20 |  | 0.5h | 2011-08-25 08:00 A | 2011-08-25 08:30 A | 100% |  | 2011-08-23 08:00 | 2011-08-23 08:30 | 0.5h |  | start no earlier than 2011-08-25 04:00 | Hurley | 0.5h | 0.5h |
| 355 | CIS1.2.7.1.21 | Weekly Risk Review (DSL Meeting) 21 |  | 0.5h | 2011-09-01 08:00 A | 2011-09-01 08:30 A | 100% |  | 2011-08-30 08:00 | 2011-08-30 08:30 | 0.5h |  | start no earlier than 2011-09-01 04:00 | Hurley | 0.5h | 0.5h |
| 356 | CIS1.2.7.1.22 | Weekly Risk Review (DSL Meeting) 22 |  | 0.5h | 2011-09-08 08:00 A | 2011-09-08 08:30 A | 100% |  | 2011-09-06 08:00 | 2011-09-06 08:30 | 0.5h |  | start no earlier than 2011-09-08 04:00 | Hurley | 0.5h | 0.5h |
| 357 | CIS1.2.7.1.23 | Weekly Risk Review (DSL Meeting) 23 |  | 0.5h | 2011-09-15 08:00 | 2011-09-15 08:30 |  |  | 2011-09-13 08:00 | 2011-09-13 08:30 | 0.5h | 109.94d | start no earlier than 2011-09-15 04:00 | Hurley | 0.5h |  |
| 358 | CIS1.2.7.1.24 | Weekly Risk Review (DSL Meeting) 24 |  | 0.5h | 2011-09-22 08:00 | 2011-09-22 08:30 |  |  | 2011-09-20 08:00 | 2011-09-20 08:30 | 0.5h | 104.94d | start no earlier than 2011-09-22 04:00 | Hurley | 0.5h |  |
| 359 | CIS1.2.7.1.25 | Weekly Risk Review (DSL Meeting) 25 |  | 0.5h | 2011-09-29 08:00 | 2011-09-29 08:30 |  |  | 2011-09-27 08:00 | 2011-09-27 08:30 | 0.5h | 99.94d | start no earlier than 2011-09-29 04:00 | Hurley | 0.5h |  |
| 360 | CIS1.2.7.1.26 | Weekly Risk Review (DSL Meeting) 26 |  | 0.5h | 2011-10-06 08:00 | 2011-10-06 08:30 |  |  |  |  |  | 94.94d | start no earlier than 2011-10-06 04:00 | Hurley | 0.5h |  |
| 361 | CIS1.2.7.1.27 | Weekly Risk Review (DSL Meeting) 27 |  | 0.5h | 2011-10-13 08:00 | 2011-10-13 08:30 |  |  |  |  |  | 90.94d | start no earlier than 2011-10-13 04:00 | Hurley | 0.5h |  |
| 362 | CIS1.2.7.1.28 | Weekly Risk Review (DSL Meeting) 28 |  | 0.5h | 2011-10-20 08:00 | 2011-10-20 08:30 |  |  |  |  |  | 85.94d | start no earlier than 2011-10-20 04:00 | Hurley | 0.5h |  |
| 363 | CIS1.2.7.1.29 | Weekly Risk Review (DSL Meeting) 29 |  | 0.5h | 2011-10-27 08:00 | 2011-10-27 08:30 |  |  |  |  |  | 80.94d | start no earlier than 2011-10-27 04:00 | Hurley | 0.5h |  |
| 364 | CIS1.2.7.1.30 | Weekly Risk Review (DSL Meeting) 30 |  | 0.5h | 2011-11-03 08:00 | 2011-11-03 08:30 |  |  |  |  |  | 75.94d | start no earlier than 2011-11-03 04:00 | Hurley | 0.5h |  |
| 365 | CIS1.2.7.1.31 | Weekly Risk Review (DSL Meeting) 31 |  | 0.5h | 2011-11-10 08:00 | 2011-11-10 08:30 |  |  |  |  |  | 70.94d | start no earlier than 2011-11-10 04:00 | Hurley | 0.5h |  |
| 366 | CIS1.2.7.1.32 | Weekly Risk Review (DSL Meeting) 32 |  | 0.5h | 2011-11-17 08:00 | 2011-11-17 08:30 |  |  |  |  |  | 66.94d | start no earlier than 2011-11-17 04:00 | Hurley | 0.5h |  |
| 367 | CIS1.2.7.1.33 | Weekly Risk Review (DSL Meeting) 33 |  | 0.5h | 2011-11-25 08:00 | 2011-11-25 08:30 |  |  |  |  |  | 61.94d | start no earlier than 2011-11-24 04:00 | Hurley | 0.5h |  |
| 368 | CIS1.2.7.1.34 | Weekly Risk Review (DSL Meeting) 34 |  | 0.5h | 2011-12-01 08:00 | 2011-12-01 08:30 |  |  |  |  |  | 57.94d | start no earlier than 2011-12-01 04:00 | Hurley | 0.5h |  |
| 369 | CIS1.2.7.1.35 | Weekly Risk Review (DSL Meeting) 35 |  | 0.5h | 2011-12-08 08:00 | 2011-12-08 08:30 |  |  |  |  |  | 52.94d | start no earlier than 2011-12-08 04:00 | Hurley | 0.5h |  |
| 370 | CIS1.2.7.1.36 | Weekly Risk Review (DSL Meeting) 36 |  | 0.5h | 2011-12-15 08:00 | 2011-12-15 08:30 |  |  |  |  |  | 47.94d | start no earlier than 2011-12-15 04:00 | Hurley | 0.5h |  |
| 371 | CIS1.2.7.1.37 | Weekly Risk Review (DSL Meeting) 37 |  | 0.5h | 2011-12-22 08:00 | 2011-12-22 08:30 |  |  |  |  |  | 42.94d | start no earlier than 2011-12-22 04:00 | Hurley | 0.5h |  |
| 372 | CIS1.2.7.1.38 | Weekly Risk Review (DSL Meeting) 38 |  | 0.5h | 2011-12-29 08:00 | 2011-12-29 08:30 |  |  |  |  |  | 38.94d | start no earlier than 2011-12-29 04:00 | Hurley | 0.5h |  |

| ID | WBS | Task | Type | Duration | Start | Finish | Predecessors | Complete | Remaining | Baseline start | Baseline finish | Baseline duration | Total slack | Free slack | Constraint | Resources | Work | Actual work | Text1 |
| --- | --- | --- | --- | --- | --- | --- | --- | --- | --- | --- | --- | --- | --- | --- | --- | --- | --- | --- | --- |
| 373 | CIS1.2.8 | **Integrated Change Control** |  | 112d | 2011-07-18 08:00 A | 2011-12-27 17:00 |  | 37% | 70.19d | 2011-06-13 08:00 | 2011-09-30 17:00 | 78d | -6d | 0d |  |  | 60h | 22.4h |  |
| 374 | CIS1.2.8.1 | Management of Change Control and Change Log |  | 75d | 2011-07-18 08:00 A | 2011-12-27 17:00 | 32FF | 37% | 47d | 2011-06-13 08:00 | 2011-09-30 17:00 | 78d | -6d | 0d | finish no later than 2011-12-16 17:00 | Hurley [10%] | 60h | 22.4h |  |
| 375 | CIS1.3 | **Planning, Requirements, High-level Architecture** |  | 20.5d | 2011-06-13 08:00 A | 2011-07-12 12:00 A |  | 100% |  | 2011-06-13 08:00 | 2011-07-12 12:00 | 20.5d |  |  |  |  | 926h | 926h |  |
| 376 | CIS1.3.1 | Create integrated project schedule |  | 16d | 2011-06-13 08:00 A | 2011-07-08 17:00 A | 380 | 100% |  | 2011-06-13 08:00 | 2011-06-24 17:00 | 10d |  |  | finish no earlier than 2011-07-05 17:00 | Joshi; Hurley; Chintalapati; Parnell; Gann | 496h | 496h | Completed |
| 377 | CIS1.3.2 | Update Use Cases & Requirements |  | 10d | 2011-06-13 08:00 A | 2011-06-24 17:00 A |  | 100% |  | 2011-06-13 08:00 | 2011-06-24 17:00 | 10d |  |  | start no earlier than 2011-06-13 08:00 | ARCH - 5 | 80h | 80h | Completed |
| 378 | CIS1.3.3 | Evaluate Open-source Alternatives and Select CDW Platform - w/Dev Support |  | 13d | 2011-06-13 08:00 A | 2011-06-29 17:00 A |  | 100% |  | 2011-06-13 08:00 | 2011-06-24 17:00 | 10d |  |  | finish no earlier than 2011-06-29 17:00 | ARCH - 3 [50%]; ARCH - 4 [50%]; ARCH - 1 [25%] | 130h | 130h | Completed |
| 379 | CIS1.3.4 | Update Architecture Document |  | 10d | 2011-06-13 08:00 A | 2011-06-24 17:00 A |  | 100% |  | 2011-06-13 08:00 | 2011-06-24 17:00 | 10d |  |  |  | ARCH - 3 [25%]; ARCH - 1 [50%] | 60h | 60h | Completed |
| 380 | CIS1.3.5 | Approve CDW Open-source Selection w/ NCI and SAIC-F | milestone | 0d | 2011-07-11 08:00 A | 2011-07-11 08:00 A | 378FS+5d | 100% |  |  |  |  |  |  | start no earlier than 2011-07-11 08:00 | Andonyadis; Cabral; Shirley; Undale |  |  | Completed |
| 381 | CIS1.3.6 | Review and Update - Use-Cases & Architecture |  | 10d | 2011-06-27 13:00 A | 2011-07-12 12:00 A | 377FS+0.5d | 100% |  | 2011-06-27 13:00 | 2011-07-12 12:00 | 10d |  |  |  | NCI [66.7%]; SAIC-F [66.7%]; ARCH - 5 [66.7%] | 160h | 160h | Completed |
| 382 | CIS1.3.7 | Use Cases and Architecture Approved | milestone | 0d | 2011-07-12 12:00 A | 2011-07-12 12:00 A | 381, 380 | 100% |  | 2011-07-12 12:00 | 2011-07-12 12:00 | 0d |  |  |  |  |  |  | Completed |
| 383 | CIS1.4 | **TRANSCEND Interface** |  | 104d | 2011-06-20 08:00 A | 2011-11-16 17:00 |  | 67% | 33.83d | 2011-06-17 08:00 | 2011-10-12 17:00 | 81d | -7d | 0d |  |  | 400h | 344h |  |
| 384 | CIS1.4.1 | TRANSCEND Contact Needed for Workflow Discussion & Sign-off- External Dependency | milestone | 0d | 2011-06-20 08:00 A | 2011-06-20 08:00 A |  | 100% |  | 2011-06-17 08:00 | 2011-06-17 08:00 | 0d |  |  | start no earlier than 2011-06-20 08:00 | Shalley |  |  | Completed |
| 385 | CIS1.4.2 | Discuss & Confirm Tolven workflow from TRANSCEND to SA |  | 19d | 2011-06-20 08:00 A | 2011-07-15 17:00 A | 384 | 100% |  | 2011-06-17 08:00 | 2011-06-30 17:00 | 10d |  |  | finish no earlier than 2011-07-15 17:00 | Joshi; Chintalapati | 80h | 80h | Completed |
| 386 | CIS1.4.3 | Design SA secure interface for TRANSCEND Tolven |  | 10d | 2011-07-22 08:00 A | 2011-08-04 17:00 A | 385, 384 | 100% |  | 2011-08-09 08:00 | 2011-08-22 17:00 | 10d |  |  | start no earlier than 2011-07-22 08:00 | ARCH - 3 | 80h | 80h | Completed |
| 387 | CIS1.4.4 | Milestone - TRANSCEND Interface Design Finalized - External Dependency | milestone | 0d | 2011-08-24 08:00 A | 2011-08-24 08:00 A | 386 | 100% |  | 2011-08-22 17:00 | 2011-08-22 17:00 | 0d |  |  |  |  |  |  | Completed |
| 388 | CIS1.4.5 | Milestone - Commitment to Deploy and Test Semantic Adapter Based on Finalized Design- External Dependency | milestone | 0d | 2011-08-24 08:00 A | 2011-08-24 08:00 A | 387 | 100% |  | 2011-08-22 17:00 | 2011-08-22 17:00 | 0d |  |  |  |  |  |  | Completed |
| 389 | CIS1.4.6 | Milestone - Deployment Specific Information (Environment Information) - External Dependency | milestone | 0d | 2011-08-04 17:00 A | 2011-08-04 17:00 A | 388 | 100% |  | 2011-08-22 17:00 | 2011-08-22 17:00 | 0d |  |  |  |  |  |  | Completed |
| 390 | CIS1.4.7 | Milestone - Mirth Connect SSL Plugin License needed for ESD development activities - No longer needed Alternative Route Determined | milestone | 0d | 2011-08-19 08:00 A | 2011-08-19 08:00 A |  | 100% |  |  |  |  |  |  | start no earlier than 2011-08-19 08:00 |  |  |  | Completed |
| 391 | CIS1.4.8 | Develop Tolven to SA interface |  | 29d | 2011-08-08 08:00 A | 2011-09-16 17:00 | 389FS-1d | 93% | 2d | 2011-08-23 08:00 | 2011-09-27 17:00 | 25d | 0d |  | start no earlier than 2011-08-08 08:00 | ESD | 200h | 184h | On Track |
| 392 | CIS1.4.9 | Quality Test Source to SA Interface |  | 25d | 2011-10-12 08:00 | 2011-11-16 17:00 | 391, 439 |  |  |  |  |  | -7d | 0d | finish no earlier than 2011-11-16 17:00 | QA - 1 [21.9%] | 40h |  |  |
| 393 | CIS1.5 | **Modeling and Semantic Mapping** |  | 106d | 2011-06-20 08:00 A | 2011-11-18 17:00 |  | 66% | 35.66d | 2011-06-20 08:00 | 2011-11-17 17:00 | 105d | 19d |  |  |  | 1404.4h | 862.56h |  |
| 394 | CIS1.5.1 | Build Initial Computable Transform |  | 5d | 2011-06-20 08:00 A | 2011-06-24 17:00 A |  | 100% |  | 2011-06-20 08:00 | 2011-06-24 17:00 | 5d |  |  | start no earlier than 2011-06-20 08:00 | ARCH - 3 [25%] | 10h | 10h | Completed |
| 395 | CIS1.5.2 | Milestone - Initial Computable Transform - Simple Example of Transform (File, URL, SVN Location) - Internal Dependency | milestone | 0d | 2011-06-27 08:00 A | 2011-06-27 08:00 A | 394 | 100% |  | 2011-06-27 08:00 | 2011-06-27 08:00 | 0d |  |  | start no earlier than 2011-06-27 08:00 |  |  |  | Completed |
| 396 | CIS1.5.3 | Milestone - TRIM's Finalized (Data Elements, Structure and Semantics) Validate Assumptions - External Dependency | milestone | 0d | 2011-07-22 08:00 A | 2011-07-22 08:00 A |  | 100% |  | 2011-07-05 08:00 | 2011-07-05 08:00 | 0d |  |  | start no earlier than 2011-07-22 08:00 | Shalley |  |  | Completed |
| 397 | CIS1.5.4 | Milestone - EPIC Exchange Data Elements Finalized - External Dependency (Will use all 4 Clinical Notes Data Elements as no details provided from TRANSCEND team) | milestone | 0d | 2011-08-12 08:00 A | 2011-08-12 08:00 A |  | 100% |  | 2011-07-05 08:00 | 2011-07-05 08:00 | 0d |  |  | start no earlier than 2011-08-12 08:00 | Shalley |  |  | Completed |
| 398 | CIS1.5.5 | Milestone - Sample Data for Consolidated TRIM - TRANSCEND - External Dependency |  | 34d | 2011-08-05 08:00 | 2011-09-22 17:00 |  |  |  |  |  |  | 29d | 0d | finish no earlier than 2011-09-22 17:00 |  |  |  | Delayed |
| 399 | CIS1.5.6 | Milestone - Sample Data to Validate Mappings - TRANSCEND - External Dependency | milestone | 0d | 2011-07-22 08:00 A | 2011-07-22 08:00 A |  | 100% |  | 2011-08-01 08:00 | 2011-08-01 08:00 | 0d |  |  | start no earlier than 2011-07-22 08:00 |  |  |  | Completed |
| 400 | CIS1.5.7 | Milestone - Sample Data to support Design Activities - TRANSCEND - External Dependency | milestone | 0d | 2011-07-22 08:00 A | 2011-07-22 08:00 A |  | 100% |  | 2011-07-15 08:00 |  | 0d? |  |  | start no earlier than 2011-07-22 08:00 | Shalley |  |  | Completed |

Notes:
- 384: Commitment needed is approximately 2 - 3 1 hr meetings
- 391: ESD Task

| ID | WBS | Task | Type | Duration | Start | Finish | Predecessors | Complete | Remaining | Baseline start | Baseline finish | Baseline duration | Total slack | Free slack | Constraint | Resources | Work | Actual work | Text1 |
| --- | --- | --- | --- | --- | --- | --- | --- | --- | --- | --- | --- | --- | --- | --- | --- | --- | --- | --- | --- |
| 401 | CIS1.5.8 | **Canonical Model** |  | 78.01d | 2011-06-27 08:00 A | 2011-10-18 08:03 | 379 | 82% | 14.17d | 2011-06-27 08:00 | 2011-09-20 17:00 | 60d | 23.03d |  |  |  | 934.4h | 796.56h |  |
| 402 | CIS1.5.8.1 | Milestone - Canonical Model Mapping Questions & Answers - TRANSCEND - Questions will remain on list for one week unresolved questions arch team will document assumptions and continue forward. | milestone | 0d | 2011-08-05 08:00 A | 2011-08-05 08:00 A |  | 100% |  |  |  |  |  |  | start no earlier than 2011-08-05 08:00 |  |  |  | Completed |
| 403 | CIS1.5.8.2 | Develop Canonical Model |  | 73.72d | 2011-06-27 08:00 A | 2011-10-11 14:43 |  | 76% | 17.72d | 2011-06-27 08:00 | 2011-09-20 17:00 | 60d | 10.28d | 0d |  | ARCH - 1 [25%]; ARCH - 2 [25%] | 190.4h | 157.68h | On Track |
| 404 | CIS1.5.8.3 | Develop Canonical Model IG |  | 65.07d | 2011-06-27 08:00 A | 2011-09-28 08:35 |  | 86% | 9.07d | 2011-06-27 08:00 | 2011-09-20 17:00 | 60d | 35.97d | 0d |  | ARCH - 2 [35%] | 168h | 148.12h | On Track |
| 405 | CIS1.5.8.4 | Define mapping from Clinical Notes data elements to Canonical Model |  | 60.01d | 2011-06-27 08:00 A | 2011-10-11 14:43 | 403FF | 93% | 4.01d | 2011-06-27 08:00 | 2011-09-20 17:00 | 60d | 27.32d | 0d |  | ARCH - 2 [35%] | 168h | 156.78h | On Track |
| 406 | CIS1.5.8.5 | Define mapping from PCO data elements to Canonical Model |  | 60.01d | 2011-06-27 08:00 A | 2011-10-18 08:03 | 403FF, 398FF | 72% | 17.01d | 2011-06-27 08:00 | 2011-09-20 17:00 | 60d | 23.03d | 0d |  | ARCH - 2 [35%] | 168h | 120.38h | Blocked |
| 407 | CIS1.5.8.6 | Develop computable transforms from clinical notes to canonical model |  | 60d | 2011-06-27 08:00 A | 2011-10-11 14:43 | 403FF | 93% | 4d | 2011-09-21 08:00 | 2011-11-02 17:00 | 30d | 17.28d | 0d |  | ARCH - 6 [40%] | 192h | 179.2h | On Track |
| 408 | CIS1.5.8.7 | Develop computable transforms from PCO to canonical model |  | 60d | 2011-06-27 08:00 A | 2011-10-17 17:00 | 403FF, 398FF | 72% | 17d | 2011-09-21 08:00 | 2011-11-02 17:00 | 30d | 13d | 0d | start no earlier than 2011-06-27 08:00 | ARCH - 7 [10%] | 48h | 34.4h | Blocked |
| 409 | CIS1.5.9 | Quality Test Computable Transforms |  | 7d | 2011-11-07 08:00 | 2011-11-16 17:00 | 407FS-2d, 408FS-2d, 421 |  |  | 2011-11-03 08:00 | 2011-11-17 17:00 | 10d | -3d | 0d | finish no later than 2012-01-12 17:00 | QA - 2 | 56h |  |  |
| 410 | CIS1.5.10 | Define HL7v2 (Computable Transform) |  | 11d | 2011-09-20 08:00 | 2011-10-04 17:00 | 469 |  |  | 2011-09-21 08:00 | 2011-10-19 17:00 | 20d | -1.08d | 0d | start no later than 2011-09-20 08:00 | ARCH - 1 | 80h |  |  |
| 411 | CIS1.5.11 | Define RIM ITS and CCD mapping |  | 6d | 2011-10-04 08:00 | 2011-10-12 17:00 | 410 |  |  | 2011-08-23 08:00 | 2011-09-06 17:00 | 10d | -1d | 0d | start no later than 2011-10-04 08:00 | ARCH - 1 | 40h |  |  |
| 412 | CIS1.5.12 | Architecture Provide v1.0 XSLT computable transform |  | 3d | 2011-07-05 08:00 A | 2011-07-07 17:00 A |  | 100% |  | 2011-07-05 08:00 | 2011-07-07 17:00 | 0d? |  |  | finish no earlier than 2011-07-07 17:00 |  |  |  | Completed |
| 413 | CIS1.5.13 | Build and Deploy for computable and coded transforms - Round 1 |  | 9d | 2011-06-27 08:00 A | 2011-07-08 17:00 A | 395, 412FF | 100% |  | 2011-06-27 08:00 | 2011-07-01 17:00 | 5d |  |  |  | ESD | 40h | 40h | Completed |
| 414 | CIS1.5.14 | Build and Deploy for computable and coded transforms - Round 2 |  | 10d | 2011-09-29 14:43 | 2011-10-14 14:43 | 403FS-7d |  |  | 2011-07-05 08:00 | 2011-07-07 12:00 | 2.5d | 10.28d | 0d |  | ESD [50%] | 40h |  |  |
| 415 | CIS1.5.15 | Create deployment guide for new transforms (run-time, compile-time, deploy-time) |  | 9.5d | 2011-09-29 14:43 | 2011-10-14 14:43 | 414SS |  |  | 2011-08-22 08:00 | 2011-08-24 12:00 | 2.5d | 43.28d | 5.28d | start no earlier than 2011-08-22 08:00 | ESD | 40h |  |  |
| 416 | CIS1.5.16 | Development HL7v2 |  | 9d | 2011-10-03 08:00 | 2011-10-17 12:00 | 410FS-3d |  |  | 2011-10-20 08:00 | 2011-10-24 12:00 | 2.5d | 18.5d | 4.5d | start no earlier than 2011-10-03 08:00 | ESD [200%] | 76h |  |  |
| 417 | CIS1.5.17 | Development of RIM ITS and CCD mapping |  | 8.5d | 2011-10-11 08:00 | 2011-10-21 17:00 | 411FS-2d |  |  | 2011-09-07 08:00 | 2011-09-09 12:00 | 2.5d | 15d | 0d |  | ESD | 40h |  |  |
| 418 | CIS1.5.18 | Quality Test HL7v2 |  | 1d | 2011-11-17 08:00 | 2011-11-17 17:00 | 416, 409 |  |  | 2011-10-24 13:00 | 2011-10-26 12:00 | 2d | -3d | 0d |  | QA - 2 | 8h |  |  |
| 419 | CIS1.5.19 | Quality Test RIM ITS and CCD Mapping |  | 1d | 2011-11-18 08:00 | 2011-11-18 17:00 | 417, 418 |  |  | 2011-09-15 08:00 | 2011-09-16 17:00 | 2d | -3d | 0d |  | QA - 2 | 8h |  |  |
| 420 | CIS1.5.20 | Quality Test Build and Deploy for computable and coded transforms - Round 1 |  | 4d | 2011-08-17 08:00 A | 2011-08-22 17:00 A | 413, 440 | 100% |  | 2011-09-15 08:00 | 2011-09-21 12:00 | 4.5d |  |  | start no earlier than 2011-08-15 08:00 | QA - 2 [50%] | 16h | 16h | Completed |
| 421 | CIS1.5.21 | Quality Test Build and Deploy for computable and coded transforms - Round 2 |  | 2d | 2011-11-03 08:00 | 2011-11-04 17:00 | 414, 475 |  |  | 2011-09-15 08:00 | 2011-09-21 12:00 | 4.5d | -3d | 0d |  | QA - 2 | 16h |  |  |
| 422 | CIS1.6 | **Semantic Adapter (SA)** |  | 85d | 2011-06-27 08:00 A | 2011-10-26 17:00 |  | 76% | 20.24d | 2011-06-27 08:00 | 2011-10-13 17:00 | 76d | 0d |  |  |  | 176h | 136h |  |
| 423 | CIS1.6.1 | ESB Deployment |  | 9d | 2011-06-27 08:00 A | 2011-07-08 17:00 A |  | 100% |  | 2011-06-27 08:00 | 2011-07-01 17:00 | 5d |  |  | start no earlier than 2011-06-27 08:00 | ESD [62.5%] | 40h | 40h | Completed |
| 424 | CIS1.6.2 | Design Semantic Adapter |  | 17d | 2011-07-20 08:00 A | 2011-08-24 17:00 A | 429FS+6d | 100% |  |  |  |  |  |  | start no earlier than 2011-07-20 08:00 | ARCH - 4 | 48h | 48h | Completed |
| 425 | CIS1.6.3 | Design Identifier Resolver Façade (DESIGN ONLY) |  | 5d | 2011-08-22 08:00 A | 2011-08-26 17:00 A | 432FS+10d | 100% |  | 2011-07-28 08:00 | 2011-07-29 17:00 | 2d |  |  | start no earlier than 2011-08-22 08:00 | ARCH - 4 | 40h | 40h | Completed |
| 426 | CIS1.6.4 | Design Vocabulary lookup (DESIGN ONLY) |  | 10d | 2011-10-13 08:00 | 2011-10-26 17:00 | 411 |  |  | 2011-09-29 08:00 | 2011-10-13 17:00 | 10d | 0d |  | start no earlier than 2011-10-12 08:00 | ARCH - 1 [50%] | 40h |  |  |
| 427 | CIS1.6.5 | Quality Test ESB Deployment |  | 1d | 2011-07-20 08:00 A | 2011-07-20 17:00 A | 423 | 100% |  | 2011-09-15 08:00 | 2011-09-15 17:00 | 1d |  |  | start no earlier than 2011-07-20 08:00 | QA - 1 | 8h | 8h | Completed |

Notes:
- 403: ·standards based canonical model / ·map TRANSCEND TRIM(s) to canonical model
- 404: Implementation Guide for canonical model

| ID | WBS | Task | Type | Duration | Start | Finish | Predecessors | Complete | Remaining | Baseline start | Baseline finish | Baseline duration | Total slack | Free slack | Constraint | Resources | Work | Actual work | Text1 |
| --- | --- | --- | --- | --- | --- | --- | --- | --- | --- | --- | --- | --- | --- | --- | --- | --- | --- | --- | --- |
| 428 | CIS1.7 | **IP - Canonical Model Processor** |  | 118.75d | 2011-06-13 08:00 A | 2011-12-01 15:00 |  | 75% | 29.95d | 2011-06-13 08:00 | 2011-10-31 17:00 | 98d | 0.25d |  |  |  | 694h | 528.5h |  |
| 429 | CIS1.7.1 | Design Interface - SA to IP |  | 14d | 2011-06-14 08:00 A | 2011-07-11 17:00 A |  | 100% |  | 2011-06-22 08:00 | 2011-06-28 17:00 | 5d |  |  | finish no earlier than 2011-07-11 17:00 | ARCH - 4 | 64h | 64h | Completed |
| 430 | CIS1.7.2 | Design CMP Authorization Component |  | 6d | 2011-08-29 08:00 A | 2011-09-06 17:00 A | 461 | 100% |  | 2011-08-23 08:00 | 2011-08-29 17:00 | 5d |  |  | start no later than 2011-08-30 08:00 | ARCH - 3 | 40h | 40h | Completed |
| 431 | CIS1.7.3 | Design CMP - Validation, Invocation |  | 10d | 2011-08-15 08:00 A | 2011-08-26 17:00 A | 468FS-5d | 100% |  | 2011-10-18 08:00 | 2011-10-31 17:00 | 10d |  |  | start no earlier than 2011-08-12 08:00 | ARCH - 1 | 80h | 80h | Completed |
| 432 | CIS1.7.4 | Define Logging Policy and Log format |  | 11d | 2011-07-13 08:00 A | 2011-08-05 17:00 A | 467FS+3d | 100% |  | 2011-08-01 08:00 | 2011-08-12 17:00 | 10d |  |  | start no earlier than 2011-07-13 08:00 | ARCH - 4 | 48h | 48h | Completed |
| 433 | CIS1.7.5 | Deploy IP ESB |  | 9d | 2011-06-27 08:00 A | 2011-07-08 17:00 A | 423SS | 100% |  | 2011-07-05 08:00 | 2011-07-07 17:00 | 3d |  |  |  | ESD [37.5%] | 24h | 24h | Completed |
| 434 | CIS1.7.6 | Develop Web Service Interface (CanonicalModelProcessor) |  | 23d | 2011-07-11 08:00 A | 2011-09-16 17:00 | 429, 430FF | 96% | 1d | 2011-08-02 08:00 | 2011-08-29 17:00 | 20d | 9.5d | 0d | start no later than 2011-07-11 08:00 | ESD [187.5%] | 160h | 159h | On Track |
| 435 | CIS1.7.7 | Invoke ETL Process |  | 10d | 2011-07-18 08:00 A | 2011-07-29 17:00 A | 434SS+5d | 100% |  | 2011-08-30 08:00 | 2011-09-06 17:00 | 5d |  |  | start no earlier than 2011-07-11 08:00 | ESD [50%] | 40h | 40h | Completed |
| 436 | CIS1.7.8 | Document Router/Document Transfer Request Builder |  | 9d | 2011-09-19 08:00 | 2011-09-29 17:00 | 434 |  |  | 2011-08-30 08:00 | 2011-09-13 17:00 | 10d | 42d | 0d | start no earlier than 2011-09-12 08:00 | ESD | 72h |  |  |
| 437 | CIS1.7.9 | Node Authentication (provisioning certs and trust stores) |  | 10d | 2011-06-13 08:00 A | 2011-06-24 17:00 A |  | 100% |  | 2011-06-13 08:00 | 2011-06-24 17:00 | 10d |  |  | finish no earlier than 2011-06-24 17:00 | ESD [50%] | 40h | 40h | Completed |
| 438 | CIS1.7.10 | Quality Test IP ESB Deployment |  | 2d | 2011-11-21 08:00 | 2011-11-22 17:00 | 433, 419 |  |  | 2011-09-15 08:00 | 2011-09-16 12:00 | 1.5d | -3d | 0d |  | QA - 2 | 16h |  |  |
| 439 | CIS1.7.11 | Quality Test Web Service Inteface (CanonicalModelProcessor) |  | 30d | 2011-08-29 08:00 A | 2011-10-11 17:00 | 434FS-5% | 40% | 18d | 2011-09-15 08:00 | 2011-09-28 17:00 | 10d | -7d | 0d |  | QA - 1 [40.6%] | 56h | 25.5h | On Track |
| 440 | CIS1.7.12 | Quality Test ETL Process |  | 2d | 2011-08-15 08:00 A | 2011-08-16 17:00 A | 435 | 100% |  | 2011-09-15 08:00 | 2011-09-20 15:00 | 3.75d |  |  | start no earlier than 2011-08-15 08:00 | QA - 2 [50%] | 8h | 8h | Completed |
| 441 | CIS1.7.13 | Quality Test Document Router/Document Transfer Request Builder |  | 2d | 2011-11-23 08:00 | 2011-11-25 17:00 | 436SS, 438 |  |  | 2011-09-15 08:00 | 2011-09-16 17:00 | 2d | -3d | 0d |  | QA - 2 | 16h |  |  |
| 442 | CIS1.7.14 | Quality Test Node Authentication |  | 3.75d | 2011-11-28 08:00 | 2011-12-01 15:00 | 437FF, 441 |  |  | 2011-11-07 08:00 | 2011-11-14 17:00 | 0d? | -3d | 0d |  | QA - 2 | 30h |  |  |
| 443 | CIS1.8 | **IP - Document Router** |  | 131d | 2011-06-20 08:00 A | 2011-12-27 17:00 |  | 69% | 40.92d | 2011-06-20 08:00 | 2011-11-03 17:00 | 96d | -6d | 0d |  |  | 1249h | 1065h |  |
| 444 | CIS1.8.1 | Design Router configurations mechanism |  | 10d | 2011-08-05 08:00 A | 2011-08-18 17:00 A | 386 | 100% |  | 2011-09-14 08:00 | 2011-10-12 17:00 | 20d |  |  | start no earlier than 2011-08-05 08:00 | ARCH - 3 | 80h | 80h | Completed |
| 445 | CIS1.8.2 | Develop XDS Document Metadata Builder |  | 21d | 2011-08-22 08:00 A | 2011-09-20 17:00 | 444FS+1d | 81% | 4d | 2011-10-13 08:00 | 2011-10-24 12:00 | 7.5d | 32d | 0d | finish no earlier than 2011-09-20 17:00 | ESD [200%] | 208h | 176h | Delayed |
| 446 | CIS1.8.3 | Finish up NAV Sender development |  | 1.67d | 2011-06-20 08:00 A | 2011-06-21 14:20 A |  | 100% |  | 2011-06-20 08:00 | 2011-06-21 14:20 | 1.67d |  |  | start no earlier than 2011-06-20 08:00 | ESD [300%] | 40h | 40h | Completed |
| 447 | CIS1.8.4 | Develop OpenXDS Interaction (register, store) |  | 36d | 2011-08-01 08:00 A | 2011-09-20 17:00 | 445FF | 89% | 4d | 2011-07-28 13:00 | 2011-10-24 12:00 | 60d | 45.75d | 8d | finish no earlier than 2011-09-20 17:00 | ESD | 164h | 148h | Delayed |
| 448 | CIS1.8.5 | Create NAV documentation |  | 10d | 2011-08-22 08:00 A | 2011-09-02 17:00 A | 446 | 100% |  | 2011-08-22 08:00 | 2011-08-26 17:00 | 5d |  |  | finish no earlier than 2011-09-02 17:00 | ESD [25%] | 20h | 20h | Completed |
| 449 | CIS1.8.6 | OpenXDS Development - Security |  | 56d | 2011-06-27 08:00 A | 2011-09-30 17:00 | 456SS | 79% | 12d | 2011-07-05 08:00 | 2011-08-25 12:00 | 37.5d | 52d | 0d | finish no earlier than 2011-09-30 17:00 | ESD [200%] | 641h | 593h | On Track |
| 450 | CIS1.8.7 | Quality Test XDS Document Metadata Builder |  | 28d | 2011-11-16 08:00 | 2011-12-27 17:00 | 445, 392 |  |  | 2011-10-24 13:00 | 2011-11-02 12:00 | 7d | -6d | 0d | start no later than 2011-11-16 08:00 | QA - 1 [21.9%]; QA - 2 | 56h |  |  |
| 451 | CIS1.8.8 | Quality Test NAV Sender |  | 2d | 2011-08-03 08:00 A | 2011-08-25 17:00 A | 446 | 100% |  |  |  |  |  |  | finish no earlier than 2011-08-25 17:00 | QA - 1 [75%] | 8h | 8h | Completed |
| 452 | CIS1.8.9 | Quality Test OpenXDS Interaction |  | 2d | 2011-12-01 15:00 | 2011-12-05 15:00 | 447, 442 |  |  | 2011-10-24 13:00 | 2011-11-02 12:00 | 7d | -3d | 0d |  | QA - 2 | 16h |  |  |
| 453 | CIS1.8.10 | Quality Review of Documentation for NAV |  | 3d | 2011-12-15 08:00 | 2011-12-19 17:00 | 448, 465 |  |  | 2011-09-15 08:00 | 2011-09-26 12:00 | 7.5d | -1d | 0d | finish no later than 2011-12-19 17:00 | QA - 2 | 16h |  |  |
| 454 | CIS1.8.11 | Quality Test OpenXDS Development (No QA Effort to be Expended - Unit Testing Only) | milestone | 0d | 2011-09-19 08:00 | 2011-09-19 08:00 | 449FS-10d |  |  | 2011-09-15 08:00 | 2011-11-03 17:00 | 35d | 62d |  | start no earlier than 2011-09-15 08:00 |  |  |  |  |

| ID | WBS | Task | Type | Duration | Start | Finish | Predecessors | Complete | Remaining | Baseline start | Baseline finish | Baseline duration | Total slack | Free slack | Constraint | Resources | Work | Actual work | Text1 |
| --- | --- | --- | --- | --- | --- | --- | --- | --- | --- | --- | --- | --- | --- | --- | --- | --- | --- | --- | --- |
| 455 | CIS1.9 | **IP - Document Transfer** |  | 129d | 2011-06-13 08:00 A | 2011-12-15 17:00 |  | 76% | 30.8d | 2011-06-13 08:00 | 2011-11-22 17:00 | 113d | -2d | 0d |  |  | 406h | 316.5h |  |
| 456 | CIS1.9.1 | Design Pluggable Authorization Component for XDS Interface |  | 12.5d | 2011-06-29 08:00 A | 2011-07-18 12:00 A | 379FS+2d | 100% |  | 2011-06-27 08:00 | 2011-07-20 14:20 | 16.67d |  |  |  | ARCH - 3 | 100h | 100h | Completed |
| 457 | CIS1.9.2 | Create XDS Outbound Interface Specification (SDS) |  | 2d | 2011-07-18 13:00 A | 2011-07-20 12:00 A | 456 | 100% |  |  |  |  |  |  |  | ARCH - 3 | 16h | 16h | Completed |
| 458 | CIS1.9.3 | Design Secure Email Interface |  | 3.75d | 2011-08-19 08:00 A | 2011-08-24 15:00 A | 444 | 100% |  | 2011-07-20 14:20 | 2011-07-28 16:20 | 6.25d |  |  | start no earlier than 2011-08-05 08:00 | ARCH - 3 | 30h | 30h | Completed |
| 459 | CIS1.9.4 | Ability to send a secure email |  | 5d | 2011-06-13 08:00 A | 2011-06-17 17:00 A |  | 100% |  | 2011-06-13 08:00 | 2011-06-17 17:00 | 5d |  |  |  | ESD [50%] | 20h | 20h | Completed |
| 460 | CIS1.9.5 | Secure Email routing components |  | 14d | 2011-08-29 08:00 A | 2011-09-16 17:00 | 458 | 86% | 2d | 2011-07-28 16:20 | 2011-08-04 16:20 | 5d | 51d | 0d | start no earlier than 2011-08-29 08:00 | ESD [275%] | 78h | 76.5h | On Track |
| 461 | CIS1.9.6 | Design Secure File Transfer Protocol Interface |  | 4d | 2011-08-24 08:00 A | 2011-08-29 17:00 A | 458 | 100% |  | 2011-10-25 08:00 | 2011-11-07 17:00 | 10d |  |  | start no later than 2011-08-24 08:00 | ARCH - 3 | 26h | 26h | Completed |
| 462 | CIS1.9.7 | Develop Secure File Transfer Protocol Interface |  | 5d | 2011-09-12 08:00 A | 2011-09-16 17:00 | 461 | 60% | 2d | 2011-11-08 08:00 | 2011-11-15 17:00 | 5d | 55d | 0d | start no earlier than 2011-09-12 08:00 | ESD [200%] | 80h | 48h | On Track |
| 463 | CIS1.9.8 | Quality Test Ability to send a secure email |  | 1.25d | 2011-12-05 15:00 | 2011-12-06 17:00 | 459, 452 |  |  |  |  |  | -3d | 0d |  | QA - 2 | 8h |  |  |
| 464 | CIS1.9.9 | Quality Test Secure Email |  | 4d | 2011-12-06 08:00 | 2011-12-09 17:00 | 460, 463 |  |  |  |  |  | -2d | 0d | start no later than 2011-12-06 08:00 | QA - 2 | 24h |  |  |
| 465 | CIS1.9.10 | Quality Test Secure File Transfer Protocol Interface |  | 4d | 2011-12-12 08:00 | 2011-12-15 17:00 | 462, 464 |  |  |  |  |  | -2d | 0d |  | QA - 2 | 24h |  |  |
| 466 | CIS1.10 | **Clinical Data Warehouse (CDW)** |  | 87d | 2011-06-30 08:00 A | 2011-11-02 17:00 |  | 72% | 24.52d | 2011-06-27 08:00 | 2011-11-16 12:00 | 98.5d | 30d |  |  |  | 1099.5h | 787.5h |  |
| 467 | CIS1.10.1 | Prototype XML to RDF Converter |  | 5d | 2011-06-30 08:00 A | 2011-07-07 17:00 A | 378 | 100% |  |  |  |  |  |  | start no earlier than 2011-06-30 08:00 | ARCH - 4 | 40h | 40h | Completed |
| 468 | CIS1.10.2 | Design Schema and map Canonical to Data Warehouse format |  | 33.9d | 2011-06-30 08:00 A | 2011-08-17 17:00 A | 378 | 100% |  | 2011-06-29 08:00 | 2011-08-24 17:00 | 40d |  |  | finish no earlier than 2011-08-19 17:00 | ARCH - 1 [91.5%] | 133.37h | 133.37h | Completed |
| 469 | CIS1.10.3 | Design free text indexes and views |  | 21.08d | 2011-08-22 08:00 A | 2011-09-21 08:36 A | 431FS-4d | 100% |  |  |  |  |  |  | start no later than 2011-08-22 08:00 | ARCH - 4; ARCH - 1 [67.5%] | 40h | 40h | Completed |
| 470 | CIS1.10.4 | Integrate free text indexes and views |  | 10d | 2011-09-19 08:00 | 2011-09-30 17:00 | 469FS-2d |  |  |  |  |  | -0.08d | 0d | start no later than 2011-09-19 08:00 | ESD [12.5%] | 10h |  |  |
| 471 | CIS1.10.5 | Design ETL- IP to CDW |  | 12d | 2011-07-18 08:00 A | 2011-08-12 11:12 A | 380FS+5d | 100% |  | 2011-09-29 08:00 | 2011-10-27 17:00 | 20d |  |  | start no earlier than 2011-07-18 08:00 | ARCH - 4 | 28.8h | 28.8h | Completed |
| 472 | CIS1.10.6 | Create Non-canonical to CDW transform and integrate with Canonical to CDW transform |  | 12d | 2011-08-22 08:00 A | 2011-09-07 17:00 A | 468FS+1d | 100% |  |  |  |  |  |  | start no earlier than 2011-08-22 08:00 | ARCH - 4 [40%] | 37.33h | 37.33h | Completed |
| 473 | CIS1.10.12 | Architecture Testing of Non-canonical to CDW transform | milestone | 0d | 2011-09-22 17:00 | 2011-09-22 17:00 | 398, 472 |  |  |  |  |  | 58d |  |  | ARCH - 4 |  |  |  |
| 474 | CIS1.10.7 | Develop ETL - IP to CDW |  | 9d | 2011-09-19 08:00 A | 2011-09-29 17:00 | 471 | 22% | 7d | 2011-10-28 08:00 | 2011-11-03 17:00 | 5d | 15d | 1d | finish no earlier than 2011-09-16 17:00 | ESD [125%] | 80h | 20h |  |
| 475 | CIS1.10.8 | Test ETL - IP to CDW |  | 5d | 2011-10-27 08:00 | 2011-11-02 17:00 | 474, 478 |  |  | 2011-11-04 08:00 | 2011-11-16 12:00 | 7.5d | -3d | 0d |  | QA - 2 | 40h |  |  |
| 476 | CIS1.10.9 | Design CDW Security |  | 3d | 2011-09-07 08:00 A | 2011-09-09 17:00 A |  | 100% |  | 2011-10-13 08:00 | 2011-11-09 17:00 | 20d |  |  | start no earlier than 2011-09-07 08:00 | ARCH - 3 | 20h | 20h | Completed |
| 477 | CIS1.10.10 | Develop Clinical Data Warehouse (Virtuoso) |  | 25d | 2011-07-18 08:00 A | 2011-08-22 08:00 A | 468FF | 100% |  | 2011-07-28 08:00 | 2011-09-30 17:00 | 46d |  |  | start no earlier than 2011-07-11 08:00 | ESD [200%] | 390h | 390h | Completed |
| 478 | CIS1.10.11 | Data Warehouse Testing |  | 45d | 2011-08-23 08:00 A | 2011-10-26 17:00 | 477, 420 | 36% | 29d | 2011-09-15 08:00 | 2011-11-03 17:00 | 35d | 0d |  | start no later than 2011-10-05 08:00 | QA - 2 | 280h | 78h | On Track |

Notes:
- 466: ·Design Support for ad-hoc queries and report generation on Clinical Data Warehouse (no implementation)/ ·Data Warehouse will support all data elements extracted from TRANSCEND/ ·Q - CDW being deployed @ NCI/ ·CDW - GRID Security Enabled

| ID | WBS | Task | Duration | Start | Finish | Predecessors | Complete | Remaining | Baseline start | Baseline finish | Baseline duration | Total slack | Free slack | Constraint | Resources | Work | Actual work | Text1 |
| --- | --- | --- | --- | --- | --- | --- | --- | --- | --- | --- | --- | --- | --- | --- | --- | --- | --- | --- |
| 479 | CIS1.37 | **ESD** | 60d | 2011-10-04 08:00 | 2011-12-30 17:00 |  |  |  |  |  |  | 37d |  |  |  | 60h |  |  |
| 480 | CIS1.37.1 | Development Bug Fixes | 60d | 2011-10-04 08:00 | 2011-12-30 17:00 |  |  |  |  |  |  | 37d |  | finish no earlier than 2011-12-30 17:00 | ESD [12.5%] | 60h |  |  |
| 481 | CIS1.11 | **QA** | 134d | 2011-06-20 08:00 A | 2011-12-30 17:00 |  | 24% | 101.81d | 2011-06-20 08:00 | 2012-02-03 17:00 | 159d | 37d |  |  |  | 776h | 311.75h |  |
| 482 | CIS1.11.1 | Manual Build, Configuration, Installation/Deployment for Testing | 99d | 2011-06-20 08:00 A | 2011-12-29 17:00 |  | 27% | 72d | 2011-06-20 08:00 | 2011-09-09 17:00 | 18d | 38d |  | start no earlier than 2011-06-20 08:00 | QA - 1 | 200h | 92.5h | On Track |
| 483 | CIS1.11.2 | Test Automation | 105d | 2011-07-13 08:00 A | 2011-12-30 17:00 |  | 30% | 73d | 2011-06-20 08:00 | 2011-10-14 17:00 | 9.6w | 37d |  | start no earlier than 2011-07-13 08:00 | QA - 1 | 336h | 151.5h | On Track |
| 484 | CIS1.11.3 | Test and results documentation/reporting | 97d | 2011-06-20 08:00 A | 2011-12-30 17:00 |  | 25% | 73d | 2011-06-20 08:00 | 2011-11-10 17:00 | 21d | 37d |  | start no earlier than 2011-06-20 08:00 | QA - 1 | 112h | 54.25h | On Track |
| 485 | CIS1.11.4 | Security Testing | 82d | 2011-09-01 08:00 A | 2011-12-30 17:00 |  | 11% | 73d | 2011-09-15 08:00 | 2012-02-03 17:00 | 40d | 37d |  | start no earlier than 2011-09-01 08:00 | QA - 1 [25%] | 128h | 13.5h | On Track |
| 486 | CIS1.15 | **Technical Writing** | 41d | 2011-08-23 08:00 A | 2011-10-20 17:00 |  | 36% | 26.24d |  |  |  | 85d |  |  |  | 200h | 72h |  |
| 487 | CIS1.15.1 | caCIS_Solution_Architecture_Document.doc | 1d | 2011-08-23 08:00 A | 2011-08-23 17:00 A |  | 100% |  |  |  |  |  |  | start no earlier than 2011-08-23 08:00 | Tech Writer | 8h | 8h | Completed |
| 488 | CIS1.15.2 | caCIS-CDW-Evaluation.doc | 1d | 2011-08-24 08:00 A | 2011-08-24 17:00 A | 487 | 100% |  |  |  |  |  |  | start no earlier than 2011-08-23 08:00 | Tech Writer | 8h | 8h | Completed |
| 489 | CIS1.15.3 | Virtuoso_ETL_Approach.doc | 1d | 2011-08-25 08:00 A | 2011-08-25 17:00 A | 488 | 100% |  |  |  |  |  |  | start no earlier than 2011-08-23 08:00 | Tech Writer | 8h | 8h | Completed |
| 490 | CIS1.15.4 | Virtuoso_Security_Approach.doc | 1d | 2011-08-26 08:00 A | 2011-08-26 17:00 A | 489 | 100% |  |  |  |  |  |  | start no earlier than 2011-08-23 08:00 | Tech Writer | 8h | 8h | Completed |
| 491 | CIS1.15.5 | caCIS_IntegrationPlatform_CanonicalModelProcessor_SDS.doc | 1d | 2011-09-06 08:00 A | 2011-09-06 17:00 A | 489FF | 100% |  |  |  |  |  |  | start no earlier than 2011-09-06 08:00 | Tech Writer | 8h | 8h | Completed |
| 492 | CIS1.15.6 | caCIS_OpenXDS_SDS.doc | 1d | 2011-09-07 08:00 A | 2011-09-07 17:00 A | 491 | 100% |  |  |  |  |  |  | start no earlier than 2011-09-06 08:00 | Tech Writer | 8h | 8h | Completed |
| 493 | CIS1.15.7 | caCIS_SemanticAdapter_SDS.doc | 1d | 2011-09-08 08:00 A | 2011-09-08 17:00 A | 492 | 100% |  |  |  |  |  |  | start no earlier than 2011-09-06 08:00 | Tech Writer | 8h | 8h | Completed |
| 494 | CIS1.15.8 | caCIS_Semantic_Adapter_Design.doc | 1d | 2011-09-09 08:00 A | 2011-09-09 17:00 A | 493 | 100% |  |  |  |  |  |  | start no earlier than 2011-09-06 08:00 | Tech Writer | 8h | 8h | Completed |
| 495 | CIS1.15.9 | caCIS_IP_to_CDW_Design.doc | 1d | 2011-09-12 08:00 A | 2011-09-12 17:00 | 494 | 50% | 0.5d |  |  |  | 98.5d | 0d | start no earlier than 2011-09-06 08:00 | Tech Writer | 8h | 4h | On Track |
| 496 | CIS1.15.10 | caCIS_KeyStoreTrustStore.doc | 1d | 2011-09-13 08:00 A | 2011-09-13 17:00 | 495 | 50% | 0.5d |  |  |  | 98d | 0d | start no earlier than 2011-09-06 08:00 | Tech Writer | 8h | 4h | On Track |
| 497 | CIS1.15.11 | caCIS_DocumentRouter_Design.doc | 1d | 2011-09-14 08:00 | 2011-09-14 17:00 | 496 |  |  |  |  |  | 98d | 13d | start no earlier than 2011-09-06 08:00 | Tech Writer | 8h |  |  |
| 498 | CIS1.15.12 | caCIS_Logging_Design.doc | 2d | 2011-09-30 08:00 | 2011-10-03 17:00 | 497FF |  |  |  |  |  | 85d | 0d | start no earlier than 2011-09-30 08:00 | Tech Writer | 16h |  |  |
| 499 | CIS1.15.13 | caCIS_Identity_Resolver_Facade_Design.doc | 2d | 2011-10-04 08:00 | 2011-10-05 17:00 | 498 |  |  |  |  |  | 85d | 0d | start no earlier than 2011-09-30 08:00 | Tech Writer | 16h |  |  |
| 500 | CIS1.15.14 | caCIS_CanonicalModelProcessor_Design.doc | 2d | 2011-10-06 08:00 | 2011-10-07 17:00 | 499 |  |  |  |  |  | 85d | 0d | start no earlier than 2011-09-30 08:00 | Tech Writer | 16h |  |  |
| 501 | CIS1.15.15 | caCIS_Secure_Email_Design.doc | 2d | 2011-10-11 08:00 | 2011-10-12 17:00 | 500 |  |  |  |  |  | 85d | 0d | start no earlier than 2011-09-30 08:00 | Tech Writer | 16h |  |  |
| 502 | CIS1.15.16 | caCIS_Secure_File_Transfer_Design.doc | 2d | 2011-10-13 08:00 | 2011-10-14 17:00 | 501 |  |  |  |  |  | 85d | 0d | start no earlier than 2011-09-30 08:00 | Tech Writer | 16h |  |  |
| 503 | CIS1.15.17 | caCIS_OpenXDS_Design.doc | 2d | 2011-10-17 08:00 | 2011-10-18 17:00 | 502 |  |  |  |  |  | 85d | 0d | start no earlier than 2011-09-30 08:00 | Tech Writer | 16h |  |  |
| 504 | CIS1.15.18 | caCIS_CMP_Security_Design.doc | 2d | 2011-10-19 08:00 | 2011-10-20 17:00 | 503 |  |  |  |  |  | 85d |  | start no earlier than 2011-09-30 08:00 | Tech Writer | 16h |  |  |

| ID | WBS | Task | Type | Duration | Start | Finish | Predecessors | Complete | Remaining | Baseline start | Baseline finish | Baseline duration | Total slack | Free slack | Constraint | Resources | Work | Actual work | Text1 |
| --- | --- | --- | --- | --- | --- | --- | --- | --- | --- | --- | --- | --- | --- | --- | --- | --- | --- | --- | --- |
| 505 | CIS1.34 | **Systems Migration to CBIIT** |  | 35d | 2011-08-25 08:00 A | 2011-10-14 17:00 |  | 23% | 26.92d |  |  |  | 89d |  |  |  | 176h | 24h |  |
| 506 | CIS1.34.1 | **HPQC Migration** |  | 9d | 2011-08-25 08:00 A | 2011-09-07 17:00 A |  | 100% |  |  |  |  |  |  |  |  | 24h | 24h |  |
| 507 | CIS1.34.1.1 | Initiate Migration |  | 1d | 2011-08-25 08:00 A | 2011-08-25 17:00 A |  | 100% |  |  |  |  |  |  | start no earlier than 2011-08-25 08:00 | CDO | 8h | 8h | Completed |
| 508 | CIS1.34.1.2 | Dry- Run Date |  | 1d | 2011-08-31 08:00 A | 2011-08-31 17:00 A |  | 100% |  |  |  |  |  |  | start no earlier than 2011-08-31 08:00 | CDO | 8h | 8h | Completed |
| 509 | CIS1.34.1.3 | Migration Cutover |  | 1d | 2011-09-07 08:00 A | 2011-09-07 17:00 A |  | 100% |  |  |  |  |  |  | start no earlier than 2011-09-07 08:00 | CDO | 8h | 8h | Completed |
| 510 | CIS1.34.4 | **JIRA Migration** |  | 7d | 2011-10-03 08:00 | 2011-10-12 17:00 |  |  |  |  |  |  | 91d |  |  |  | 16h |  |  |
| 511 | CIS1.34.4.1 | Initiate Migration |  | 1d | 2011-10-03 08:00 | 2011-10-03 17:00 |  |  |  |  |  |  | 97d |  | start no earlier than 2011-10-03 08:00 | CDO | 8h |  |  |
| 512 | CIS1.34.4.2 | Migration Cutover |  | 1d | 2011-10-12 08:00 | 2011-10-12 17:00 |  |  |  |  |  |  | 91d |  | start no earlier than 2011-10-12 08:00 | CDO | 8h |  |  |
| 513 | CIS1.34.5 | **Subversion Migration** |  | 7d | 2011-10-03 08:00 | 2011-10-12 17:00 |  |  |  |  |  |  | 91d |  |  |  | 16h |  |  |
| 514 | CIS1.34.5.1 | Initiate Migration |  | 1d | 2011-10-03 08:00 | 2011-10-03 17:00 |  |  |  |  |  |  | 97d |  | start no earlier than 2011-10-03 08:00 | CDO | 8h |  |  |
| 515 | CIS1.34.5.2 | Migration Cutover |  | 1d | 2011-10-12 08:00 | 2011-10-12 17:00 |  |  |  |  |  |  | 91d |  | start no earlier than 2011-10-12 08:00 | CDO | 8h |  |  |
| 516 | CIS1.34.10 | **Build and Deployment Migration (Jenkins)** |  | 9d | 2011-10-03 08:00 | 2011-10-14 17:00 |  |  |  |  |  |  | 89d |  |  |  | 24h |  |  |
| 517 | CIS1.34.10.1 | Initiate Migration |  | 1d | 2011-10-03 08:00 | 2011-10-03 17:00 |  |  |  |  |  |  | 97d |  | start no earlier than 2011-10-03 08:00 | CDO | 8h |  |  |
| 518 | CIS1.34.10.2 | Dry- Run Date |  | 1d | 2011-10-11 08:00 | 2011-10-11 17:00 |  |  |  |  |  |  | 92d |  | start no earlier than 2011-10-11 08:00 | CDO | 8h |  |  |
| 519 | CIS1.34.10.3 | Migration Cutover |  | 1d | 2011-10-14 08:00 | 2011-10-14 17:00 |  |  |  |  |  |  | 89d |  | start no earlier than 2011-10-14 08:00 | CDO | 8h |  |  |
| 520 | CIS1.34.12 | **Target Environments (Virtuoso, Demo environments, etc)** |  | 9d | 2011-10-03 08:00 | 2011-10-14 17:00 |  |  |  |  |  |  | 89d |  |  | CDO | 96h |  |  |
| 521 | CIS1.34.12.1 | Initiate Migration |  | 1d | 2011-10-03 08:00 | 2011-10-03 17:00 |  |  |  |  |  |  | 97d |  | start no earlier than 2011-10-03 08:00 | CDO | 8h |  |  |
| 522 | CIS1.34.12.2 | Dry- Run Date |  | 1d | 2011-10-11 08:00 | 2011-10-11 17:00 |  |  |  |  |  |  | 92d |  | start no earlier than 2011-10-11 08:00 | CDO | 8h |  |  |
| 523 | CIS1.34.12.3 | Migration Cutover |  | 1d | 2011-10-14 08:00 | 2011-10-14 17:00 |  |  |  |  |  |  | 89d |  | start no earlier than 2011-10-14 08:00 | CDO | 8h |  |  |
| 524 | CIS1.12 | **Pre-Deployment** |  | 4d | 2011-09-21 08:00 | 2011-09-26 17:00 |  |  |  |  |  |  | 102d |  |  |  | 24h |  |  |
| 525 | CIS1.12.1 | Document TRANSCEND Deployment Architecture |  | 4d | 2011-09-21 08:00 | 2011-09-26 17:00 |  |  |  |  |  |  | 102d |  | start no earlier than 2011-09-21 08:00 | ARCH - 3 | 24h |  |  |
| 526 | CIS1.13 | **Software Development Project Close Out** |  | 18d | 2011-12-06 08:00 | 2011-12-30 17:00 | 32FS-15d |  |  | 2011-11-23 08:00 | 2011-12-14 17:00 | 15d | 37d |  |  |  | 64h |  |  |
| 527 | CIS1.13.1 | Ensure that all artifacts are checked into NCI subversion | milestone | 0d | 2011-12-06 08:00 | 2011-12-06 08:00 |  |  |  |  |  |  | 55d |  |  |  |  |  |  |
| 528 | CIS1.13.2 | Final Deliverables Accepted |  | 4d | 2011-12-06 08:00 | 2011-12-09 17:00 |  |  |  | 2011-11-23 08:00 | 2011-11-29 17:00 | 4d | 51d |  |  | Hurley [25%] | 4h |  |  |
| 529 | CIS1.13.3 | Final Deliverables Published |  | 15d | 2011-12-06 08:00 | 2011-12-27 17:00 |  |  |  | 2011-11-23 08:00 | 2011-12-14 17:00 | 15d | 40d |  |  | Hurley [25%] | 26h |  |  |
| 530 | CIS1.13.4 | Project Summary Report Completed |  | 18d | 2011-12-06 08:00 | 2011-12-30 17:00 |  |  |  | 2011-11-23 08:00 | 2011-12-14 17:00 | 15d | 37d | 0d |  | Hurley [75%] | 34h |  |  |
| 531 | CIS1.13.5 | Project Complete | milestone | 0d | 2011-12-30 17:00 | 2011-12-30 17:00 | 530 |  |  | 2011-12-14 17:00 | 2011-12-14 17:00 | 0d | 37d |  |  |  |  |  |  |

| ID | WBS | Task | Duration | Start | Finish | Predecessors | Baseline start | Baseline finish | Baseline duration | Total slack | Constraint | Resources | Work |
| --- | --- | --- | --- | --- | --- | --- | --- | --- | --- | --- | --- | --- | --- |
| 532 | CIS1.14 | **Deployment** | 40d | 2011-12-28 08:00 | 2012-02-21 17:00 | 32 | 2012-02-06 08:00 | 2012-03-30 17:00 | 40d | 0d |  |  | 400h |
| 533 | CIS1.14.1 | Architecture Deployment Support | 40d | 2011-12-28 08:00 | 2012-02-21 17:00 |  | 2012-02-06 08:00 | 2012-03-30 17:00 | 40d | 0d | start no earlier than 2011-11-01 08:00 | ARCHDEPLOYRES- 1 [25%] | 80h |
| 534 | CIS1.14.2 | Site Deployment - ESD | 6.67d | 2011-12-28 08:00 | 2012-01-05 14:20 |  | 2012-02-06 08:00 | 2012-02-14 14:20 | 6.67d | 33.33d | start no earlier than 2011-11-01 08:00 | ESDDEPLOYRES [300%] | 160h |
| 535 | CIS1.14.3 | Integration Testing | 10d | 2011-12-28 08:00 | 2012-01-10 17:00 |  | 2012-02-06 08:00 | 2012-03-01 10:02 | 18.25d | 30d |  | QADEPLOYRES | 80h |
| 536 | CIS1.14.4 | Pre-release support/testing Alpha, Beta, etc | 10d | 2011-12-28 08:00 | 2012-01-10 17:00 |  | 2011-09-30 08:00 | 2011-10-14 17:00 | 10d | 30d | start no earlier than 2011-09-30 08:00 | QADEPLOYRES2 | 80h |

Notes:
- 532: ·Deployment of caCIS Integration Platform into TRANSCEND Environemnt / ·Integration and configuration of software at TRANSCEND (IP, SA)
