# Clinical Information Suite Project

Schedule from MS Project, 2011-03-28 to 2012-02-21, A marks actual dates.
Essex Management

## Calendars

- Standard: Mon-Fri 08:00-12:00, 13:00-17:00; Sat-Sun off. Exceptions (off unless hours are given): 2011-07-04 (Independence Day), 2011-09-05 (Labor Day), 2011-10-10 (Columbus Day), 2011-11-11 (Veterans Day), 2011-11-24 (Thanksgiving Day), 2011-12-26 (Christmas Holiday).

## Resources

| Resource |
| --- |
| Joshi |
| ESD |
| NCI |
| SAIC-F |
| Parnell |
| Hurley |
| Phillips |
| Pierce |
| Cabral |
| Andonyadis |
| Shirley |
| Undale |
| Chintalapati |
| ANA - 1 |
| ARCH - 1 |
| Shalley |
| QA - 1 |
| ARCH - 5 |
| ARCH - 4 |
| ARCH - 3 |
| ARCH - 2 |
| Gann |
| ARCHDEPLOYRES- 1 |
| ESDDEPLOYRES |
| QADEPLOYRES |
| QADEPLOYRES2 |
| ARCH - 6 |
| ARCH - 7 |
| QA - 2 |

## Schedule

| ID | WBS | Task | Type | Duration | Start | Finish | Predecessors | Complete | Remaining | Baseline start | Baseline finish | Baseline duration | Baseline 1 start | Baseline 1 finish | Total slack | Free slack | Work | Actual work |
| --- | --- | --- | --- | --- | --- | --- | --- | --- | --- | --- | --- | --- | --- | --- | --- | --- | --- | --- |
| 1 | 1 | **caCIS Project** |  | 231d | 2011-03-28 04:00 A | 2012-02-21 17:00 |  | 41% | 136.55d | 2011-03-28 04:00 | 2012-03-30 17:00 | 259d | 2011-03-28 04:00 | 2012-02-24 17:00 | 0d |  | 9821.04h | 5329.52h |
| 2 | 1.1 | **Milestones** |  | 123d | 2011-06-29 17:00 A | 2011-12-27 17:00 |  |  | 123d |  |  |  |  |  | 63.42d |  |  |  |
| 3 | 1.1.1 | Solution Scope Approved | milestone | 0d | 2011-07-12 12:00 | 2011-07-12 12:00 | 326 |  |  |  |  |  |  |  | 178.92d |  |  |  |
| 4 | 1.1.2 | **TRANSCEND Interface** |  | 72d | 2011-08-04 08:00 A | 2011-11-16 17:00 |  |  | 72d |  |  |  |  |  | 50.42d | 27d |  |  |
| 5 | 1.1.2.1 | TRANSCEND Interface Architecture Complete | milestone | 0d | 2011-08-04 08:00 A | 2011-08-04 08:00 A | 337FF | 100% |  |  |  |  |  |  |  |  |  |  |
| 6 | 1.1.2.2 | TRANSCEND Interface Development Complete | milestone | 0d | 2011-09-16 17:00 A | 2011-09-16 17:00 | 342 | 7% | 0d |  |  |  |  |  | 91.42d |  |  |  |
| 7 | 1.1.2.3 | TRANSCEND Interface Quality Complete | milestone | 0d | 2011-11-16 17:00 | 2011-11-16 17:00 | 343 |  |  |  |  |  |  |  | 50.42d |  |  |  |
| 8 | 1.1.3 | **Modeling and Semantic Mapping** |  | 41d | 2011-09-20 17:00 | 2011-11-18 17:00 |  |  |  |  |  |  |  |  | 48.42d | 25d |  |  |
| 9 | 1.1.3.1 | Canonical Model Complete | milestone | 0d | 2011-09-20 17:00 | 2011-09-20 17:00 | 352 |  |  |  |  |  |  |  | 89.42d |  |  |  |
| 10 | 1.1.3.2 | Mapping Architecture Complete (Includes Transforms) | milestone | 0d | 2011-10-12 17:00 | 2011-10-12 17:00 | 358, 359, 361, 362, 363 |  |  |  |  |  |  |  | 74.42d |  |  |  |
| 11 | 1.1.3.3 | Mapping Development Complete | milestone | 0d | 2011-10-21 17:00 | 2011-10-21 17:00 | 364, 365, 366, 367, 368 |  |  |  |  |  |  |  | 67.42d |  |  |  |
| 12 | 1.1.3.4 | Mapping Quality Complete | milestone | 0d | 2011-11-18 17:00 | 2011-11-18 17:00 | 369, 370, 371, 372, 360 |  |  |  |  |  |  |  | 48.42d |  |  |  |
| 13 | 1.1.4 | **Semantic Adapter** |  | 76d | 2011-07-08 17:00 A | 2011-10-26 17:00 |  |  | 76d |  |  |  |  |  | 64.42d | 41d |  |  |
| 14 | 1.1.4.1 | Semantic Adapter Architecture Complete (Includes Design Only Features) | milestone | 0d | 2011-10-26 17:00 | 2011-10-26 17:00 | 376, 377, 375 |  |  |  |  |  |  |  | 64.42d |  |  |  |
| 15 | 1.1.4.2 | Semantic Adapter Development Complete | milestone | 0d | 2011-07-08 17:00 A | 2011-07-08 17:00 A | 374 | 100% |  |  |  |  |  |  |  |  |  |  |
| 16 | 1.1.4.3 | Semantic Adapter Quality Complete | milestone | 0d | 2011-07-20 17:00 A | 2011-07-20 17:00 A | 378 | 100% |  |  |  |  |  |  |  |  |  |  |
| 17 | 1.1.5 | **Integration Platform** |  | 88d | 2011-08-18 17:00 | 2011-12-27 17:00 |  |  |  |  |  |  |  |  | 0d |  |  |  |
| 18 | 1.1.5.1 | Integration Platform Canonical Model Processor Architecture Complete | milestone | 0d | 2011-09-07 17:00 | 2011-09-07 17:00 | 380, 381, 382, 383 |  |  |  |  |  |  |  | 98.42d |  |  |  |
| 19 | 1.1.5.2 | Integration Platform Canonical Model Processor Development Complete | milestone | 0d | 2011-09-22 17:00 | 2011-09-22 17:00 | 384, 385, 386, 387, 388 |  |  |  |  |  |  |  | 87.42d |  |  |  |
| 20 | 1.1.5.3 | Integraton Platform Canonical Model Processor Quality Complete | milestone | 0d | 2011-12-01 15:00 | 2011-12-01 15:00 | 389, 390, 392, 393, 391 |  |  |  |  |  |  |  | 40.67d |  |  |  |
| 21 | 1.1.5.4 | Integration Platform Document Router Architecture Complete | milestone | 0d | 2011-08-18 17:00 | 2011-08-18 17:00 | 395 |  |  |  |  |  |  |  | 111.42d |  |  |  |
| 22 | 1.1.5.5 | Integration Platform Document Router Development Complete | milestone | 0d | 2011-09-16 15:00 | 2011-09-16 15:00 | 396, 397, 398, 399, 400 |  |  |  |  |  |  |  | 91.67d |  |  |  |
| 23 | 1.1.5.6 | Integration Platform Document Router Quality Complete | milestone | 0d | 2011-12-27 17:00 | 2011-12-27 17:00 | 401, 402, 403, 404, 405 |  |  |  |  |  |  |  | 0d |  |  |  |
| 24 | 1.1.5.7 | Integration Platform Document Transfer Architecture Complete | milestone | 0d | 2011-08-30 17:00 | 2011-08-30 17:00 | 407, 409, 412, 408 |  |  |  |  |  |  |  | 103.42d |  |  |  |
| 25 | 1.1.5.8 | Integration Platform Document Transfer Development Complete | milestone | 0d | 2011-09-16 17:00 | 2011-09-16 17:00 | 410, 411, 413 |  |  |  |  |  |  |  | 91.42d |  |  |  |
| 26 | 1.1.5.9 | Integration Platform Document Transfer Quality Complete | milestone | 0d | 2011-12-15 17:00 | 2011-12-15 17:00 | 415, 416, 414 |  |  |  |  |  |  |  | 30.42d |  |  |  |

| ID | WBS | Task | Type | Duration | Start | Finish | Predecessors | Complete | Remaining | Baseline start | Baseline finish | Baseline duration | Baseline 1 start | Baseline 1 finish | Total slack | Free slack | Constraint | Resources | Work | Actual work | Text1 |
| --- | --- | --- | --- | --- | --- | --- | --- | --- | --- | --- | --- | --- | --- | --- | --- | --- | --- | --- | --- | --- | --- |
| 27 | 1.1.6 | **Clinical Data Warehouse** |  | 87d | 2011-06-29 17:00 A | 2011-11-02 17:00 |  |  | 87d |  |  |  |  |  | 59.42d | 36d |  |  |  |  |  |
| 28 | 1.1.6.1 | Clinical Data Warehouse Evaluation and Selection Complete | milestone | 0d | 2011-06-29 17:00 A | 2011-06-29 17:00 A | 329 | 100% |  |  |  |  |  |  |  |  |  |  |  |  |  |
| 29 | 1.1.6.2 | Clinical Data Warehouse Architecture Complete | milestone | 0d | 2011-09-21 17:00 | 2011-09-21 17:00 | 419, 422, 418, 420, 423, 426 |  |  |  |  |  |  |  | 88.42d |  |  |  |  |  |  |
| 30 | 1.1.6.3 | Clinical Data Warehouse Development Complete | milestone | 0d | 2011-09-16 11:12 | 2011-09-16 11:12 | 424, 427, 421 |  |  |  |  |  |  |  | 92.02d |  |  |  |  |  |  |
| 31 | 1.1.6.4 | Clinical Data Warehouse Quality Complete | milestone | 0d | 2011-11-02 17:00 | 2011-11-02 17:00 | 425, 428 |  |  |  |  |  |  |  | 59.42d |  |  |  |  |  |  |
| 32 | 1.1.7 | Solution Ready for TRANSCEND Deployment | milestone | 0d | 2011-12-27 17:00 | 2011-12-27 17:00 | 27, 17, 13, 8, 4 |  |  |  |  |  |  |  | 0d |  |  |  |  |  |  |
| 33 | 1.2 | **Project Management** |  | 194d | 2011-03-28 04:00 A | 2011-12-30 17:00 |  | 55% | 86.67d | 2011-03-28 04:00 | 2011-09-30 17:00 | 133d | 2011-03-28 04:00 | 2011-10-21 17:00 | 37d |  |  |  | 2043.8h | 1581.45h |  |
| 34 | 1.2.1 | **Scope Management** |  | 132.25d | 2011-03-28 04:00 A | 2011-09-30 10:00 |  | 97% | 4.6d | 2011-03-28 04:00 | 2011-09-30 10:00 | 132.25d | 2011-03-28 04:00 | 2011-09-30 10:00 | 98.75d |  |  |  | 898.8h | 867.8h | Milestone |
| 35 | 1.2.1.1 | Create WBS per Proposed Solution |  | 5d | 2011-04-15 04:00 A | 2011-04-22 09:00 A |  | 100% |  | 2011-04-15 04:00 | 2011-04-22 09:00 | 5d | 2011-04-15 04:00 | 2011-04-22 09:00 |  |  | start no earlier than 2011-04-15 04:00 | Hurley [25%] | 10h | 10h | Complete |
| 36 | 1.2.1.1 | Charter Approach Approved | milestone | 0d | 2011-03-28 04:00 A | 2011-03-28 04:00 A |  | 100% |  | 2011-03-28 04:00 | 2011-03-28 04:00 | 0d | 2011-03-28 04:00 | 2011-03-28 04:00 |  |  |  |  |  |  | Complete |
| 37 | 1.2.1.3 | ESD Assessment and Initial LOE on Proposed Solution |  | 4.5d | 2011-04-15 04:00 A | 2011-04-21 12:00 A |  | 100% |  | 2011-04-15 04:00 | 2011-04-21 12:00 | 4.5d | 2011-04-15 04:00 | 2011-04-21 12:00 |  |  | finish no earlier than 2011-04-21 13:00 | Parnell [80%]; Phillips [20%] | 36h | 36h | Complete |
| 38 | 1.2.1.4 | Quality Team Assessment and Initial LOE on Proposed Solution |  | 4.5d | 2011-04-15 09:00 A | 2011-04-21 14:00 A |  | 100% |  | 2011-04-15 09:00 | 2011-04-21 14:00 | 4.5d | 2011-04-15 09:00 | 2011-04-21 14:00 |  |  | finish no earlier than 2011-04-21 13:00 | Pierce | 36h | 36h | Complete |
| 39 | 1.2.1.4 | Draft 1 - Architectural Solution Proposal and Feedback Due |  | 3.5d | 2011-04-15 09:00 A | 2011-04-20 14:00 A |  | 100% |  | 2011-04-15 09:00 | 2011-04-20 14:00 | 3.5d | 2011-04-15 09:00 | 2011-04-20 14:00 |  |  | finish no earlier than 2011-04-20 13:00 | Cabral [75%]; Andonyadis; Shirley; Undale | 105h | 105h | Complete |
| 40 | 1.2.1.5 | Draft 2 - Solution Proposal Scope and Schedule Submitted to SAIC-F and Govt - For Final Review |  | 9.5d | 2011-04-19 09:00 A | 2011-05-02 14:00 A | 39FS-1d | 100% |  | 2011-04-19 09:00 | 2011-05-02 14:00 | 9.5d | 2011-04-19 09:00 | 2011-05-02 14:00 |  |  | finish no earlier than 2011-05-02 13:00 | Chintalapati [50%]; Parnell [80%]; Pierce; Hurley | 250.8h | 250.8h | Complete |
| 41 | 1.2.1.7 | Proposed Solution Review |  | 3d | 2011-05-02 04:00 A | 2011-05-05 12:00 A | 205FS-3d | 100% |  | 2011-05-02 04:00 | 2011-05-05 12:00 | 3d | 2011-05-02 04:00 | 2011-05-05 12:00 |  |  | finish no earlier than 2011-05-05 13:00 | Cabral [75%]; Andonyadis; Shirley; Undale | 90h | 90h | Complete |
| 42 | 1.2.1.8 | Project Solution Proposed Scope and Schedule Approval Meeting 1 | milestone | 0d | 2011-05-05 04:00 A | 2011-05-05 04:00 A | 41 | 100% |  | 2011-05-05 04:00 | 2011-05-05 04:00 | 0d | 2011-05-05 04:00 | 2011-05-05 04:00 |  |  |  |  |  |  | Complete |
| 43 | 1.2.1.9 | Security Considerations for Proposed Solution |  | 5d | 2011-05-06 04:00 A | 2011-05-12 17:00 A | 42FS+1d | 100% |  | 2011-05-06 04:00 | 2011-05-12 17:00 | 5d | 2011-05-06 04:00 | 2011-05-12 17:00 |  |  |  | Chintalapati [50%] | 20h | 20h | Complete |
| 44 | 1.2.1.10 | Security Considerations Review Meeting - 2nd Phase for Project Approval | milestone | 0d | 2011-05-13 04:00 A | 2011-05-13 04:00 A | 43 | 100% |  | 2011-05-13 04:00 | 2011-05-13 04:00 | 0d | 2011-05-13 04:00 | 2011-05-13 04:00 |  |  | start no earlier than 2011-05-13 04:00 |  |  |  | Complete |
| 45 | 1.2.1.11 | **Update Proposed Solution (New Use Cases)** |  | 20d | 2011-05-13 09:00 A | 2011-06-10 09:00 A | 44 | 100% |  | 2011-05-13 09:00 | 2011-06-10 09:00 | 20d | 2011-05-13 09:00 | 2011-06-10 09:00 |  |  |  |  | 20h | 20h |  |
| 46 | 1.2.1.11.1 | Architecture elaboration of use cases |  | 11d | 2011-05-13 09:00 A | 2011-05-30 09:00 A |  | 100% |  | 2011-05-13 09:00 | 2011-05-30 09:00 | 11d | 2011-05-13 09:00 | 2011-05-30 09:00 |  |  | start no earlier than 2011-05-13 08:00 |  |  |  | Complete |
| 47 | 1.2.1.11.2 | Architecture and Government Internal Review Meeting on proposed solution (new use cases) | milestone | 0d | 2011-05-18 08:00 A | 2011-05-18 08:00 A |  | 100% |  | 2011-05-18 08:00 | 2011-05-18 08:00 | 0d | 2011-05-18 08:00 | 2011-05-18 08:00 |  |  | start no earlier than 2011-05-18 08:00 | Chintalapati [50%]; Shirley; Andonyadis |  |  | Complete |
| 48 | 1.2.1.11.3 | Architecture to circulate draft of elaborated use cases | milestone | 0d | 2011-05-19 08:00 A | 2011-05-19 08:00 A |  | 100% |  | 2011-05-19 08:00 | 2011-05-19 08:00 | 0d | 2011-05-19 08:00 | 2011-05-19 08:00 |  |  | start no earlier than 2011-05-19 08:00 | Chintalapati [50%] |  |  | Complete |
| 49 | 1.2.1.11.4 | Team Feedback due on draft of elaborated use cases |  | 2d | 2011-05-20 08:00 A | 2011-05-23 17:00 A | 48 | 100% |  | 2011-05-20 08:00 | 2011-05-23 17:00 | 2d | 2011-05-20 08:00 | 2011-05-23 17:00 |  |  | start no earlier than 2011-05-20 08:00 |  |  |  | Complete |
| 50 | 1.2.1.11.5 | Architecture issues proposed solution update for team review | milestone | 0d | 2011-05-25 08:00 A | 2011-05-25 08:00 A | 49 | 100% |  | 2011-05-25 08:00 | 2011-05-25 08:00 | 0d | 2011-05-25 08:00 | 2011-05-25 08:00 |  |  | start no earlier than 2011-05-25 08:00 |  |  |  | Complete |
| 51 | 1.2.1.11.6 | Architectural Review Meeting | milestone | 0d | 2011-05-26 17:00 A | 2011-05-26 17:00 A | 50 | 100% |  | 2011-05-26 17:00 | 2011-05-26 17:00 | 0d | 2011-05-26 17:00 | 2011-05-26 17:00 |  |  |  | Chintalapati [50%] |  |  | Complete |
| 52 | 1.2.1.11.7 | Architecture Incorporation of use case feedback |  | 2d | 2011-05-27 08:00 A | 2011-05-30 17:00 A | 51 | 100% |  | 2011-05-27 08:00 | 2011-05-30 17:00 | 2d | 2011-05-27 08:00 | 2011-05-30 17:00 |  |  |  | Chintalapati [50%] | 8h | 8h | Complete |
| 53 | 1.2.1.11.8 | Review meeting on feedback on use case comments | milestone | 0d | 2011-05-27 08:00 A | 2011-05-27 08:00 A |  | 100% |  | 2011-05-27 08:00 | 2011-05-27 08:00 | 0d | 2011-05-27 08:00 | 2011-05-27 08:00 |  |  | start no earlier than 2011-05-27 08:00 | Chintalapati [50%] |  |  | Complete |
| 54 | 1.2.1.11.1 | Finalize feedback and update documentation |  | 2d | 2011-05-27 09:00 A | 2011-05-31 09:00 A | 53 | 100% |  | 2011-05-27 09:00 | 2011-05-31 09:00 | 2d | 2011-05-27 09:00 | 2011-05-31 09:00 |  |  |  | Chintalapati [50%] | 8h | 8h | Complete |
| 55 | 1.2.1.11.10 | Outline Plan with DSLs |  | 1d | 2011-05-31 09:00 A | 2011-06-01 09:00 A |  | 100% |  | 2011-05-31 09:00 | 2011-06-01 09:00 | 1d | 2011-05-31 09:00 | 2011-06-01 09:00 |  |  | start no earlier than 2011-05-31 08:00 |  |  |  | Complete |
| 56 | 1.2.1.11.11 | Plan Elaboration (Rough Order of Magnitude) |  | 1d | 2011-06-02 08:00 A | 2011-06-02 17:00 A | 55 | 100% |  | 2011-06-02 08:00 | 2011-06-02 17:00 | 1d | 2011-06-02 08:00 | 2011-06-02 17:00 |  |  | start no earlier than 2011-05-31 08:00 |  |  |  | Complete |
| 57 | 1.2.1.11.12 | Proposed Solution Issued |  | 1d | 2011-06-03 08:00 A | 2011-06-03 17:00 A | 56 | 100% |  | 2011-06-03 08:00 | 2011-06-03 17:00 | 1d | 2011-06-03 08:00 | 2011-06-03 17:00 |  |  | start no earlier than 2011-06-02 08:00 | Chintalapati [50%] | 4h | 4h | Complete |
| 58 | 1.2.1.11.13 | Development of Executive Slide Deck |  | 3d | 2011-06-01 08:00 A | 2011-06-03 17:00 A |  | 100% |  | 2011-06-01 08:00 | 2011-06-03 17:00 | 3d | 2011-06-01 08:00 | 2011-06-03 17:00 |  |  | start no earlier than 2011-06-01 08:00 |  |  |  | Complete |
| 59 | 1.2.1.11.14 | Plan, Proposal and Review Meeting | milestone | 0d | 2011-06-03 17:00 A | 2011-06-03 17:00 A | 58 | 100% |  | 2011-06-03 17:00 | 2011-06-03 17:00 | 0d | 2011-06-03 17:00 | 2011-06-03 17:00 |  |  | start no earlier than 2011-06-03 08:00 |  |  |  | Complete |
| 60 | 1.2.1.11.15 | Revise Solution and Level of Effort based on June 3 Meeting |  | 4d | 2011-06-06 09:00 A | 2011-06-10 09:00 A | 59 | 100% |  | 2011-06-06 09:00 | 2011-06-10 09:00 | 4d | 2011-06-06 09:00 | 2011-06-10 09:00 |  |  | start no earlier than 2011-06-06 08:00 |  |  |  | Complete |
| 61 | 1.2.1.11.16 | Provide Solution to Government | milestone | 0d | 2011-06-09 17:00 A | 2011-06-09 17:00 A | 60 | 100% |  | 2011-06-09 17:00 | 2011-06-09 17:00 | 0d | 2011-06-09 17:00 | 2011-06-09 17:00 |  |  |  |  |  |  | Complete |
| 62 | 1.2.1.11.17 | Solution Approval | milestone | 0d | 2011-06-10 08:00 A | 2011-06-10 08:00 A | 61 | 100% |  | 2011-06-10 08:00 | 2011-06-10 08:00 | 0d | 2011-06-10 08:00 | 2011-06-10 08:00 |  |  | start no earlier than 2011-06-10 08:00 |  |  |  |  |
| 63 | 1.2.1.12 | Development Environments Established for Elaboration (ESD - Tolven-Related CI Environment Enablement) |  | 5d | 2011-04-25 04:00 A | 2011-04-29 17:00 A |  | 100% |  | 2011-04-25 04:00 | 2011-04-29 17:00 | 5d | 2011-04-25 04:00 | 2011-04-29 17:00 |  |  | finish no earlier than 2011-04-29 13:00 | Parnell [50%] | 20h | 20h | Complete |
| 64 | 1.2.1.13 | Format and Data Elements Gap Spreadsheet |  | 6.5d | 2011-04-19 09:00 A | 2011-04-27 14:00 A |  | 100% |  | 2011-04-19 09:00 | 2011-04-27 14:00 | 6.5d | 2011-04-19 09:00 | 2011-04-27 14:00 |  |  | start no earlier than 2011-04-19 04:00 | Chintalapati [50%]; Parnell [50%] | 52h | 52h | Complete |
| 65 | 1.2.1.14 | Map Data Elements from PCO for Modeling Activities |  | 1d | 2011-04-28 13:00 A | 2011-04-29 12:00 A | 64 | 100% |  | 2011-04-28 13:00 | 2011-04-29 12:00 | 1d | 2011-04-28 13:00 | 2011-04-29 12:00 |  |  | finish no earlier than 2011-05-02 13:00 | Chintalapati [50%] | 4h | 4h | Complete |

Notes:
- 36: Charter reviewed with CBIIT Director @ March 21, 2011 Meeting. Outlined Scope Parameters in Charter are clear. Definiton of achievable tasks within project timeframe continue to elaborate

| ID | WBS | Task | Duration | Start | Finish | Predecessors | Complete | Remaining | Baseline start | Baseline finish | Baseline duration | Baseline 1 start | Baseline 1 finish | Total slack | Constraint | Deadline | Resources | Work | Actual work | Text1 |
| --- | --- | --- | --- | --- | --- | --- | --- | --- | --- | --- | --- | --- | --- | --- | --- | --- | --- | --- | --- | --- |
| 66 | 1.2.1.15 | **Security** | 1.5d | 2011-04-25 09:00 A | 2011-04-26 14:00 A |  | 100% |  | 2011-04-25 09:00 | 2011-04-26 14:00 | 1.5d | 2011-04-25 09:00 | 2011-04-26 14:00 |  |  |  |  | 8h | 8h | Complete |
| 67 | 1.2.1.15.3 | Security Considerations and Justification Document | 1.5d | 2011-04-25 09:00 A | 2011-04-26 14:00 A |  | 100% |  | 2011-04-25 09:00 | 2011-04-26 14:00 | 1.5d | 2011-04-25 09:00 | 2011-04-26 14:00 |  | start no earlier than 2011-04-25 04:00 |  | Chintalapati [50%] | 6h | 6h | Complete |
| 68 | 1.2.1.15.4 | Security Meeting (Discuss Security Considerations) | 0.5d | 2011-04-26 09:00 A | 2011-04-26 14:00 A |  | 100% |  | 2011-04-26 09:00 | 2011-04-26 14:00 | 0.5d | 2011-04-26 09:00 | 2011-04-26 14:00 |  | start no earlier than 2011-04-26 04:00 |  | Chintalapati [50%] | 2h | 2h | Complete |
| 69 | 1.2.1.16 | **caCIS Requirements Document** | 17.5d | 2011-04-05 04:00 A | 2011-04-28 12:00 A |  | 100% |  | 2011-04-05 04:00 | 2011-04-28 12:00 | 17.5d | 2011-04-05 04:00 | 2011-04-28 12:00 |  |  |  |  | 132h | 132h | Complete |
| 70 | 1.2.1.16.4 | Scope and Requirements - Draft 1 | 7.5d | 2011-04-05 04:00 A | 2011-04-14 12:00 A |  | 100% |  | 2011-04-05 04:00 | 2011-04-14 12:00 | 7.5d | 2011-04-05 04:00 | 2011-04-14 12:00 |  |  |  | ANA - 1 | 60h | 60h | Complete |
| 71 | 1.2.1.16.5 | Feed back and Review of Scope and Requirements Draft 1 | 4d | 2011-04-15 09:00 A | 2011-04-21 09:00 A | 70 | 100% |  | 2011-04-15 09:00 | 2011-04-21 09:00 | 4d | 2011-04-15 09:00 | 2011-04-21 09:00 |  | start no earlier than 2011-04-15 04:00 | 2011-04-22 13:00 |  |  |  | Complete |
| 72 | 1.2.1.16.6 | Scope and Requirements - Draft 2 | 9d | 2011-04-15 09:00 A | 2011-04-28 12:00 A |  | 100% |  | 2011-04-15 09:00 | 2011-04-28 12:00 | 9d | 2011-04-15 09:00 | 2011-04-28 12:00 |  | finish no earlier than 2011-04-28 13:00 |  | ARCH - 1 | 72h | 72h | Complete |
| 73 | 1.2.1.3 | **Daily Scrum Meetings (DSL and Team)** | 126.12d | 2011-04-05 09:00 A | 2011-09-30 10:00 |  | 73% | 34d | 2011-04-05 09:00 | 2011-09-30 10:00 | 126.12d | 2011-04-05 09:00 | 2011-09-30 10:00 | 122.17d |  |  |  | 115h | 84h |  |
| 74 | 1.2.1.3.1 | Daily Scrum Meetings 1 | 0.5h | 2011-04-05 09:00 A | 2011-04-05 09:30 A |  | 100% |  | 2011-04-05 09:00 | 2011-04-05 09:30 | 0.5h | 2011-04-05 09:00 | 2011-04-05 09:30 |  | start no earlier than 2011-04-05 09:00 |  | Hurley | 0.5h | 0.5h | Complete |
| 75 | 1.2.1.3.2 | Daily Scrum Meetings 2 | 0.5h | 2011-04-06 09:00 A | 2011-04-06 09:30 A |  | 100% |  | 2011-04-06 09:00 | 2011-04-06 09:30 | 0.5h | 2011-04-06 09:00 | 2011-04-06 09:30 |  | start no earlier than 2011-04-06 09:00 |  | Hurley | 0.5h | 0.5h | Complete |
| 76 | 1.2.1.3.3 | Daily Scrum Meetings 3 | 0.5h | 2011-04-07 09:00 A | 2011-04-07 09:30 A |  | 100% |  | 2011-04-07 09:00 | 2011-04-07 09:30 | 0.5h | 2011-04-07 09:00 | 2011-04-07 09:30 |  | start no earlier than 2011-04-07 09:00 |  | Hurley | 0.5h | 0.5h | Complete |
| 77 | 1.2.1.3.4 | Daily Scrum Meetings 4 | 0.5h | 2011-04-08 09:00 A | 2011-04-08 09:30 A |  | 100% |  | 2011-04-08 09:00 | 2011-04-08 09:30 | 0.5h | 2011-04-08 09:00 | 2011-04-08 09:30 |  | start no earlier than 2011-04-08 09:00 |  | Hurley | 0.5h | 0.5h | Complete |
| 78 | 1.2.1.3.5 | Daily Scrum Meetings 5 | 0.5h | 2011-04-11 09:00 A | 2011-04-11 09:30 A |  | 100% |  | 2011-04-11 09:00 | 2011-04-11 09:30 | 0.5h | 2011-04-11 09:00 | 2011-04-11 09:30 |  | start no earlier than 2011-04-11 09:00 |  | Hurley | 0.5h | 0.5h | Complete |
| 79 | 1.2.1.3.6 | Daily Scrum Meetings 6 | 0.5h | 2011-04-12 09:00 A | 2011-04-12 09:30 A |  | 100% |  | 2011-04-12 09:00 | 2011-04-12 09:30 | 0.5h | 2011-04-12 09:00 | 2011-04-12 09:30 |  | start no earlier than 2011-04-12 09:00 |  | Hurley | 0.5h | 0.5h | Complete |
| 80 | 1.2.1.3.7 | Daily Scrum Meetings 7 | 0.5h | 2011-04-13 09:00 A | 2011-04-13 09:30 A |  | 100% |  | 2011-04-13 09:00 | 2011-04-13 09:30 | 0.5h | 2011-04-13 09:00 | 2011-04-13 09:30 |  | start no earlier than 2011-04-13 09:00 |  | Hurley | 0.5h | 0.5h | Complete |
| 81 | 1.2.1.3.8 | Daily Scrum Meetings 8 | 0.5h | 2011-04-14 09:00 A | 2011-04-14 09:30 A |  | 100% |  | 2011-04-14 09:00 | 2011-04-14 09:30 | 0.5h | 2011-04-14 09:00 | 2011-04-14 09:30 |  | start no earlier than 2011-04-14 09:00 |  | Hurley | 0.5h | 0.5h | Complete |
| 82 | 1.2.1.3.9 | Daily Scrum Meetings 9 | 0.5h | 2011-04-15 09:00 A | 2011-04-15 09:30 A |  | 100% |  | 2011-04-15 09:00 | 2011-04-15 09:30 | 0.5h | 2011-04-15 09:00 | 2011-04-15 09:30 |  | start no earlier than 2011-04-15 09:00 |  | Hurley | 0.5h | 0.5h | Complete |
| 83 | 1.2.1.3.10 | Daily Scrum Meetings 10 | 0.5h | 2011-04-18 09:00 A | 2011-04-18 09:30 A |  | 100% |  | 2011-04-18 09:00 | 2011-04-18 09:30 | 0.5h | 2011-04-18 09:00 | 2011-04-18 09:30 |  | start no earlier than 2011-04-18 09:00 |  | Hurley | 0.5h | 0.5h | Complete |
| 84 | 1.2.1.3.11 | Daily Scrum Meetings 11 | 0.5h | 2011-04-19 09:00 A | 2011-04-19 09:30 A |  | 100% |  | 2011-04-19 09:00 | 2011-04-19 09:30 | 0.5h | 2011-04-19 09:00 | 2011-04-19 09:30 |  | start no earlier than 2011-04-19 09:00 |  | Hurley | 0.5h | 0.5h | Complete |
| 85 | 1.2.1.3.12 | Daily Scrum Meetings 12 | 0.5h | 2011-04-20 09:00 A | 2011-04-20 09:30 A |  | 100% |  | 2011-04-20 09:00 | 2011-04-20 09:30 | 0.5h | 2011-04-20 09:00 | 2011-04-20 09:30 |  | start no earlier than 2011-04-20 09:00 |  | Hurley | 0.5h | 0.5h | Complete |
| 86 | 1.2.1.3.13 | Daily Scrum Meetings 13 | 0.5h | 2011-04-21 09:00 A | 2011-04-21 09:30 A |  | 100% |  | 2011-04-21 09:00 | 2011-04-21 09:30 | 0.5h | 2011-04-21 09:00 | 2011-04-21 09:30 |  | start no earlier than 2011-04-21 09:00 |  | Hurley | 0.5h | 0.5h | Complete |
| 87 | 1.2.1.3.14 | Daily Scrum Meetings 14 | 0.5h | 2011-04-22 09:00 A | 2011-04-22 09:30 A |  | 100% |  | 2011-04-22 09:00 | 2011-04-22 09:30 | 0.5h | 2011-04-22 09:00 | 2011-04-22 09:30 |  | start no earlier than 2011-04-22 09:00 |  | Hurley | 0.5h | 0.5h | Complete |
| 88 | 1.2.1.3.15 | Daily Scrum Meetings 15 | 0.5h | 2011-04-25 09:00 A | 2011-04-25 09:30 A |  | 100% |  | 2011-04-25 09:00 | 2011-04-25 09:30 | 0.5h | 2011-04-25 09:00 | 2011-04-25 09:30 |  | start no earlier than 2011-04-25 09:00 |  | Hurley | 0.5h | 0.5h | Complete |
| 89 | 1.2.1.3.16 | Daily Scrum Meetings 16 | 0.5h | 2011-04-26 09:00 A | 2011-04-26 09:30 A |  | 100% |  | 2011-04-26 09:00 | 2011-04-26 09:30 | 0.5h | 2011-04-26 09:00 | 2011-04-26 09:30 |  | start no earlier than 2011-04-26 09:00 |  | Hurley | 0.5h | 0.5h | Complete |
| 90 | 1.2.1.3.17 | Daily Scrum Meetings 17 | 0.5h | 2011-04-27 09:00 A | 2011-04-27 09:30 A |  | 100% |  | 2011-04-27 09:00 | 2011-04-27 09:30 | 0.5h | 2011-04-27 09:00 | 2011-04-27 09:30 |  | start no earlier than 2011-04-27 09:00 |  | Hurley | 0.5h | 0.5h | Complete |
| 91 | 1.2.1.3.18 | Daily Scrum Meetings 18 | 0.5h | 2011-04-28 09:00 A | 2011-04-28 09:30 A |  | 100% |  | 2011-04-28 09:00 | 2011-04-28 09:30 | 0.5h | 2011-04-28 09:00 | 2011-04-28 09:30 |  | start no earlier than 2011-04-28 09:00 |  | Hurley | 0.5h | 0.5h | Complete |
| 92 | 1.2.1.3.19 | Daily Scrum Meetings 19 | 0.5h | 2011-04-29 04:00 A | 2011-04-29 08:30 A |  | 100% |  | 2011-04-29 04:00 | 2011-04-29 08:30 | 0.5h | 2011-04-29 04:00 | 2011-04-29 08:30 |  | start no earlier than 2011-04-29 09:00 |  | Hurley | 0.5h | 0.5h | Complete |
| 93 | 1.2.1.3.20 | Daily Scrum Meetings 20 | 0.5h | 2011-05-02 09:00 A | 2011-05-02 09:30 A |  | 100% |  | 2011-05-02 09:00 | 2011-05-02 09:30 | 0.5h | 2011-05-02 09:00 | 2011-05-02 09:30 |  | start no earlier than 2011-05-02 09:00 |  | Hurley | 0.5h | 0.5h | Complete |
| 94 | 1.2.1.3.21 | Daily Scrum Meetings 21 | 0.5h | 2011-05-03 09:00 A | 2011-05-03 09:30 A |  | 100% |  | 2011-05-03 09:00 | 2011-05-03 09:30 | 0.5h | 2011-05-03 09:00 | 2011-05-03 09:30 |  | start no earlier than 2011-05-03 09:00 |  | Hurley | 0.5h | 0.5h | Complete |
| 95 | 1.2.1.3.22 | Daily Scrum Meetings 22 | 1h | 2011-05-04 09:00 A | 2011-05-04 10:00 A |  | 100% |  | 2011-05-04 09:00 | 2011-05-04 10:00 | 1h | 2011-05-04 09:00 | 2011-05-04 10:00 |  | start no earlier than 2011-05-04 09:00 |  | Hurley | 1h | 1h | Complete |
| 96 | 1.2.1.3.23 | Daily Scrum Meetings 23 | 1h | 2011-05-05 09:00 A | 2011-05-05 10:00 A |  | 100% |  | 2011-05-05 09:00 | 2011-05-05 10:00 | 1h | 2011-05-05 09:00 | 2011-05-05 10:00 |  | start no earlier than 2011-05-05 09:00 |  | Hurley | 1h | 1h | Complete |
| 97 | 1.2.1.3.24 | Daily Scrum Meetings 24 | 1h | 2011-05-06 09:00 A | 2011-05-06 10:00 A |  | 100% |  | 2011-05-06 09:00 | 2011-05-06 10:00 | 1h | 2011-05-06 09:00 | 2011-05-06 10:00 |  | start no earlier than 2011-05-06 09:00 |  | Hurley | 1h | 1h | Complete |
| 98 | 1.2.1.3.25 | Daily Scrum Meetings 25 | 1h | 2011-05-09 09:00 A | 2011-05-09 10:00 A |  | 100% |  | 2011-05-09 09:00 | 2011-05-09 10:00 | 1h | 2011-05-09 09:00 | 2011-05-09 10:00 |  | start no earlier than 2011-05-09 09:00 |  | Hurley | 1h | 1h | Complete |
| 99 | 1.2.1.3.26 | Daily Scrum Meetings 26 | 1h | 2011-05-10 09:00 A | 2011-05-10 10:00 A |  | 100% |  | 2011-05-10 09:00 | 2011-05-10 10:00 | 1h | 2011-05-10 09:00 | 2011-05-10 10:00 |  | start no earlier than 2011-05-10 09:00 |  | Hurley | 1h | 1h | Complete |
| 100 | 1.2.1.3.27 | Daily Scrum Meetings 27 | 1h | 2011-05-11 09:00 A | 2011-05-11 10:00 A |  | 100% |  | 2011-05-11 09:00 | 2011-05-11 10:00 | 1h | 2011-05-11 09:00 | 2011-05-11 10:00 |  | start no earlier than 2011-05-11 09:00 |  | Hurley | 1h | 1h | Complete |
| 101 | 1.2.1.3.28 | Daily Scrum Meetings 28 | 1h | 2011-05-12 09:00 A | 2011-05-12 10:00 A |  | 100% |  | 2011-05-12 09:00 | 2011-05-12 10:00 | 1h | 2011-05-12 09:00 | 2011-05-12 10:00 |  | start no earlier than 2011-05-12 09:00 |  | Hurley | 1h | 1h | Complete |
| 102 | 1.2.1.3.29 | Daily Scrum Meetings 29 | 1h | 2011-05-13 09:00 A | 2011-05-13 10:00 A |  | 100% |  | 2011-05-13 09:00 | 2011-05-13 10:00 | 1h | 2011-05-13 09:00 | 2011-05-13 10:00 |  | start no earlier than 2011-05-13 09:00 |  | Hurley | 1h | 1h | Complete |
| 103 | 1.2.1.3.30 | Daily Scrum Meetings 30 | 1h | 2011-05-16 09:00 A | 2011-05-16 10:00 A |  | 100% |  | 2011-05-16 09:00 | 2011-05-16 10:00 | 1h | 2011-05-16 09:00 | 2011-05-16 10:00 |  | start no earlier than 2011-05-16 09:00 |  | Hurley | 1h | 1h | Complete |
| 104 | 1.2.1.3.31 | Daily Scrum Meetings 31 | 1h | 2011-05-17 09:00 A | 2011-05-17 10:00 A |  | 100% |  | 2011-05-17 09:00 | 2011-05-17 10:00 | 1h | 2011-05-17 09:00 | 2011-05-17 10:00 |  | start no earlier than 2011-05-17 09:00 |  | Hurley | 1h | 1h | Complete |
| 105 | 1.2.1.3.32 | Daily Scrum Meetings 32 | 1h | 2011-05-18 09:00 A | 2011-05-18 10:00 A |  | 100% |  | 2011-05-18 09:00 | 2011-05-18 10:00 | 1h | 2011-05-18 09:00 | 2011-05-18 10:00 |  | start no earlier than 2011-05-18 09:00 |  | Hurley | 1h | 1h | Complete |
| 106 | 1.2.1.3.33 | Daily Scrum Meetings 33 | 1h | 2011-05-19 09:00 A | 2011-05-19 10:00 A |  | 100% |  | 2011-05-19 09:00 | 2011-05-19 10:00 | 1h | 2011-05-19 09:00 | 2011-05-19 10:00 |  | start no earlier than 2011-05-19 09:00 |  | Hurley | 1h | 1h | Complete |
| 107 | 1.2.1.3.34 | Daily Scrum Meetings 34 | 1h | 2011-05-20 09:00 A | 2011-05-20 10:00 A |  | 100% |  | 2011-05-20 09:00 | 2011-05-20 10:00 | 1h | 2011-05-20 09:00 | 2011-05-20 10:00 |  | start no earlier than 2011-05-20 09:00 |  | Hurley | 1h | 1h | Complete |
| 108 | 1.2.1.3.35 | Daily Scrum Meetings 35 | 1h | 2011-05-23 09:00 A | 2011-05-23 10:00 A |  | 100% |  | 2011-05-23 09:00 | 2011-05-23 10:00 | 1h | 2011-05-23 09:00 | 2011-05-23 10:00 |  | start no earlier than 2011-05-23 09:00 |  | Hurley | 1h | 1h | Complete |
| 109 | 1.2.1.3.36 | Daily Scrum Meetings 36 | 1h | 2011-05-24 09:00 A | 2011-05-24 10:00 A |  | 100% |  | 2011-05-24 09:00 | 2011-05-24 10:00 | 1h | 2011-05-24 09:00 | 2011-05-24 10:00 |  | start no earlier than 2011-05-24 09:00 |  | Hurley | 1h | 1h | Complete |
| 110 | 1.2.1.3.37 | Daily Scrum Meetings 37 | 1h | 2011-05-25 09:00 A | 2011-05-25 10:00 A |  | 100% |  | 2011-05-25 09:00 | 2011-05-25 10:00 | 1h | 2011-05-25 09:00 | 2011-05-25 10:00 |  | start no earlier than 2011-05-25 09:00 |  | Hurley | 1h | 1h | Complete |
| 111 | 1.2.1.3.38 | Daily Scrum Meetings 38 | 1h | 2011-05-26 09:00 A | 2011-05-26 10:00 A |  | 100% |  | 2011-05-26 09:00 | 2011-05-26 10:00 | 1h | 2011-05-26 09:00 | 2011-05-26 10:00 |  | start no earlier than 2011-05-26 09:00 |  | Hurley | 1h | 1h | Complete |
| 112 | 1.2.1.3.39 | Daily Scrum Meetings 39 | 1h | 2011-05-27 09:00 A | 2011-05-27 10:00 A |  | 100% |  | 2011-05-27 09:00 | 2011-05-27 10:00 | 1h | 2011-05-27 09:00 | 2011-05-27 10:00 |  | start no earlier than 2011-05-27 09:00 |  | Hurley | 1h | 1h | Complete |
| 113 | 1.2.1.3.40 | Daily Scrum Meetings 40 | 1h | 2011-05-31 09:00 A | 2011-05-31 10:00 A |  | 100% |  | 2011-05-31 09:00 | 2011-05-31 10:00 | 1h | 2011-05-31 09:00 | 2011-05-31 10:00 |  | start no earlier than 2011-05-31 09:00 |  | Hurley | 1h | 1h | Complete |
| 114 | 1.2.1.3.41 | Daily Scrum Meetings 41 | 1h | 2011-06-01 09:00 A | 2011-06-01 10:00 A |  | 100% |  | 2011-06-01 09:00 | 2011-06-01 10:00 | 1h | 2011-06-01 09:00 | 2011-06-01 10:00 |  | start no earlier than 2011-06-01 09:00 |  | Hurley | 1h | 1h | Complete |
| 115 | 1.2.1.3.42 | Daily Scrum Meetings 42 | 1h | 2011-06-02 09:00 A | 2011-06-02 10:00 A |  | 100% |  | 2011-06-02 09:00 | 2011-06-02 10:00 | 1h | 2011-06-02 09:00 | 2011-06-02 10:00 |  | start no earlier than 2011-06-02 09:00 |  | Undale | 1h | 1h | Complete |
| 116 | 1.2.1.3.43 | Daily Scrum Meetings 43 | 1h | 2011-06-03 09:00 A | 2011-06-03 10:00 A |  | 100% |  | 2011-06-03 09:00 | 2011-06-03 10:00 | 1h | 2011-06-03 09:00 | 2011-06-03 10:00 |  | start no earlier than 2011-06-03 09:00 |  | Undale | 1h | 1h | Complete |
| 117 | 1.2.1.3.44 | Daily Scrum Meetings 44 | 1h | 2011-06-06 09:00 A | 2011-06-06 10:00 A |  | 100% |  | 2011-06-06 09:00 | 2011-06-06 10:00 | 1h | 2011-06-06 09:00 | 2011-06-06 10:00 |  | start no earlier than 2011-06-06 09:00 |  | Hurley | 1h | 1h | Complete |
| 118 | 1.2.1.3.45 | Daily Scrum Meetings 45 | 1h | 2011-06-07 09:00 A | 2011-06-07 10:00 A |  | 100% |  | 2011-06-07 09:00 | 2011-06-07 10:00 | 1h | 2011-06-07 09:00 | 2011-06-07 10:00 |  | start no earlier than 2011-06-07 09:00 |  | Hurley | 1h | 1h | Complete |
| 119 | 1.2.1.3.46 | Daily Scrum Meetings 46 | 1h | 2011-06-08 09:00 A | 2011-06-08 10:00 A |  | 100% |  | 2011-06-08 09:00 | 2011-06-08 10:00 | 1h | 2011-06-08 09:00 | 2011-06-08 10:00 |  | start no earlier than 2011-06-08 09:00 |  | Hurley | 1h | 1h | Complete |
| 120 | 1.2.1.3.47 | Daily Scrum Meetings 47 | 1h | 2011-06-09 09:00 A | 2011-06-09 10:00 A |  | 100% |  | 2011-06-09 09:00 | 2011-06-09 10:00 | 1h | 2011-06-09 09:00 | 2011-06-09 10:00 |  | start no earlier than 2011-06-09 09:00 |  | Hurley | 1h | 1h | Complete |
| 121 | 1.2.1.3.48 | Daily Scrum Meetings 48 | 1h | 2011-06-10 09:00 A | 2011-06-10 10:00 A |  | 100% |  | 2011-06-10 09:00 | 2011-06-10 10:00 | 1h | 2011-06-10 09:00 | 2011-06-10 10:00 |  | start no earlier than 2011-06-10 09:00 |  | Hurley | 1h | 1h |  |
| 122 | 1.2.1.3.49 | Daily Scrum Meetings 49 | 1h | 2011-06-13 09:00 A | 2011-06-13 10:00 A |  | 100% |  | 2011-06-13 09:00 | 2011-06-13 10:00 | 1h | 2011-06-13 09:00 | 2011-06-13 10:00 |  | start no earlier than 2011-06-13 09:00 |  | Hurley | 1h | 1h |  |
| 123 | 1.2.1.3.50 | Daily Scrum Meetings 50 | 1h | 2011-06-14 09:00 A | 2011-06-14 10:00 A |  | 100% |  | 2011-06-14 09:00 | 2011-06-14 10:00 | 1h | 2011-06-14 09:00 | 2011-06-14 10:00 |  | start no earlier than 2011-06-14 09:00 |  | Hurley | 1h | 1h |  |
| 124 | 1.2.1.3.51 | Daily Scrum Meetings 51 | 1h | 2011-06-15 09:00 A | 2011-06-15 10:00 A |  | 100% |  | 2011-06-15 09:00 | 2011-06-15 10:00 | 1h | 2011-06-15 09:00 | 2011-06-15 10:00 |  | start no earlier than 2011-06-15 09:00 |  | Hurley | 1h | 1h |  |
| 125 | 1.2.1.3.52 | Daily Scrum Meetings 52 | 1h | 2011-06-16 09:00 A | 2011-06-16 10:00 A |  | 100% |  | 2011-06-16 09:00 | 2011-06-16 10:00 | 1h | 2011-06-16 09:00 | 2011-06-16 10:00 |  | start no earlier than 2011-06-16 09:00 |  | Hurley | 1h | 1h |  |
| 126 | 1.2.1.3.53 | Daily Scrum Meetings 53 | 1h | 2011-06-17 09:00 A | 2011-06-17 10:00 A |  | 100% |  | 2011-06-17 09:00 | 2011-06-17 10:00 | 1h | 2011-06-17 09:00 | 2011-06-17 10:00 |  | start no earlier than 2011-06-17 09:00 |  | Hurley | 1h | 1h |  |
| 127 | 1.2.1.3.54 | Daily Scrum Meetings 54 | 1h | 2011-06-20 09:00 A | 2011-06-20 10:00 A |  | 100% |  | 2011-06-20 09:00 | 2011-06-20 10:00 | 1h | 2011-06-20 09:00 | 2011-06-20 10:00 |  | start no earlier than 2011-06-20 09:00 |  | Undale | 1h | 1h |  |
| 128 | 1.2.1.3.55 | Daily Scrum Meetings 55 | 1h | 2011-06-21 09:00 A | 2011-06-21 10:00 A |  | 100% |  | 2011-06-21 09:00 | 2011-06-21 10:00 | 1h | 2011-06-21 09:00 | 2011-06-21 10:00 |  | start no earlier than 2011-06-21 09:00 |  | Undale | 1h | 1h |  |
| 129 | 1.2.1.3.56 | Daily Scrum Meetings 56 | 1h | 2011-06-22 09:00 A | 2011-06-22 10:00 A |  | 100% |  | 2011-06-22 09:00 | 2011-06-22 10:00 | 1h | 2011-06-22 09:00 | 2011-06-22 10:00 |  | start no earlier than 2011-06-22 09:00 |  | Undale | 1h | 1h |  |
| 130 | 1.2.1.3.57 | Daily Scrum Meetings 57 | 1h | 2011-06-23 09:00 A | 2011-06-23 10:00 A |  | 100% |  | 2011-06-23 09:00 | 2011-06-23 10:00 | 1h | 2011-06-23 09:00 | 2011-06-23 10:00 |  | start no earlier than 2011-06-23 09:00 |  | Undale | 1h | 1h |  |
| 131 | 1.2.1.3.58 | Daily Scrum Meetings 58 | 1h | 2011-06-24 09:00 A | 2011-06-24 10:00 A |  | 100% |  | 2011-06-24 09:00 | 2011-06-24 10:00 | 1h | 2011-06-24 09:00 | 2011-06-24 10:00 |  | start no earlier than 2011-06-24 09:00 |  | Undale | 1h | 1h |  |
| 132 | 1.2.1.3.59 | Daily Scrum Meetings 59 | 1h | 2011-06-27 09:00 A | 2011-06-27 10:00 A |  | 100% |  | 2011-06-27 09:00 | 2011-06-27 10:00 | 1h | 2011-06-27 09:00 | 2011-06-27 10:00 |  | start no earlier than 2011-06-27 09:00 |  | Hurley | 1h | 1h |  |
| 133 | 1.2.1.3.60 | Daily Scrum Meetings 60 | 1h | 2011-06-28 09:00 A | 2011-06-28 10:00 A |  | 100% |  | 2011-06-28 09:00 | 2011-06-28 10:00 | 1h | 2011-06-28 09:00 | 2011-06-28 10:00 |  | start no earlier than 2011-06-28 09:00 |  | Hurley | 1h | 1h |  |
| 134 | 1.2.1.3.61 | Daily Scrum Meetings 61 | 1h | 2011-06-29 09:00 A | 2011-06-29 10:00 A |  | 100% |  | 2011-06-29 09:00 | 2011-06-29 10:00 | 1h | 2011-06-29 09:00 | 2011-06-29 10:00 |  | start no earlier than 2011-06-29 09:00 |  | Hurley | 1h | 1h |  |
| 135 | 1.2.1.3.62 | Daily Scrum Meetings 62 | 1h | 2011-06-30 09:00 A | 2011-06-30 10:00 A |  | 100% |  | 2011-06-30 09:00 | 2011-06-30 10:00 | 1h | 2011-06-30 09:00 | 2011-06-30 10:00 |  | start no earlier than 2011-06-30 09:00 |  | Hurley | 1h | 1h |  |

| ID | WBS | Task | Duration | Start | Finish | Complete | Baseline start | Baseline finish | Baseline duration | Baseline 1 start | Baseline 1 finish | Total slack | Constraint | Resources | Work | Actual work |
| --- | --- | --- | --- | --- | --- | --- | --- | --- | --- | --- | --- | --- | --- | --- | --- | --- |
| 136 | 1.2.1.3.63 | Daily Scrum Meetings 63 | 1h | 2011-07-01 09:00 A | 2011-07-01 10:00 A | 100% | 2011-07-01 09:00 | 2011-07-01 10:00 | 1h | 2011-07-01 09:00 | 2011-07-01 10:00 |  | start no earlier than 2011-07-01 09:00 | Undale | 1h | 1h |
| 137 | 1.2.1.3.64 | Daily Scrum Meetings 64 | 1h | 2011-07-05 09:00 A | 2011-07-05 10:00 A | 100% | 2011-07-05 09:00 | 2011-07-05 10:00 | 1h | 2011-07-05 09:00 | 2011-07-05 10:00 |  | start no earlier than 2011-07-05 09:00 | Hurley | 1h | 1h |
| 138 | 1.2.1.3.65 | Daily Scrum Meetings 65 | 1h | 2011-07-06 09:00 A | 2011-07-06 10:00 A | 100% | 2011-07-06 09:00 | 2011-07-06 10:00 | 1h | 2011-07-06 09:00 | 2011-07-06 10:00 |  | start no earlier than 2011-07-06 09:00 | Hurley | 1h | 1h |
| 139 | 1.2.1.3.66 | Daily Scrum Meetings 66 | 1h | 2011-07-07 09:00 A | 2011-07-07 10:00 A | 100% | 2011-07-07 09:00 | 2011-07-07 10:00 | 1h | 2011-07-07 09:00 | 2011-07-07 10:00 |  | start no earlier than 2011-07-07 09:00 | Hurley | 1h | 1h |
| 140 | 1.2.1.3.67 | Daily Scrum Meetings 67 | 1h | 2011-07-08 09:00 A | 2011-07-08 10:00 A | 100% | 2011-07-08 09:00 | 2011-07-08 10:00 | 1h | 2011-07-08 09:00 | 2011-07-08 10:00 |  | start no earlier than 2011-07-08 09:00 | Hurley | 1h | 1h |
| 141 | 1.2.1.3.68 | Daily Scrum Meetings 68 | 0.5h | 2011-07-11 09:00 A | 2011-07-11 09:30 A | 100% | 2011-07-11 09:00 | 2011-07-11 10:00 | 1h | 2011-07-11 09:00 | 2011-07-11 10:00 |  | start no earlier than 2011-07-11 09:00 | Hurley | 0.5h | 0.5h |
| 142 | 1.2.1.3.69 | Daily Scrum Meetings 69 | 1h | 2011-07-12 09:00 A | 2011-07-12 10:00 A | 100% | 2011-07-12 09:00 | 2011-07-12 10:00 | 1h | 2011-07-12 09:00 | 2011-07-12 10:00 |  | start no earlier than 2011-07-12 09:00 | Hurley | 1h | 1h |
| 143 | 1.2.1.3.70 | Daily Scrum Meetings 70 | 1h | 2011-07-13 09:00 A | 2011-07-13 10:00 A | 100% | 2011-07-13 09:00 | 2011-07-13 10:00 | 1h | 2011-07-13 09:00 | 2011-07-13 10:00 |  | start no earlier than 2011-07-13 09:00 | Hurley | 1h | 1h |
| 144 | 1.2.1.3.71 | Daily Scrum Meetings 71 | 1h | 2011-07-14 09:00 A | 2011-07-14 10:00 A | 100% | 2011-07-14 09:00 | 2011-07-14 10:00 | 1h | 2011-07-14 09:00 | 2011-07-14 10:00 |  | start no earlier than 2011-07-14 09:00 | Hurley | 1h | 1h |
| 145 | 1.2.1.3.72 | Daily Scrum Meetings 72 | 1h | 2011-07-15 09:00 A | 2011-07-15 10:00 A | 100% | 2011-07-15 09:00 | 2011-07-15 10:00 | 1h | 2011-07-15 09:00 | 2011-07-15 10:00 |  | start no earlier than 2011-07-15 09:00 | Hurley | 1h | 1h |
| 146 | 1.2.1.3.73 | Daily Scrum Meetings 73 | 1h | 2011-07-18 09:00 A | 2011-07-18 10:00 A | 100% | 2011-07-18 09:00 | 2011-07-18 10:00 | 1h | 2011-07-18 09:00 | 2011-07-18 10:00 |  | start no earlier than 2011-07-18 09:00 | Hurley | 1h | 1h |
| 147 | 1.2.1.3.74 | Daily Scrum Meetings 74 | 1h | 2011-07-19 09:00 A | 2011-07-19 10:00 A | 100% | 2011-07-19 09:00 | 2011-07-19 10:00 | 1h | 2011-07-19 09:00 | 2011-07-19 10:00 |  | start no earlier than 2011-07-19 09:00 | Hurley | 1h | 1h |
| 148 | 1.2.1.3.75 | Daily Scrum Meetings 75 | 1h | 2011-07-20 09:00 A | 2011-07-20 10:00 A | 100% | 2011-07-20 09:00 | 2011-07-20 10:00 | 1h | 2011-07-20 09:00 | 2011-07-20 10:00 |  | start no earlier than 2011-07-20 09:00 | Hurley | 1h | 1h |
| 149 | 1.2.1.3.76 | Daily Scrum Meetings 76 | 1h | 2011-07-21 09:00 A | 2011-07-21 10:00 A | 100% | 2011-07-21 09:00 | 2011-07-21 10:00 | 1h | 2011-07-21 09:00 | 2011-07-21 10:00 |  | start no earlier than 2011-07-21 09:00 | Hurley | 1h | 1h |
| 150 | 1.2.1.3.77 | Daily Scrum Meetings 77 | 1h | 2011-07-22 09:00 A | 2011-07-22 10:00 A | 100% | 2011-07-22 09:00 | 2011-07-22 10:00 | 1h | 2011-07-22 09:00 | 2011-07-22 10:00 |  | start no earlier than 2011-07-22 09:00 | Hurley | 1h | 1h |
| 151 | 1.2.1.3.78 | Daily Scrum Meetings 78 | 1h | 2011-07-25 09:00 A | 2011-07-25 10:00 A | 100% | 2011-07-25 09:00 | 2011-07-25 10:00 | 1h | 2011-07-25 09:00 | 2011-07-25 10:00 |  | start no earlier than 2011-07-25 09:00 | Hurley | 1h | 1h |
| 152 | 1.2.1.3.79 | Daily Scrum Meetings 79 | 1h | 2011-07-26 09:00 A | 2011-07-26 10:00 A | 100% | 2011-07-26 09:00 | 2011-07-26 10:00 | 1h | 2011-07-26 09:00 | 2011-07-26 10:00 |  | start no earlier than 2011-07-26 09:00 | Hurley | 1h | 1h |
| 153 | 1.2.1.3.80 | Daily Scrum Meetings 80 | 1h | 2011-07-27 09:00 A | 2011-07-27 10:00 A | 100% | 2011-07-27 09:00 | 2011-07-27 10:00 | 1h | 2011-07-27 09:00 | 2011-07-27 10:00 |  | start no earlier than 2011-07-27 09:00 | Hurley | 1h | 1h |
| 154 | 1.2.1.3.81 | Daily Scrum Meetings 81 | 1h | 2011-07-28 09:00 A | 2011-07-28 10:00 A | 100% | 2011-07-28 09:00 | 2011-07-28 10:00 | 1h | 2011-07-28 09:00 | 2011-07-28 10:00 |  | start no earlier than 2011-07-28 09:00 | Hurley | 1h | 1h |
| 155 | 1.2.1.3.82 | Daily Scrum Meetings 82 | 1h | 2011-07-29 09:00 A | 2011-07-29 10:00 A | 100% | 2011-07-29 09:00 | 2011-07-29 10:00 | 1h | 2011-07-29 09:00 | 2011-07-29 10:00 |  | start no earlier than 2011-07-29 09:00 | Hurley | 1h | 1h |
| 156 | 1.2.1.3.83 | Daily Scrum Meetings 83 | 1h | 2011-08-01 09:00 A | 2011-08-01 10:00 A | 100% | 2011-08-01 09:00 | 2011-08-01 10:00 | 1h | 2011-08-01 09:00 | 2011-08-01 10:00 |  | start no earlier than 2011-08-01 09:00 | Hurley | 1h | 1h |
| 157 | 1.2.1.3.84 | Daily Scrum Meetings 84 | 1h | 2011-08-02 09:00 A | 2011-08-02 10:00 A | 100% | 2011-08-02 09:00 | 2011-08-02 10:00 | 1h | 2011-08-02 09:00 | 2011-08-02 10:00 |  | start no earlier than 2011-08-02 09:00 | Hurley | 1h | 1h |
| 158 | 1.2.1.3.85 | Daily Scrum Meetings 85 | 1h | 2011-08-03 09:00 A | 2011-08-03 10:00 A | 100% | 2011-08-03 09:00 | 2011-08-03 10:00 | 1h | 2011-08-03 09:00 | 2011-08-03 10:00 |  | start no earlier than 2011-08-03 09:00 | Hurley | 1h | 1h |
| 159 | 1.2.1.3.86 | Daily Scrum Meetings 86 | 1h | 2011-08-04 09:00 A | 2011-08-04 10:00 A | 100% | 2011-08-04 09:00 | 2011-08-04 10:00 | 1h | 2011-08-04 09:00 | 2011-08-04 10:00 |  | start no earlier than 2011-08-04 09:00 | Hurley | 1h | 1h |
| 160 | 1.2.1.3.87 | Daily Scrum Meetings 87 | 1h | 2011-08-05 09:00 A | 2011-08-05 10:00 A | 100% | 2011-08-05 09:00 | 2011-08-05 10:00 | 1h | 2011-08-05 09:00 | 2011-08-05 10:00 |  | start no earlier than 2011-08-05 09:00 | Hurley | 1h | 1h |
| 161 | 1.2.1.3.88 | Daily Scrum Meetings 88 | 1h | 2011-08-08 09:00 A | 2011-08-08 10:00 A | 100% | 2011-08-08 09:00 | 2011-08-08 10:00 | 1h | 2011-08-08 09:00 | 2011-08-08 10:00 |  | start no earlier than 2011-08-08 09:00 | Hurley | 1h | 1h |
| 162 | 1.2.1.3.89 | Daily Scrum Meetings 89 | 1h | 2011-08-09 09:00 A | 2011-08-09 10:00 A | 100% | 2011-08-09 09:00 | 2011-08-09 10:00 | 1h | 2011-08-09 09:00 | 2011-08-09 10:00 |  | start no earlier than 2011-08-09 09:00 | Hurley | 1h | 1h |
| 163 | 1.2.1.3.90 | Daily Scrum Meetings 90 | 1h | 2011-08-10 09:00 A | 2011-08-10 10:00 A | 100% | 2011-08-10 09:00 | 2011-08-10 10:00 | 1h | 2011-08-10 09:00 | 2011-08-10 10:00 |  | start no earlier than 2011-08-10 09:00 | Hurley | 1h | 1h |
| 164 | 1.2.1.3.91 | Daily Scrum Meetings 91 | 1h | 2011-08-11 09:00 A | 2011-08-11 10:00 A | 100% | 2011-08-11 09:00 | 2011-08-11 10:00 | 1h | 2011-08-11 09:00 | 2011-08-11 10:00 |  | start no earlier than 2011-08-11 09:00 | Hurley | 1h | 1h |
| 165 | 1.2.1.3.92 | Daily Scrum Meetings 92 | 1h | 2011-08-12 09:00 A | 2011-08-12 10:00 A | 100% | 2011-08-12 09:00 | 2011-08-12 10:00 | 1h | 2011-08-12 09:00 | 2011-08-12 10:00 |  | start no earlier than 2011-08-12 09:00 | Hurley | 1h | 1h |
| 166 | 1.2.1.3.93 | Daily Scrum Meetings 93 | 1h | 2011-08-15 09:00 A | 2011-08-15 10:00 A | 100% | 2011-08-15 09:00 | 2011-08-15 10:00 | 1h | 2011-08-15 09:00 | 2011-08-15 10:00 |  | start no earlier than 2011-08-15 09:00 | Hurley | 1h | 1h |
| 167 | 1.2.1.3.94 | Daily Scrum Meetings 94 | 1h | 2011-08-16 09:00 A | 2011-08-16 10:00 A | 100% | 2011-08-16 09:00 | 2011-08-16 10:00 | 1h | 2011-08-16 09:00 | 2011-08-16 10:00 |  | start no earlier than 2011-08-16 09:00 | Hurley | 1h | 1h |
| 168 | 1.2.1.3.95 | Daily Scrum Meetings 95 | 1h | 2011-08-17 09:00 A | 2011-08-17 10:00 A | 100% | 2011-08-17 09:00 | 2011-08-17 10:00 | 1h | 2011-08-17 09:00 | 2011-08-17 10:00 |  | start no earlier than 2011-08-17 09:00 | Hurley | 1h | 1h |
| 169 | 1.2.1.3.96 | Daily Scrum Meetings 96 | 1h | 2011-08-18 09:00 | 2011-08-18 10:00 |  | 2011-08-18 09:00 | 2011-08-18 10:00 | 1h | 2011-08-18 09:00 | 2011-08-18 10:00 | 130.75d | start no earlier than 2011-08-18 09:00 | Hurley | 1h |  |
| 170 | 1.2.1.3.97 | Daily Scrum Meetings 97 | 1h | 2011-08-19 09:00 | 2011-08-19 10:00 |  | 2011-08-19 09:00 | 2011-08-19 10:00 | 1h | 2011-08-19 09:00 | 2011-08-19 10:00 | 129.75d | start no earlier than 2011-08-19 09:00 | Hurley | 1h |  |
| 171 | 1.2.1.3.98 | Daily Scrum Meetings 98 | 1h | 2011-08-22 09:00 | 2011-08-22 10:00 |  | 2011-08-22 09:00 | 2011-08-22 10:00 | 1h | 2011-08-22 09:00 | 2011-08-22 10:00 | 128.75d | start no earlier than 2011-08-22 09:00 | Hurley | 1h |  |
| 172 | 1.2.1.3.99 | Daily Scrum Meetings 99 | 1h | 2011-08-23 09:00 | 2011-08-23 10:00 |  | 2011-08-23 09:00 | 2011-08-23 10:00 | 1h | 2011-08-23 09:00 | 2011-08-23 10:00 | 127.75d | start no earlier than 2011-08-23 09:00 | Hurley | 1h |  |
| 173 | 1.2.1.3.100 | Daily Scrum Meetings 100 | 1h | 2011-08-24 09:00 | 2011-08-24 10:00 |  | 2011-08-24 09:00 | 2011-08-24 10:00 | 1h | 2011-08-24 09:00 | 2011-08-24 10:00 | 126.75d | start no earlier than 2011-08-24 09:00 | Hurley | 1h |  |
| 174 | 1.2.1.3.101 | Daily Scrum Meetings 101 | 1h | 2011-08-25 09:00 | 2011-08-25 10:00 |  | 2011-08-25 09:00 | 2011-08-25 10:00 | 1h | 2011-08-25 09:00 | 2011-08-25 10:00 | 125.75d | start no earlier than 2011-08-25 09:00 | Hurley | 1h |  |
| 175 | 1.2.1.3.102 | Daily Scrum Meetings 102 | 1h | 2011-08-26 09:00 | 2011-08-26 10:00 |  | 2011-08-26 09:00 | 2011-08-26 10:00 | 1h | 2011-08-26 09:00 | 2011-08-26 10:00 | 124.75d | start no earlier than 2011-08-26 09:00 | Hurley | 1h |  |
| 176 | 1.2.1.3.103 | Daily Scrum Meetings 103 | 1h | 2011-08-29 09:00 | 2011-08-29 10:00 |  | 2011-08-29 09:00 | 2011-08-29 10:00 | 1h | 2011-08-29 09:00 | 2011-08-29 10:00 | 123.75d | start no earlier than 2011-08-29 09:00 | Hurley | 1h |  |
| 177 | 1.2.1.3.104 | Daily Scrum Meetings 104 | 1h | 2011-08-30 09:00 | 2011-08-30 10:00 |  | 2011-08-30 09:00 | 2011-08-30 10:00 | 1h | 2011-08-30 09:00 | 2011-08-30 10:00 | 122.75d | start no earlier than 2011-08-30 09:00 | Hurley | 1h |  |
| 178 | 1.2.1.3.105 | Daily Scrum Meetings 105 | 1h | 2011-08-31 09:00 | 2011-08-31 10:00 |  | 2011-08-31 09:00 | 2011-08-31 10:00 | 1h | 2011-08-31 09:00 | 2011-08-31 10:00 | 121.75d | start no earlier than 2011-08-31 09:00 | Hurley | 1h |  |
| 179 | 1.2.1.3.106 | Daily Scrum Meetings 106 | 1h | 2011-09-01 09:00 | 2011-09-01 10:00 |  | 2011-09-01 09:00 | 2011-09-01 10:00 | 1h | 2011-09-01 09:00 | 2011-09-01 10:00 | 120.75d | start no earlier than 2011-09-01 09:00 | Hurley | 1h |  |
| 180 | 1.2.1.3.107 | Daily Scrum Meetings 107 | 1h | 2011-09-02 09:00 | 2011-09-02 10:00 |  | 2011-09-02 09:00 | 2011-09-02 10:00 | 1h | 2011-09-02 09:00 | 2011-09-02 10:00 | 119.75d | start no earlier than 2011-09-02 09:00 | Hurley | 1h |  |
| 181 | 1.2.1.3.108 | Daily Scrum Meetings 108 | 1h | 2011-09-06 09:00 | 2011-09-06 10:00 |  | 2011-09-06 09:00 | 2011-09-06 10:00 | 1h | 2011-09-06 09:00 | 2011-09-06 10:00 | 118.75d | start no earlier than 2011-09-06 09:00 | Hurley | 1h |  |
| 182 | 1.2.1.3.109 | Daily Scrum Meetings 109 | 1h | 2011-09-07 09:00 | 2011-09-07 10:00 |  | 2011-09-07 09:00 | 2011-09-07 10:00 | 1h | 2011-09-07 09:00 | 2011-09-07 10:00 | 117.75d | start no earlier than 2011-09-07 09:00 | Hurley | 1h |  |
| 183 | 1.2.1.3.110 | Daily Scrum Meetings 110 | 1h | 2011-09-08 09:00 | 2011-09-08 10:00 |  | 2011-09-08 09:00 | 2011-09-08 10:00 | 1h | 2011-09-08 09:00 | 2011-09-08 10:00 | 116.75d | start no earlier than 2011-09-08 09:00 | Hurley | 1h |  |
| 184 | 1.2.1.3.111 | Daily Scrum Meetings 111 | 1h | 2011-09-09 09:00 | 2011-09-09 10:00 |  | 2011-09-09 09:00 | 2011-09-09 10:00 | 1h | 2011-09-09 09:00 | 2011-09-09 10:00 | 115.75d | start no earlier than 2011-09-09 09:00 | Hurley | 1h |  |
| 185 | 1.2.1.3.112 | Daily Scrum Meetings 112 | 1h | 2011-09-12 09:00 | 2011-09-12 10:00 |  | 2011-09-12 09:00 | 2011-09-12 10:00 | 1h | 2011-09-12 09:00 | 2011-09-12 10:00 | 114.75d | start no earlier than 2011-09-12 09:00 | Hurley | 1h |  |
| 186 | 1.2.1.3.113 | Daily Scrum Meetings 113 | 1h | 2011-09-13 09:00 | 2011-09-13 10:00 |  | 2011-09-13 09:00 | 2011-09-13 10:00 | 1h | 2011-09-13 09:00 | 2011-09-13 10:00 | 113.75d | start no earlier than 2011-09-13 09:00 | Hurley | 1h |  |
| 187 | 1.2.1.3.114 | Daily Scrum Meetings 114 | 1h | 2011-09-14 09:00 | 2011-09-14 10:00 |  | 2011-09-14 09:00 | 2011-09-14 10:00 | 1h | 2011-09-14 09:00 | 2011-09-14 10:00 | 112.75d | start no earlier than 2011-09-14 09:00 | Hurley | 1h |  |
| 188 | 1.2.1.3.115 | Daily Scrum Meetings 115 | 1h | 2011-09-15 09:00 | 2011-09-15 10:00 |  | 2011-09-15 09:00 | 2011-09-15 10:00 | 1h | 2011-09-15 09:00 | 2011-09-15 10:00 | 111.75d | start no earlier than 2011-09-15 09:00 | Hurley | 1h |  |
| 189 | 1.2.1.3.116 | Daily Scrum Meetings 116 | 1h | 2011-09-16 09:00 | 2011-09-16 10:00 |  | 2011-09-16 09:00 | 2011-09-16 10:00 | 1h | 2011-09-16 09:00 | 2011-09-16 10:00 | 110.75d | start no earlier than 2011-09-16 09:00 | Hurley | 1h |  |
| 190 | 1.2.1.3.117 | Daily Scrum Meetings 117 | 1h | 2011-09-19 09:00 | 2011-09-19 10:00 |  | 2011-09-19 09:00 | 2011-09-19 10:00 | 1h | 2011-09-19 09:00 | 2011-09-19 10:00 | 109.75d | start no earlier than 2011-09-19 09:00 | Hurley | 1h |  |
| 191 | 1.2.1.3.118 | Daily Scrum Meetings 118 | 1h | 2011-09-20 09:00 | 2011-09-20 10:00 |  | 2011-09-20 09:00 | 2011-09-20 10:00 | 1h | 2011-09-20 09:00 | 2011-09-20 10:00 | 108.75d | start no earlier than 2011-09-20 09:00 | Hurley | 1h |  |
| 192 | 1.2.1.3.119 | Daily Scrum Meetings 119 | 1h | 2011-09-21 09:00 | 2011-09-21 10:00 |  | 2011-09-21 09:00 | 2011-09-21 10:00 | 1h | 2011-09-21 09:00 | 2011-09-21 10:00 | 107.75d | start no earlier than 2011-09-21 09:00 | Hurley | 1h |  |
| 193 | 1.2.1.3.120 | Daily Scrum Meetings 120 | 1h | 2011-09-22 09:00 | 2011-09-22 10:00 |  | 2011-09-22 09:00 | 2011-09-22 10:00 | 1h | 2011-09-22 09:00 | 2011-09-22 10:00 | 106.75d | start no earlier than 2011-09-22 09:00 | Hurley | 1h |  |
| 194 | 1.2.1.3.121 | Daily Scrum Meetings 121 | 1h | 2011-09-23 09:00 | 2011-09-23 10:00 |  | 2011-09-23 09:00 | 2011-09-23 10:00 | 1h | 2011-09-23 09:00 | 2011-09-23 10:00 | 105.75d | start no earlier than 2011-09-23 09:00 | Hurley | 1h |  |
| 195 | 1.2.1.3.122 | Daily Scrum Meetings 122 | 1h | 2011-09-26 09:00 | 2011-09-26 10:00 |  | 2011-09-26 09:00 | 2011-09-26 10:00 | 1h | 2011-09-26 09:00 | 2011-09-26 10:00 | 104.75d | start no earlier than 2011-09-26 09:00 | Hurley | 1h |  |
| 196 | 1.2.1.3.123 | Daily Scrum Meetings 123 | 1h | 2011-09-27 09:00 | 2011-09-27 10:00 |  | 2011-09-27 09:00 | 2011-09-27 10:00 | 1h | 2011-09-27 09:00 | 2011-09-27 10:00 | 103.75d | start no earlier than 2011-09-27 09:00 | Hurley | 1h |  |
| 197 | 1.2.1.3.124 | Daily Scrum Meetings 124 | 1h | 2011-09-28 09:00 | 2011-09-28 10:00 |  | 2011-09-28 09:00 | 2011-09-28 10:00 | 1h | 2011-09-28 09:00 | 2011-09-28 10:00 | 102.75d | start no earlier than 2011-09-28 09:00 | Hurley | 1h |  |
| 198 | 1.2.1.3.125 | Daily Scrum Meetings 125 | 1h | 2011-09-29 09:00 | 2011-09-29 10:00 |  | 2011-09-29 09:00 | 2011-09-29 10:00 | 1h | 2011-09-29 09:00 | 2011-09-29 10:00 | 101.75d | start no earlier than 2011-09-29 09:00 | Hurley | 1h |  |
| 199 | 1.2.1.3.126 | Daily Scrum Meetings 126 | 1h | 2011-09-30 09:00 | 2011-09-30 10:00 |  | 2011-09-30 09:00 | 2011-09-30 10:00 | 1h | 2011-09-30 09:00 | 2011-09-30 10:00 | 100.75d | start no earlier than 2011-09-30 09:00 | Hurley | 1h |  |

| ID | WBS | Task | Type | Duration | Start | Finish | Predecessors | Complete | Remaining | Baseline start | Baseline finish | Baseline duration | Baseline 1 start | Baseline 1 finish | Total slack | Constraint | Resources | Work | Actual work | Text1 |
| --- | --- | --- | --- | --- | --- | --- | --- | --- | --- | --- | --- | --- | --- | --- | --- | --- | --- | --- | --- | --- |
| 200 | 1.2.2 | **Schedule Management** |  | 127d | 2011-03-29 09:00 A | 2011-09-26 09:00 |  | 52% | 60.58d | 2011-03-29 09:00 | 2011-09-26 09:00 | 127d | 2011-03-29 09:00 | 2011-09-26 09:00 | 102.88d |  |  | 120h | 76h |  |
| 201 | 1.2.2.1 | Create Initial Schedule |  | 4.5d | 2011-03-29 09:00 A | 2011-04-04 14:00 A |  | 100% |  | 2011-03-29 09:00 | 2011-04-04 14:00 | 4.5d | 2011-03-29 09:00 | 2011-04-04 14:00 |  | finish no earlier than 2011-04-04 13:00 | Hurley [25%] | 9h | 9h | Complete |
| 202 | 1.2.2.2 | 3 Week Transition Schedule |  | 2.5d | 2011-04-05 04:00 A | 2011-04-07 12:00 A | 201 | 100% |  | 2011-04-05 04:00 | 2011-04-07 12:00 | 2.5d | 2011-04-05 04:00 | 2011-04-07 12:00 |  | finish no earlier than 2011-04-07 13:00 | Hurley | 20h | 20h | Complete |
| 203 | 1.2.2.3 | Draft 1 Full Project Schedule |  | 5d | 2011-04-18 09:00 A | 2011-04-25 09:00 A |  | 100% |  | 2011-04-18 09:00 | 2011-04-25 09:00 | 5d | 2011-04-18 09:00 | 2011-04-25 09:00 |  | start no earlier than 2011-04-18 04:00 | Hurley [25%] | 10h | 10h | Complete |
| 204 | 1.2.2.4 | Schedule Issued for Review | milestone | 0d | 2011-04-22 17:00 A | 2011-04-22 17:00 A | 203 | 100% |  | 2011-04-22 17:00 | 2011-04-22 17:00 | 0d | 2011-04-22 17:00 | 2011-04-22 17:00 |  |  | Hurley |  |  | Complete |
| 205 | 1.2.2.6 | Schedule Baseline 0 Complete | milestone | 0d | 2011-05-09 04:00 A | 2011-05-09 09:00 A | 40, 204 | 100% |  | 2011-05-09 04:00 | 2011-05-09 09:00 | 0d | 2011-05-09 04:00 | 2011-05-09 09:00 |  | start no earlier than 2011-05-09 04:00 | Hurley |  |  | Complete |
| 206 | 1.2.2.6 | Update plan based on architectural updates to the overall solution |  | 3d | 2011-06-10 08:00 A | 2011-06-14 17:00 A | 62 | 100% |  | 2011-06-10 08:00 | 2011-06-14 17:00 | 3d | 2011-06-10 08:00 | 2011-06-14 17:00 |  |  | Hurley | 16h | 16h |  |
| 207 | 1.2.2.7 | Schedule Baseline 1 Complete |  | 0.5d | 2011-06-17 08:00 A | 2011-06-17 12:00 A | 206 | 100% |  | 2011-06-17 08:00 | 2011-06-17 12:00 | 0.5d | 2011-06-17 08:00 | 2011-06-17 12:00 |  | start no earlier than 2011-06-17 08:00 |  |  |  |  |
| 208 | 1.2.2.8 | Schedule Baseline 2 Complete |  | 0.5d | 2011-07-08 08:00 A | 2011-07-08 12:00 A | 207 | 100% |  | 2011-07-05 08:00 | 2011-07-05 12:00 | 0.5d | 2011-07-08 08:00 | 2011-07-08 12:00 |  | start no earlier than 2011-07-08 08:00 |  |  |  |  |
| 209 | 1.2.2.9 | Progress Reporting Established (SPI, SV, CPI, CV) |  | 16.5d | 2011-05-27 08:00 A | 2011-07-27 12:00 | 206 | 3% | 16d | 2011-05-27 08:00 | 2011-07-27 12:00 | 16.5d | 2011-05-27 08:00 | 2011-07-27 12:00 | 167.92d | finish no earlier than 2011-05-27 17:00 | Hurley [25%]; Undale | 43h | 5h |  |
| 210 | 1.2.2.7 | **Schedule Progress Review** |  | 123d | 2011-04-04 09:00 A | 2011-09-26 09:00 |  | 70% | 37.43d | 2011-04-04 09:00 | 2011-09-26 09:00 | 123d | 2011-04-04 09:00 | 2011-09-26 09:00 | 126.29d |  |  | 22h | 16h |  |
| 211 | 1.2.2.7.1 | Schedule Progress Review 1 |  | 1h | 2011-04-04 09:00 A | 2011-04-04 10:00 A |  | 100% |  | 2011-04-04 09:00 | 2011-04-04 10:00 | 1h | 2011-04-04 09:00 | 2011-04-04 10:00 |  | start no earlier than 2011-04-04 04:00 | Hurley | 1h | 1h | Complete |
| 212 | 1.2.2.7.2 | Schedule Progress Review 2 |  | 1h | 2011-04-11 09:00 A | 2011-04-11 10:00 A |  | 100% |  | 2011-04-11 09:00 | 2011-04-11 10:00 | 1h | 2011-04-11 09:00 | 2011-04-11 10:00 |  | start no earlier than 2011-04-11 04:00 | Hurley | 1h | 1h | Complete |
| 213 | 1.2.2.7.3 | Schedule Progress Review 3 |  | 1h | 2011-04-18 09:00 A | 2011-04-18 10:00 A |  | 100% |  | 2011-04-18 09:00 | 2011-04-18 10:00 | 1h | 2011-04-18 09:00 | 2011-04-18 10:00 |  | start no earlier than 2011-04-18 04:00 | Hurley | 1h | 1h | Complete |
| 214 | 1.2.2.7.4 | Schedule Progress Review 4 |  | 1h | 2011-04-26 04:00 A | 2011-04-26 09:00 A |  | 100% |  | 2011-04-26 04:00 | 2011-04-26 09:00 | 1h | 2011-04-26 04:00 | 2011-04-26 09:00 |  | start no earlier than 2011-04-25 04:00 | Hurley | 1h | 1h | Complete |
| 215 | 1.2.2.7.5 | Schedule Progress Review 5 |  | 1h | 2011-05-02 09:00 A | 2011-05-02 10:00 A |  | 100% |  | 2011-05-02 09:00 | 2011-05-02 10:00 | 1h | 2011-05-02 09:00 | 2011-05-02 10:00 |  | start no earlier than 2011-05-02 04:00 | Hurley | 1h | 1h | Complete |
| 216 | 1.2.2.7.6 | Schedule Progress Review 6 |  | 1h | 2011-05-09 09:00 A | 2011-05-09 10:00 A |  | 100% |  | 2011-05-09 09:00 | 2011-05-09 10:00 | 1h | 2011-05-09 09:00 | 2011-05-09 10:00 |  | start no earlier than 2011-05-09 04:00 | Hurley | 1h | 1h | Complete |
| 217 | 1.2.2.7.7 | Schedule Progress Review 7 |  | 1h | 2011-05-16 09:00 A | 2011-05-16 10:00 A |  | 100% |  | 2011-05-16 09:00 | 2011-05-16 10:00 | 1h | 2011-05-16 09:00 | 2011-05-16 10:00 |  | start no earlier than 2011-05-16 04:00 | Hurley | 1h | 1h | Complete |
| 218 | 1.2.2.7.8 | Schedule Progress Review 8 |  | 1h | 2011-05-23 09:00 A | 2011-05-23 10:00 A |  | 100% |  | 2011-05-23 09:00 | 2011-05-23 10:00 | 1h | 2011-05-23 09:00 | 2011-05-23 10:00 |  | start no earlier than 2011-05-23 04:00 | Hurley | 1h | 1h | Complete |
| 219 | 1.2.2.7.9 | Schedule Progress Review 9 |  | 1h | 2011-05-31 09:00 A | 2011-05-31 10:00 A |  | 100% |  | 2011-05-31 09:00 | 2011-05-31 10:00 | 1h | 2011-05-31 09:00 | 2011-05-31 10:00 |  | start no earlier than 2011-05-30 04:00 | Hurley | 1h | 1h | Complete |
| 220 | 1.2.2.7.10 | Schedule Progress Review 10 |  | 1h | 2011-06-06 09:00 A | 2011-06-06 10:00 A |  | 100% |  | 2011-06-06 09:00 | 2011-06-06 10:00 | 1h | 2011-06-06 09:00 | 2011-06-06 10:00 |  | start no earlier than 2011-06-06 04:00 | Hurley | 1h | 1h | Complete |
| 221 | 1.2.2.7.11 | Schedule Progress Review 11 |  | 1h | 2011-06-13 08:00 A | 2011-06-13 09:00 A |  | 100% |  | 2011-06-13 08:00 | 2011-06-13 09:00 | 1h | 2011-06-13 08:00 | 2011-06-13 09:00 |  | start no earlier than 2011-06-13 04:00 | Hurley | 1h | 1h |  |
| 222 | 1.2.2.7.12 | Schedule Progress Review 12 (Cancelled) | milestone | 0h | 2011-06-20 04:00 A | 2011-06-20 04:00 A |  | 100% |  | 2011-06-20 08:00 | 2011-06-20 09:00 | 1h | 2011-06-20 04:00 | 2011-06-20 04:00 |  | start no earlier than 2011-06-20 04:00 | Hurley |  |  |  |
| 223 | 1.2.2.7.13 | Schedule Progress Review 13 (Cancelled) | milestone | 0h | 2011-06-27 04:00 A | 2011-06-27 04:00 A |  | 100% |  | 2011-06-27 08:00 | 2011-06-27 09:00 | 1h | 2011-06-27 04:00 | 2011-06-27 04:00 |  | start no earlier than 2011-06-27 04:00 | Hurley |  |  |  |
| 224 | 1.2.2.7.14 | Schedule Progress Review 14 |  | 1h | 2011-07-05 08:00 A | 2011-07-05 09:00 A |  | 100% |  | 2011-07-05 08:00 | 2011-07-05 09:00 | 1h | 2011-07-05 08:00 | 2011-07-05 09:00 |  | start no earlier than 2011-07-04 04:00 | Hurley | 1h | 1h |  |
| 225 | 1.2.2.7.15 | Schedule Progress Review 15 (Cancelled due to TRANSCEND mtg) | milestone | 0h | 2011-07-11 04:00 A | 2011-07-11 04:00 A |  | 100% |  | 2011-07-11 08:00 | 2011-07-11 09:00 | 1h | 2011-07-11 08:00 | 2011-07-11 09:00 |  | start no earlier than 2011-07-11 04:00 | Hurley |  |  |  |
| 226 | 1.2.2.7.16 | Schedule Progress Review 16 |  | 1h | 2011-07-18 08:00 A | 2011-07-18 09:00 A |  | 100% |  | 2011-07-18 08:00 | 2011-07-18 09:00 | 1h | 2011-07-18 08:00 | 2011-07-18 09:00 |  | start no earlier than 2011-07-18 04:00 | Hurley | 1h | 1h |  |
| 227 | 1.2.2.7.17 | Schedule Progress Review 17 |  | 1h | 2011-07-25 08:00 A | 2011-07-25 09:00 A |  | 100% |  | 2011-07-25 08:00 | 2011-07-25 09:00 | 1h | 2011-07-25 08:00 | 2011-07-25 09:00 |  | start no earlier than 2011-07-25 04:00 | Hurley | 1h | 1h |  |
| 228 | 1.2.2.7.18 | Schedule Progress Review 18 |  | 1h | 2011-08-01 08:00 A | 2011-08-01 09:00 A |  | 100% |  | 2011-08-01 08:00 | 2011-08-01 09:00 | 1h | 2011-08-01 08:00 | 2011-08-01 09:00 |  | start no earlier than 2011-08-01 04:00 | Hurley | 1h | 1h |  |
| 229 | 1.2.2.7.19 | Schedule Progress Review 19 |  | 1h | 2011-08-08 08:00 | 2011-08-08 09:00 |  |  |  | 2011-08-08 08:00 | 2011-08-08 09:00 | 1h | 2011-08-08 08:00 | 2011-08-08 09:00 | 138.88d | start no earlier than 2011-08-08 04:00 | Hurley | 1h |  |  |
| 230 | 1.2.2.7.20 | Schedule Progress Review 20 |  | 1h | 2011-08-15 08:00 A | 2011-08-15 09:00 A |  | 100% |  | 2011-08-15 08:00 | 2011-08-15 09:00 | 1h | 2011-08-15 08:00 | 2011-08-15 09:00 |  | start no earlier than 2011-08-15 04:00 | Hurley | 1h | 1h |  |
| 231 | 1.2.2.7.21 | Schedule Progress Review 21 |  | 1h | 2011-08-22 08:00 | 2011-08-22 09:00 |  |  |  | 2011-08-22 08:00 | 2011-08-22 09:00 | 1h | 2011-08-22 08:00 | 2011-08-22 09:00 | 128.88d | start no earlier than 2011-08-22 04:00 | Hurley | 1h |  |  |
| 232 | 1.2.2.7.22 | Schedule Progress Review 22 |  | 1h | 2011-08-29 08:00 | 2011-08-29 09:00 |  |  |  | 2011-08-29 08:00 | 2011-08-29 09:00 | 1h | 2011-08-29 08:00 | 2011-08-29 09:00 | 123.88d | start no earlier than 2011-08-29 04:00 | Hurley | 1h |  |  |
| 233 | 1.2.2.7.23 | Schedule Progress Review 23 |  | 1h | 2011-09-06 08:00 | 2011-09-06 09:00 |  |  |  | 2011-09-06 08:00 | 2011-09-06 09:00 | 1h | 2011-09-06 08:00 | 2011-09-06 09:00 | 118.88d | start no earlier than 2011-09-05 04:00 | Hurley | 1h |  |  |
| 234 | 1.2.2.7.24 | Schedule Progress Review 24 |  | 1h | 2011-09-12 08:00 | 2011-09-12 09:00 |  |  |  | 2011-09-12 08:00 | 2011-09-12 09:00 | 1h | 2011-09-12 08:00 | 2011-09-12 09:00 | 114.88d | start no earlier than 2011-09-12 04:00 | Hurley | 1h |  |  |
| 235 | 1.2.2.7.25 | Schedule Progress Review 25 |  | 1h | 2011-09-19 08:00 | 2011-09-19 09:00 |  |  |  | 2011-09-19 08:00 | 2011-09-19 09:00 | 1h | 2011-09-19 08:00 | 2011-09-19 09:00 | 109.88d | start no earlier than 2011-09-19 04:00 | Hurley | 1h |  |  |
| 236 | 1.2.2.7.26 | Schedule Progress Review 26 |  | 1h | 2011-09-26 08:00 | 2011-09-26 09:00 |  |  |  | 2011-09-26 08:00 | 2011-09-26 09:00 | 1h | 2011-09-26 08:00 | 2011-09-26 09:00 | 104.88d | start no earlier than 2011-09-26 04:00 |  |  |  |  |

Notes:
- 205: Proposed Architectural Solution Key Deliverable to Baseline Plan
- 209: Started this task early to get a framework in place that PMO can use.

| ID | WBS | Task | Duration | Start | Finish | Complete | Remaining | Baseline start | Baseline finish | Baseline duration | Baseline 1 start | Baseline 1 finish | Total slack | Constraint | Resources | Work | Actual work | Text1 |
| --- | --- | --- | --- | --- | --- | --- | --- | --- | --- | --- | --- | --- | --- | --- | --- | --- | --- | --- |
| 237 | 1.2.3 | **Cost Management** | 132.5d | 2011-03-28 08:00 A | 2011-09-30 13:00 | 43% | 75.5d | 2011-03-28 08:00 | 2011-09-30 13:00 | 132.5d | 2011-03-28 08:00 | 2011-09-30 13:00 | 98.5d |  |  | 748h | 448h |  |
| 238 | 1.2.3.1 | SAIC-F Cost Management Per Schedule and Resource (GOVT/SAIC-F Only) | 132.5d | 2011-03-28 08:00 A | 2011-09-30 13:00 | 43% | 75.5d | 2011-03-28 08:00 | 2011-09-30 13:00 | 132.5d | 2011-03-28 08:00 | 2011-09-30 13:00 | 101.5d | finish no earlier than 2011-09-30 13:00 | Undale | 748h | 448h |  |
| 239 | 1.2.4 | **Quality Management** | 15d | 2011-04-15 09:00 A | 2011-05-06 09:00 A | 100% |  | 2011-04-15 09:00 | 2011-05-06 09:00 | 15d | 2011-04-15 09:00 | 2011-05-06 09:00 |  |  |  | 120h | 120h |  |
| 240 | 1.2.4.1 | Quality Management Plan | 15d | 2011-04-15 09:00 A | 2011-05-06 09:00 A | 100% |  | 2011-04-15 09:00 | 2011-05-06 09:00 | 15d | 2011-04-15 09:00 | 2011-05-06 09:00 |  | start no earlier than 2011-04-15 04:00 | Pierce | 120h | 120h |  |
| 241 | 1.2.5 | **Resource Management** | 123.12d | 2011-04-04 04:00 A | 2011-09-26 09:00 | 73% | 33.15d | 2011-04-04 04:00 | 2011-09-26 09:00 | 123.12d | 2011-04-04 04:00 | 2011-09-26 09:00 | 102.88d |  |  | 19.5h | 14.25h |  |
| 242 | 1.2.5.1 | **SAIC-F Weekly Review** | 123.12d | 2011-04-04 04:00 A | 2011-09-26 09:00 | 73% | 33.15d | 2011-04-04 04:00 | 2011-09-26 09:00 | 123.12d | 2011-04-04 04:00 | 2011-09-26 09:00 | 126.29d |  |  | 19.5h | 14.25h |  |
| 243 | 1.2.5.1.1 | SAIC-F Weekly Review 1 | 1h | 2011-04-04 04:00 A | 2011-04-04 09:00 A | 100% |  | 2011-04-04 04:00 | 2011-04-04 09:00 | 1h | 2011-04-04 04:00 | 2011-04-04 09:00 |  | start no earlier than 2011-04-04 04:00 | Cabral [75%] | 0.75h | 0.75h | Complete |
| 244 | 1.2.5.1.2 | SAIC-F Weekly Review 2 | 1h | 2011-04-11 09:00 A | 2011-04-11 10:00 A | 100% |  | 2011-04-11 09:00 | 2011-04-11 10:00 | 1h | 2011-04-11 09:00 | 2011-04-11 10:00 |  | start no earlier than 2011-04-11 04:00 | Cabral [75%] | 0.75h | 0.75h | Complete |
| 245 | 1.2.5.1.3 | SAIC-F Weekly Review 3 | 1h | 2011-04-18 09:00 A | 2011-04-18 10:00 A | 100% |  | 2011-04-18 09:00 | 2011-04-18 10:00 | 1h | 2011-04-18 09:00 | 2011-04-18 10:00 |  | start no earlier than 2011-04-18 04:00 | Cabral [75%] | 0.75h | 0.75h | Complete |
| 246 | 1.2.5.1.4 | SAIC-F Weekly Review 4 | 1h | 2011-04-26 09:00 A | 2011-04-26 10:00 A | 100% |  | 2011-04-26 09:00 | 2011-04-26 10:00 | 1h | 2011-04-26 09:00 | 2011-04-26 10:00 |  | start no earlier than 2011-04-26 04:00 | Cabral [75%] | 0.75h | 0.75h | Complete |
| 247 | 1.2.5.1.5 | SAIC-F Weekly Review 5 | 1h | 2011-05-02 09:00 A | 2011-05-02 10:00 A | 100% |  | 2011-05-02 09:00 | 2011-05-02 10:00 | 1h | 2011-05-02 09:00 | 2011-05-02 10:00 |  | start no earlier than 2011-05-02 04:00 | Cabral [75%] | 0.75h | 0.75h | Complete |
| 248 | 1.2.5.1.6 | SAIC-F Weekly Review 6 | 1h | 2011-05-09 09:00 A | 2011-05-09 10:00 A | 100% |  | 2011-05-09 09:00 | 2011-05-09 10:00 | 1h | 2011-05-09 09:00 | 2011-05-09 10:00 |  | start no earlier than 2011-05-09 04:00 | Cabral [75%] | 0.75h | 0.75h | Complete |
| 249 | 1.2.5.1.7 | SAIC-F Weekly Review 7 | 1h | 2011-05-16 09:00 A | 2011-05-16 10:00 A | 100% |  | 2011-05-16 09:00 | 2011-05-16 10:00 | 1h | 2011-05-16 09:00 | 2011-05-16 10:00 |  | start no earlier than 2011-05-16 04:00 | Cabral [75%] | 0.75h | 0.75h | Complete |
| 250 | 1.2.5.1.8 | SAIC-F Weekly Review 8 | 1h | 2011-05-23 09:00 A | 2011-05-23 10:00 A | 100% |  | 2011-05-23 09:00 | 2011-05-23 10:00 | 1h | 2011-05-23 09:00 | 2011-05-23 10:00 |  | start no earlier than 2011-05-23 04:00 | Cabral [75%] | 0.75h | 0.75h | Complete |
| 251 | 1.2.5.1.9 | SAIC-F Weekly Review 9 | 1h | 2011-05-31 09:00 A | 2011-05-31 10:00 A | 100% |  | 2011-05-31 09:00 | 2011-05-31 10:00 | 1h | 2011-05-31 09:00 | 2011-05-31 10:00 |  | start no earlier than 2011-05-30 04:00 | Cabral [75%] | 0.75h | 0.75h | Complete |
| 252 | 1.2.5.1.10 | SAIC-F Weekly Review 10 | 1h | 2011-06-06 09:00 A | 2011-06-06 10:00 A | 100% |  | 2011-06-06 09:00 | 2011-06-06 10:00 | 1h | 2011-06-06 09:00 | 2011-06-06 10:00 |  | start no earlier than 2011-06-06 04:00 | Cabral [75%] | 0.75h | 0.75h | Complete |
| 253 | 1.2.5.1.11 | SAIC-F Weekly Review 11 | 1h | 2011-06-13 08:00 A | 2011-06-13 09:00 A | 100% |  | 2011-06-13 08:00 | 2011-06-13 09:00 | 1h | 2011-06-13 08:00 | 2011-06-13 09:00 |  | start no earlier than 2011-06-13 04:00 | Cabral [75%] | 0.75h | 0.75h |  |
| 254 | 1.2.5.1.12 | SAIC-F Weekly Review 12 | 1h | 2011-06-20 08:00 A | 2011-06-20 09:00 A | 100% |  | 2011-06-20 08:00 | 2011-06-20 09:00 | 1h | 2011-06-20 08:00 | 2011-06-20 09:00 |  | start no earlier than 2011-06-20 04:00 | Cabral [75%] | 0.75h | 0.75h |  |
| 255 | 1.2.5.1.13 | SAIC-F Weekly Review 13 | 1h | 2011-06-27 08:00 A | 2011-06-27 09:00 A | 100% |  | 2011-06-27 08:00 | 2011-06-27 09:00 | 1h | 2011-06-27 08:00 | 2011-06-27 09:00 |  | start no earlier than 2011-06-27 04:00 | Cabral [75%] | 0.75h | 0.75h |  |
| 256 | 1.2.5.1.14 | SAIC-F Weekly Review 14 | 1h | 2011-07-05 08:00 A | 2011-07-05 09:00 A | 100% |  | 2011-07-05 08:00 | 2011-07-05 09:00 | 1h | 2011-07-05 08:00 | 2011-07-05 09:00 |  | start no earlier than 2011-07-04 04:00 | Cabral [75%] | 0.75h | 0.75h |  |
| 257 | 1.2.5.1.15 | SAIC-F Weekly Review 15 | 1h | 2011-07-11 08:00 A | 2011-07-11 09:00 A | 100% |  | 2011-07-11 08:00 | 2011-07-11 09:00 | 1h | 2011-07-11 08:00 | 2011-07-11 09:00 |  | start no earlier than 2011-07-11 04:00 | Cabral [75%] | 0.75h | 0.75h |  |
| 258 | 1.2.5.1.16 | SAIC-F Weekly Review 16 | 1h | 2011-07-18 08:00 A | 2011-07-18 09:00 A | 100% |  | 2011-07-18 08:00 | 2011-07-18 09:00 | 1h | 2011-07-18 08:00 | 2011-07-18 09:00 |  | start no earlier than 2011-07-18 04:00 | Cabral [75%] | 0.75h | 0.75h |  |
| 259 | 1.2.5.1.17 | SAIC-F Weekly Review 17 | 1h | 2011-07-25 08:00 A | 2011-07-25 09:00 A | 100% |  | 2011-07-25 08:00 | 2011-07-25 09:00 | 1h | 2011-07-25 08:00 | 2011-07-25 09:00 |  | start no earlier than 2011-07-25 04:00 | Cabral [75%] | 0.75h | 0.75h |  |
| 260 | 1.2.5.1.18 | SAIC-F Weekly Review 18 | 1h | 2011-08-01 08:00 A | 2011-08-01 09:00 A | 100% |  | 2011-08-01 08:00 | 2011-08-01 09:00 | 1h | 2011-08-01 08:00 | 2011-08-01 09:00 |  | start no earlier than 2011-08-01 04:00 | Cabral [75%] | 0.75h | 0.75h |  |
| 261 | 1.2.5.1.19 | SAIC-F Weekly Review 19 | 1h | 2011-08-08 08:00 A | 2011-08-08 09:00 A | 100% |  | 2011-08-08 08:00 | 2011-08-08 09:00 | 1h | 2011-08-08 08:00 | 2011-08-08 09:00 |  | start no earlier than 2011-08-08 04:00 | Cabral [75%] | 0.75h | 0.75h |  |
| 262 | 1.2.5.1.20 | SAIC-F Weekly Review 20 | 1h | 2011-08-15 08:00 | 2011-08-15 09:00 |  |  | 2011-08-15 08:00 | 2011-08-15 09:00 | 1h | 2011-08-15 08:00 | 2011-08-15 09:00 | 144.88d | start no earlier than 2011-08-15 04:00 | Cabral [75%] | 0.75h |  |  |
| 263 | 1.2.5.1.21 | SAIC-F Weekly Review 21 | 1h | 2011-08-22 08:00 | 2011-08-22 09:00 |  |  | 2011-08-22 08:00 | 2011-08-22 09:00 | 1h | 2011-08-22 08:00 | 2011-08-22 09:00 | 139.88d | start no earlier than 2011-08-22 04:00 | Cabral [75%] | 0.75h |  |  |
| 264 | 1.2.5.1.22 | SAIC-F Weekly Review 22 | 1h | 2011-08-29 08:00 | 2011-08-29 09:00 |  |  | 2011-08-29 08:00 | 2011-08-29 09:00 | 1h | 2011-08-29 08:00 | 2011-08-29 09:00 | 134.88d | start no earlier than 2011-08-29 04:00 | Cabral [75%] | 0.75h |  |  |
| 265 | 1.2.5.1.23 | SAIC-F Weekly Review 23 | 1h | 2011-09-06 08:00 | 2011-09-06 09:00 |  |  | 2011-09-06 08:00 | 2011-09-06 09:00 | 1h | 2011-09-06 08:00 | 2011-09-06 09:00 | 129.88d | start no earlier than 2011-09-05 04:00 | Cabral [75%] | 0.75h |  |  |
| 266 | 1.2.5.1.24 | SAIC-F Weekly Review 24 | 1h | 2011-09-12 08:00 | 2011-09-12 09:00 |  |  | 2011-09-12 08:00 | 2011-09-12 09:00 | 1h | 2011-09-12 08:00 | 2011-09-12 09:00 | 125.88d | start no earlier than 2011-09-12 04:00 | Cabral [75%] | 0.75h |  |  |
| 267 | 1.2.5.1.25 | SAIC-F Weekly Review 25 | 1h | 2011-09-19 08:00 | 2011-09-19 09:00 |  |  | 2011-09-19 08:00 | 2011-09-19 09:00 | 1h | 2011-09-19 08:00 | 2011-09-19 09:00 | 120.88d | start no earlier than 2011-09-19 04:00 | Cabral [75%] | 0.75h |  |  |
| 268 | 1.2.5.1.26 | SAIC-F Weekly Review 26 | 1h | 2011-09-26 08:00 | 2011-09-26 09:00 |  |  | 2011-09-26 08:00 | 2011-09-26 09:00 | 1h | 2011-09-26 08:00 | 2011-09-26 09:00 | 115.88d | start no earlier than 2011-09-26 04:00 | Cabral [75%] | 0.75h |  |  |

| ID | WBS | Task | Type | Duration | Start | Finish | Complete | Remaining | Baseline start | Baseline finish | Baseline duration | Baseline 1 start | Baseline 1 finish | Total slack | Constraint | Resources | Work | Actual work | Text1 |
| --- | --- | --- | --- | --- | --- | --- | --- | --- | --- | --- | --- | --- | --- | --- | --- | --- | --- | --- | --- |
| 269 | 1.2.6 | **Communications Management** |  | 119.94d | 2011-04-12 09:00 A | 2011-09-29 08:30 | 95% | 6.41d | 2011-04-12 09:00 | 2011-09-30 13:00 | 121.38d | 2011-04-12 09:00 | 2011-09-30 13:00 | 99.94d |  |  | 33.5h | 28.5h |  |
| 270 | 1.2.6.1 | Stakeholder Strategy Document (Includes SH Register) |  | 10d | 2011-04-12 09:00 A | 2011-04-26 09:00 A | 100% |  | 2011-04-12 09:00 | 2011-04-26 09:00 | 10d | 2011-04-12 09:00 | 2011-04-26 09:00 |  | start no earlier than 2011-04-12 04:00 | Hurley [25%] | 20h | 20h |  |
| 271 | 1.2.6.3 | **Weekly DSL Progress Meetings** |  | 119.94d | 2011-04-12 09:00 A | 2011-09-29 08:30 | 63% | 44.42d | 2011-04-12 09:00 | 2011-09-27 08:30 | 117.94d | 2011-04-12 09:00 | 2011-09-27 08:30 | 123.35d |  |  | 13.5h | 8.5h |  |
| 272 | 1.2.6.3.1 | Weekly DSL Progress Meetings 1 |  | 0.5h | 2011-04-12 09:00 A | 2011-04-12 09:30 A | 100% |  | 2011-04-12 09:00 | 2011-04-12 09:30 | 0.5h | 2011-04-12 09:00 | 2011-04-12 09:30 |  | start no earlier than 2011-04-12 04:00 | Hurley | 0.5h | 0.5h | Complete |
| 273 | 1.2.6.3.2 | Weekly DSL Progress Meetings 2 |  | 0.5h | 2011-04-19 09:00 A | 2011-04-19 09:30 A | 100% |  | 2011-04-19 09:00 | 2011-04-19 09:30 | 0.5h | 2011-04-19 09:00 | 2011-04-19 09:30 |  | start no earlier than 2011-04-19 04:00 | Hurley | 0.5h | 0.5h | Complete |
| 274 | 1.2.6.3.3 | Weekly DSL Progress Meetings 3 |  | 0.5h | 2011-04-26 09:00 A | 2011-04-26 09:30 A | 100% |  | 2011-04-26 09:00 | 2011-04-26 09:30 | 0.5h | 2011-04-26 09:00 | 2011-04-26 09:30 |  | start no earlier than 2011-04-26 04:00 | Hurley | 0.5h | 0.5h | Complete |
| 275 | 1.2.6.3.4 | Weekly DSL Progress Meetings 4 |  | 0.5h | 2011-05-03 09:00 A | 2011-05-03 09:30 A | 100% |  | 2011-05-03 09:00 | 2011-05-03 09:30 | 0.5h | 2011-05-03 09:00 | 2011-05-03 09:30 |  | start no earlier than 2011-05-03 04:00 | Hurley | 0.5h | 0.5h | Complete |
| 276 | 1.2.6.3.5 | Weekly DSL Progress Meetings 5 |  | 0.5h | 2011-05-10 08:00 A | 2011-05-10 08:30 A | 100% |  | 2011-05-10 08:00 | 2011-05-10 08:30 | 0.5h | 2011-05-10 08:00 | 2011-05-10 08:30 |  | start no earlier than 2011-05-10 04:00 | Hurley | 0.5h | 0.5h | Complete |
| 277 | 1.2.6.3.6 | Weekly DSL Progress Meetings 6 |  | 0.5h | 2011-05-17 09:00 A | 2011-05-17 09:30 A | 100% |  | 2011-05-17 09:00 | 2011-05-17 09:30 | 0.5h | 2011-05-17 09:00 | 2011-05-17 09:30 |  | start no earlier than 2011-05-17 04:00 | Hurley | 0.5h | 0.5h | Complete |
| 278 | 1.2.6.3.7 | Weekly DSL Progress Meetings 7 (Meeting Cancelled) |  | 0.5h | 2011-05-24 09:00 A | 2011-05-24 09:30 A | 100% |  | 2011-05-24 09:00 | 2011-05-24 09:30 | 0.5h | 2011-05-24 09:00 | 2011-05-24 09:30 |  | start no earlier than 2011-05-24 04:00 | Hurley | 0.5h | 0.5h | Complete |
| 279 | 1.2.6.3.8 | Weekly DSL Progress Meetings 8 |  | 2h | 2011-05-31 09:00 A | 2011-05-31 11:00 A | 100% |  | 2011-05-31 09:00 | 2011-05-31 11:00 | 2h | 2011-05-31 09:00 | 2011-05-31 11:00 |  | start no earlier than 2011-05-31 04:00 | Hurley | 2h | 2h | Complete |
| 280 | 1.2.6.3.9 | Weekly DSL Progress Meetings 9 |  | 0.5h | 2011-06-07 09:00 A | 2011-06-07 09:30 A | 100% |  | 2011-06-07 09:00 | 2011-06-07 09:30 | 0.5h | 2011-06-07 09:00 | 2011-06-07 09:30 |  | start no earlier than 2011-06-07 04:00 | Hurley | 0.5h | 0.5h | Complete |
| 281 | 1.2.6.3.10 | Weekly DSL Progress Meetings 10 |  | 0.5h | 2011-06-14 08:00 A | 2011-06-14 08:30 A | 100% |  | 2011-06-14 08:00 | 2011-06-14 08:30 | 0.5h | 2011-06-14 08:00 | 2011-06-14 08:30 |  | start no earlier than 2011-06-14 04:00 | Hurley | 0.5h | 0.5h |  |
| 282 | 1.2.6.3.11 | Weekly DSL Progress Meetings 11 (Meeting Cancelled) | milestone | 0h | 2011-06-21 08:00 A | 2011-06-21 08:00 A | 100% |  | 2011-06-21 08:00 | 2011-06-21 08:30 | 0.5h | 2011-06-21 08:00 | 2011-06-21 08:00 |  | start no earlier than 2011-06-21 04:00 | Hurley |  |  |  |
| 283 | 1.2.6.3.12 | Weekly DSL Progress Meetings 12 |  | 0.5h | 2011-06-28 08:00 A | 2011-06-28 08:30 A | 100% |  | 2011-06-28 08:00 | 2011-06-28 08:30 | 0.5h | 2011-06-28 08:00 | 2011-06-28 08:30 |  | start no earlier than 2011-06-28 04:00 | Hurley | 0.5h | 0.5h |  |
| 284 | 1.2.6.3.13 | Weekly DSL Progress Meetings 13 |  | 0.5h | 2011-07-06 08:00 A | 2011-07-06 08:30 A | 100% |  | 2011-07-05 08:00 | 2011-07-05 08:30 | 0.5h | 2011-07-06 08:00 | 2011-07-06 08:30 |  | start no earlier than 2011-07-06 08:00 | Hurley | 0.5h | 0.5h |  |
| 285 | 1.2.6.3.14 | Weekly DSL Progress Meetings 14 |  | 0.5h | 2011-07-12 08:00 A | 2011-07-12 08:30 A | 100% |  | 2011-07-12 08:00 | 2011-07-12 08:30 | 0.5h | 2011-07-12 08:00 | 2011-07-12 08:30 |  | start no earlier than 2011-07-12 04:00 | Hurley | 0.5h | 0.5h |  |
| 286 | 1.2.6.3.15 | Weekly DSL Progress Meetings 15 |  | 0.5h | 2011-07-21 08:00 A | 2011-07-21 08:30 A | 100% |  | 2011-07-19 08:00 | 2011-07-19 08:30 | 0.5h | 2011-07-19 08:00 | 2011-07-19 08:30 |  | start no earlier than 2011-07-21 08:00 | Hurley | 0.5h | 0.5h |  |
| 287 | 1.2.6.3.16 | Weekly DSL Progress Meetings 16 |  | 0.5h | 2011-07-28 08:00 | 2011-07-28 08:30 |  |  | 2011-07-26 08:00 | 2011-07-26 08:30 | 0.5h | 2011-07-26 08:00 | 2011-07-26 08:30 | 167.35d | start no earlier than 2011-07-28 08:00 | Hurley | 0.5h |  |  |
| 288 | 1.2.6.3.17 | Weekly DSL Progress Meetings 17 |  | 0.5h | 2011-08-04 08:00 | 2011-08-04 08:30 |  |  | 2011-08-02 08:00 | 2011-08-02 08:30 | 0.5h | 2011-08-02 08:00 | 2011-08-02 08:30 | 162.35d | start no earlier than 2011-08-04 08:00 | Hurley | 0.5h |  |  |
| 289 | 1.2.6.3.18 | Weekly DSL Progress Meetings 18 |  | 0.5h | 2011-08-11 08:00 | 2011-08-11 08:30 |  |  | 2011-08-09 08:00 | 2011-08-09 08:30 | 0.5h | 2011-08-09 08:00 | 2011-08-09 08:30 | 157.35d | start no earlier than 2011-08-11 08:00 | Hurley | 0.5h |  |  |
| 290 | 1.2.6.3.19 | Weekly DSL Progress Meetings 19 |  | 0.5h | 2011-08-18 08:00 | 2011-08-18 08:30 |  |  | 2011-08-16 08:00 | 2011-08-16 08:30 | 0.5h | 2011-08-16 08:00 | 2011-08-16 08:30 | 152.35d | start no earlier than 2011-08-18 08:00 | Hurley | 0.5h |  |  |
| 291 | 1.2.6.3.20 | Weekly DSL Progress Meetings 20 |  | 0.5h | 2011-08-25 08:00 | 2011-08-25 08:30 |  |  | 2011-08-23 08:00 | 2011-08-23 08:30 | 0.5h | 2011-08-23 08:00 | 2011-08-23 08:30 | 147.35d | start no earlier than 2011-08-25 08:00 | Hurley | 0.5h |  |  |
| 292 | 1.2.6.3.21 | Weekly DSL Progress Meetings 21 |  | 0.5h | 2011-09-01 08:00 | 2011-09-01 08:30 |  |  | 2011-08-30 08:00 | 2011-08-30 08:30 | 0.5h | 2011-08-30 08:00 | 2011-08-30 08:30 | 142.35d | start no earlier than 2011-09-01 08:00 | Hurley | 0.5h |  |  |
| 293 | 1.2.6.3.22 | Weekly DSL Progress Meetings 22 |  | 0.5h | 2011-09-08 08:00 | 2011-09-08 08:30 |  |  | 2011-09-06 08:00 | 2011-09-06 08:30 | 0.5h | 2011-09-06 08:00 | 2011-09-06 08:30 | 138.35d | start no earlier than 2011-09-08 08:00 | Hurley | 0.5h |  |  |
| 294 | 1.2.6.3.23 | Weekly DSL Progress Meetings 23 |  | 0.5h | 2011-09-15 08:00 | 2011-09-15 08:30 |  |  | 2011-09-13 08:00 | 2011-09-13 08:30 | 0.5h | 2011-09-13 08:00 | 2011-09-13 08:30 | 133.35d | start no earlier than 2011-09-15 08:00 | Hurley | 0.5h |  |  |
| 295 | 1.2.6.3.24 | Weekly DSL Progress Meetings 24 |  | 0.5h | 2011-09-22 08:00 | 2011-09-22 08:30 |  |  | 2011-09-20 08:00 | 2011-09-20 08:30 | 0.5h | 2011-09-20 08:00 | 2011-09-20 08:30 | 128.35d | start no earlier than 2011-09-22 08:00 | Hurley | 0.5h |  |  |
| 296 | 1.2.6.3.25 | Weekly DSL Progress Meetings 25 |  | 0.5h | 2011-09-29 08:00 | 2011-09-29 08:30 |  |  | 2011-09-27 08:00 | 2011-09-27 08:30 | 0.5h | 2011-09-27 08:00 | 2011-09-27 08:30 | 123.35d | start no earlier than 2011-09-29 08:00 | Hurley | 0.5h |  |  |

| ID | WBS | Task | Type | Duration | Start | Finish | Complete | Remaining | Baseline start | Baseline finish | Baseline duration | Baseline 1 start | Baseline 1 finish | Total slack | Constraint | Resources | Work | Actual work | Text1 |
| --- | --- | --- | --- | --- | --- | --- | --- | --- | --- | --- | --- | --- | --- | --- | --- | --- | --- | --- | --- |
| 297 | 1.2.7 | **Risk Management** |  | 119.94d | 2011-04-12 09:00 A | 2011-09-29 08:30 | 71% | 34.98d | 2011-04-12 09:00 | 2011-09-27 08:30 | 117.94d | 2011-04-12 09:00 | 2011-09-27 08:30 | 99.94d |  |  | 12h | 8.5h |  |
| 298 | 1.2.7.1 | **Weekly Risk Review (DSL Meeting)** |  | 119.94d | 2011-04-12 09:00 A | 2011-09-29 08:30 | 71% | 34.98d | 2011-04-12 09:00 | 2011-09-27 08:30 | 117.94d | 2011-04-12 09:00 | 2011-09-27 08:30 | 123.35d |  |  | 12h | 8.5h |  |
| 299 | 1.2.7.1.1 | Weekly Risk Review (DSL Meeting) 1 |  | 0.5h | 2011-04-12 09:00 A | 2011-04-12 09:30 A | 100% |  | 2011-04-12 09:00 | 2011-04-12 09:30 | 0.5h | 2011-04-12 09:00 | 2011-04-12 09:30 |  | start no earlier than 2011-04-12 04:00 | Hurley | 0.5h | 0.5h | Complete |
| 300 | 1.2.7.1.2 | Weekly Risk Review (DSL Meeting) 2 |  | 0.5h | 2011-04-19 09:00 A | 2011-04-19 09:30 A | 100% |  | 2011-04-19 09:00 | 2011-04-19 09:30 | 0.5h | 2011-04-19 09:00 | 2011-04-19 09:30 |  | start no earlier than 2011-04-19 04:00 | Hurley | 0.5h | 0.5h | Complete |
| 301 | 1.2.7.1.3 | Weekly Risk Review (DSL Meeting) 3 |  | 0.5h | 2011-04-26 09:00 A | 2011-04-26 09:30 A | 100% |  | 2011-04-26 09:00 | 2011-04-26 09:30 | 0.5h | 2011-04-26 09:00 | 2011-04-26 09:30 |  | start no earlier than 2011-04-26 04:00 | Hurley | 0.5h | 0.5h | Complete |
| 302 | 1.2.7.1.4 | Weekly Risk Review (DSL Meeting) 4 |  | 0.5h | 2011-05-03 09:00 A | 2011-05-03 09:30 A | 100% |  | 2011-05-03 09:00 | 2011-05-03 09:30 | 0.5h | 2011-05-03 09:00 | 2011-05-03 09:30 |  | start no earlier than 2011-05-03 04:00 | Hurley | 0.5h | 0.5h | Complete |
| 303 | 1.2.7.1.5 | Weekly Risk Review (DSL Meeting) 5 |  | 0.5h | 2011-05-10 09:00 A | 2011-05-10 09:30 A | 100% |  | 2011-05-10 09:00 | 2011-05-10 09:30 | 0.5h | 2011-05-10 09:00 | 2011-05-10 09:30 |  | start no earlier than 2011-05-10 04:00 | Hurley | 0.5h | 0.5h | Complete |
| 304 | 1.2.7.1.6 | Weekly Risk Review (DSL Meeting) 6 |  | 0.5h | 2011-05-17 09:00 A | 2011-05-17 09:30 A | 100% |  | 2011-05-17 09:00 | 2011-05-17 09:30 | 0.5h | 2011-05-17 09:00 | 2011-05-17 09:30 |  | start no earlier than 2011-05-17 04:00 | Hurley | 0.5h | 0.5h | Complete |
| 305 | 1.2.7.1.7 | Weekly Risk Review (DSL Meeting) 7 (off-line risk review) |  | 0.5h | 2011-05-24 09:00 A | 2011-05-24 09:30 A | 100% |  | 2011-05-24 09:00 | 2011-05-24 09:30 | 0.5h | 2011-05-24 09:00 | 2011-05-24 09:30 |  | start no earlier than 2011-05-24 04:00 | Hurley | 0.5h | 0.5h | Complete |
| 306 | 1.2.7.1.8 | Weekly Risk Review (DSL Meeting) 8 (off-line review) |  | 0.5h | 2011-05-31 09:00 A | 2011-05-31 09:30 A | 100% |  | 2011-05-31 09:00 | 2011-05-31 09:30 | 0.5h | 2011-05-31 09:00 | 2011-05-31 09:30 |  | start no earlier than 2011-05-31 04:00 | Hurley | 0.5h | 0.5h | Complete |
| 307 | 1.2.7.1.9 | Weekly Risk Review (DSL Meeting) 9 |  | 0.5h | 2011-06-07 09:00 A | 2011-06-07 09:30 A | 100% |  | 2011-06-07 09:00 | 2011-06-07 09:30 | 0.5h | 2011-06-07 09:00 | 2011-06-07 09:30 |  | start no earlier than 2011-06-07 04:00 | Hurley | 0.5h | 0.5h | Complete |
| 308 | 1.2.7.1.10 | Weekly Risk Review (DSL Meeting) 10 |  | 0.5h | 2011-06-14 08:00 A | 2011-06-14 08:30 A | 100% |  | 2011-06-14 08:00 | 2011-06-14 08:30 | 0.5h | 2011-06-14 08:00 | 2011-06-14 08:30 |  | start no earlier than 2011-06-14 04:00 | Hurley | 0.5h | 0.5h |  |
| 309 | 1.2.7.1.11 | Weekly Risk Review (DSL Meeting) 11 (meeting cancelled) | milestone | 0h | 2011-06-21 08:00 A | 2011-06-21 08:00 A | 100% |  | 2011-06-21 08:00 | 2011-06-21 08:30 | 0.5h | 2011-06-21 08:00 | 2011-06-21 08:00 |  | start no earlier than 2011-06-21 04:00 | Hurley |  |  |  |
| 310 | 1.2.7.1.12 | Weekly Risk Review (DSL Meeting) 12 |  | 0.5h | 2011-06-28 08:00 A | 2011-06-28 08:30 A | 100% |  | 2011-06-28 08:00 | 2011-06-28 08:30 | 0.5h | 2011-06-28 08:00 | 2011-06-28 08:30 |  | start no earlier than 2011-06-28 04:00 | Hurley | 0.5h | 0.5h |  |
| 311 | 1.2.7.1.13 | Weekly Risk Review (DSL Meeting) 13 |  | 0.5h | 2011-07-06 08:00 A | 2011-07-06 08:30 A | 100% |  | 2011-07-05 08:00 | 2011-07-05 08:30 | 0.5h | 2011-07-06 08:00 | 2011-07-06 08:30 |  | start no earlier than 2011-07-06 08:00 | Hurley | 0.5h | 0.5h |  |
| 312 | 1.2.7.1.14 | Weekly Risk Review (DSL Meeting) 14 |  | 0.5h | 2011-07-12 08:00 A | 2011-07-12 08:30 A | 100% |  | 2011-07-12 08:00 | 2011-07-12 08:30 | 0.5h | 2011-07-12 08:00 | 2011-07-12 08:30 |  | start no earlier than 2011-07-12 04:00 | Hurley | 0.5h | 0.5h |  |
| 313 | 1.2.7.1.15 | Weekly Risk Review (DSL Meeting) 15 |  | 0.5h | 2011-07-21 08:00 A | 2011-07-21 08:30 A | 100% |  | 2011-07-19 08:00 | 2011-07-19 08:30 | 0.5h | 2011-07-19 08:00 | 2011-07-19 08:30 |  | start no earlier than 2011-07-21 08:00 | Hurley | 0.5h | 0.5h |  |
| 314 | 1.2.7.1.16 | Weekly Risk Review (DSL Meeting) 16 |  | 0.5h | 2011-07-28 08:00 A | 2011-07-28 08:30 A | 100% |  | 2011-07-26 08:00 | 2011-07-26 08:30 | 0.5h | 2011-07-26 08:00 | 2011-07-26 08:30 |  | start no earlier than 2011-07-28 08:00 | Hurley | 0.5h | 0.5h |  |
| 315 | 1.2.7.1.17 | Weekly Risk Review (DSL Meeting) 17 |  | 0.5h | 2011-08-04 08:00 A | 2011-08-04 08:30 A | 100% |  | 2011-08-02 08:00 | 2011-08-02 08:30 | 0.5h | 2011-08-02 08:00 | 2011-08-02 08:30 |  | start no earlier than 2011-08-04 08:00 | Hurley | 0.5h | 0.5h |  |
| 316 | 1.2.7.1.18 | Weekly Risk Review (DSL Meeting) 18 |  | 0.5h | 2011-08-11 08:00 A | 2011-08-11 08:30 A | 100% |  | 2011-08-09 08:00 | 2011-08-09 08:30 | 0.5h | 2011-08-09 08:00 | 2011-08-09 08:30 |  | start no earlier than 2011-08-11 08:00 | Hurley | 0.5h | 0.5h |  |
| 317 | 1.2.7.1.19 | Weekly Risk Review (DSL Meeting) 19 |  | 0.5h | 2011-08-18 08:00 | 2011-08-18 08:30 |  |  | 2011-08-16 08:00 | 2011-08-16 08:30 | 0.5h | 2011-08-16 08:00 | 2011-08-16 08:30 | 152.35d | start no earlier than 2011-08-18 08:00 | Hurley | 0.5h |  |  |
| 318 | 1.2.7.1.20 | Weekly Risk Review (DSL Meeting) 20 |  | 0.5h | 2011-08-25 08:00 | 2011-08-25 08:30 |  |  | 2011-08-23 08:00 | 2011-08-23 08:30 | 0.5h | 2011-08-23 08:00 | 2011-08-23 08:30 | 147.35d | start no earlier than 2011-08-25 08:00 | Hurley | 0.5h |  |  |
| 319 | 1.2.7.1.21 | Weekly Risk Review (DSL Meeting) 21 |  | 0.5h | 2011-09-01 08:00 | 2011-09-01 08:30 |  |  | 2011-08-30 08:00 | 2011-08-30 08:30 | 0.5h | 2011-08-30 08:00 | 2011-08-30 08:30 | 142.35d | start no earlier than 2011-09-01 08:00 | Hurley | 0.5h |  |  |
| 320 | 1.2.7.1.22 | Weekly Risk Review (DSL Meeting) 22 |  | 0.5h | 2011-09-08 08:00 | 2011-09-08 08:30 |  |  | 2011-09-06 08:00 | 2011-09-06 08:30 | 0.5h | 2011-09-06 08:00 | 2011-09-06 08:30 | 138.35d | start no earlier than 2011-09-08 08:00 | Hurley | 0.5h |  |  |
| 321 | 1.2.7.1.23 | Weekly Risk Review (DSL Meeting) 23 |  | 0.5h | 2011-09-15 08:00 | 2011-09-15 08:30 |  |  | 2011-09-13 08:00 | 2011-09-13 08:30 | 0.5h | 2011-09-13 08:00 | 2011-09-13 08:30 | 133.35d | start no earlier than 2011-09-15 08:00 | Hurley | 0.5h |  |  |
| 322 | 1.2.7.1.24 | Weekly Risk Review (DSL Meeting) 24 |  | 0.5h | 2011-09-22 08:00 | 2011-09-22 08:30 |  |  | 2011-09-20 08:00 | 2011-09-20 08:30 | 0.5h | 2011-09-20 08:00 | 2011-09-20 08:30 | 128.35d | start no earlier than 2011-09-22 08:00 | Hurley | 0.5h |  |  |
| 323 | 1.2.7.1.25 | Weekly Risk Review (DSL Meeting) 25 |  | 0.5h | 2011-09-29 08:00 | 2011-09-29 08:30 |  |  | 2011-09-27 08:00 | 2011-09-27 08:30 | 0.5h | 2011-09-27 08:00 | 2011-09-27 08:30 | 123.35d | start no earlier than 2011-09-29 08:00 | Hurley | 0.5h |  |  |

| ID | WBS | Task | Type | Duration | Start | Finish | Predecessors | Complete | Remaining | Baseline start | Baseline finish | Baseline duration | Baseline 1 start | Baseline 1 finish | Total slack | Free slack | Constraint | Resources | Work | Actual work |
| --- | --- | --- | --- | --- | --- | --- | --- | --- | --- | --- | --- | --- | --- | --- | --- | --- | --- | --- | --- | --- |
| 324 | 1.2.8 | **Integrated Change Control** |  | 115d | 2011-07-18 08:00 A | 2011-12-30 17:00 |  | 20% | 92d | 2011-06-13 08:00 | 2011-09-30 17:00 | 78d | 2011-07-01 08:00 | 2011-10-21 17:00 | 37d |  |  |  | 92h | 18.4h |
| 325 | 1.2.8.1 | Management of Change Control and Change Log |  | 115d | 2011-07-18 08:00 A | 2011-12-30 17:00 | 32FF | 20% | 92d | 2011-06-13 08:00 | 2011-09-30 17:00 | 78d | 2011-07-01 08:00 | 2011-10-21 17:00 | 37d |  | finish no earlier than 2011-12-30 17:00 | Hurley [10%] | 92h | 18.4h |
| 326 | 1.3 | **Planning, Requirements, High-level Architecture** |  | 20.5d | 2011-06-13 08:00 A | 2011-07-12 12:00 A |  | 100% |  | 2011-06-13 08:00 | 2011-07-12 12:00 | 20.5d | 2011-06-13 08:00 | 2011-07-12 12:00 |  |  |  |  | 926h | 926h |
| 327 | 1.3.1 | Create integrated project schedule |  | 16d | 2011-06-13 08:00 A | 2011-07-08 17:00 A | 331 | 100% |  | 2011-06-13 08:00 | 2011-06-24 17:00 | 10d | 2011-06-13 08:00 | 2011-07-08 17:00 |  |  | finish no earlier than 2011-07-05 17:00 | Joshi; Hurley; Chintalapati; Parnell; Gann | 496h | 496h |
| 328 | 1.3.2 | Update Use Cases & Requirements |  | 10d | 2011-06-13 08:00 A | 2011-06-24 17:00 A |  | 100% |  | 2011-06-13 08:00 | 2011-06-24 17:00 | 10d | 2011-06-13 08:00 | 2011-06-24 17:00 |  |  | start no earlier than 2011-06-13 08:00 | ARCH - 5 | 80h | 80h |
| 329 | 1.3.3 | Evaluate Open-source Alternatives and Select CDW Platform - w/Dev Support |  | 13d | 2011-06-13 08:00 A | 2011-06-29 17:00 A |  | 100% |  | 2011-06-13 08:00 | 2011-06-24 17:00 | 10d | 2011-06-13 08:00 | 2011-06-29 17:00 |  |  | finish no earlier than 2011-06-29 17:00 | ARCH - 3 [50%]; ARCH - 4 [50%]; ARCH - 1 [25%] | 130h | 130h |
| 330 | 1.3.4 | Update Architecture Document |  | 10d | 2011-06-13 08:00 A | 2011-06-24 17:00 A |  | 100% |  | 2011-06-13 08:00 | 2011-06-24 17:00 | 10d | 2011-06-13 08:00 | 2011-06-24 17:00 |  |  |  | ARCH - 3 [25%]; ARCH - 1 [50%] | 60h | 60h |
| 331 | 1.3.5 | Approve CDW Open-source Selection w/ NCI and SAIC-F | milestone | 0d | 2011-07-11 08:00 A | 2011-07-11 08:00 A | 329FS+5d | 100% |  |  |  |  | 2011-07-07 17:00 | 2011-07-07 17:00 |  |  | start no earlier than 2011-07-11 08:00 | Andonyadis; Cabral; Shirley; Undale |  |  |
| 332 | 1.3.6 | Review and Update - Use-Cases & Architecture |  | 10d | 2011-06-27 13:00 A | 2011-07-12 12:00 A | 328FS+0.5d | 100% |  | 2011-06-27 13:00 | 2011-07-12 12:00 | 10d | 2011-06-27 13:00 | 2011-07-12 12:00 |  |  |  | NCI [66.7%]; SAIC-F [66.7%]; ARCH - 5 [66.7%] | 160h | 160h |
| 333 | 1.3.7 | Use Cases and Architecture Approved | milestone | 0d | 2011-07-12 12:00 A | 2011-07-12 12:00 A | 332, 331 | 100% |  | 2011-07-12 12:00 | 2011-07-12 12:00 | 0d | 2011-07-12 12:00 | 2011-07-12 12:00 |  |  |  |  |  |  |
| 334 | 1.4 | **TRANSCEND Interface** |  | 104d | 2011-06-20 08:00 A | 2011-11-16 17:00 |  | 45% | 57.64d | 2011-06-17 08:00 | 2011-10-12 17:00 | 81d | 2011-06-20 08:00 | 2011-10-04 10:24 | 90.42d |  |  |  | 400h | 224h |
| 335 | 1.4.1 | TRANSCEND Contact Needed for Workflow Discussion & Sign-off- External Dependency | milestone | 0d | 2011-06-20 08:00 A | 2011-06-20 08:00 A |  | 100% |  | 2011-06-17 08:00 | 2011-06-17 08:00 | 0d | 2011-06-20 08:00 | 2011-06-20 08:00 |  |  | start no earlier than 2011-06-20 08:00 | Shalley |  |  |
| 336 | 1.4.2 | Discuss & Confirm Tolven workflow from TRANSCEND to SA |  | 19d | 2011-06-20 08:00 A | 2011-07-15 17:00 A | 335 | 100% |  | 2011-06-17 08:00 | 2011-06-30 17:00 | 10d | 2011-06-20 08:00 | 2011-07-15 17:00 |  |  | finish no earlier than 2011-07-15 17:00 | Joshi; Chintalapati | 80h | 80h |
| 337 | 1.4.3 | Design SA secure interface for TRANSCEND Tolven |  | 10d | 2011-07-22 08:00 A | 2011-08-04 17:00 A | 336, 335 | 100% |  | 2011-08-09 08:00 | 2011-08-22 17:00 | 10d | 2011-08-09 08:00 | 2011-08-22 17:00 |  |  | start no earlier than 2011-07-22 08:00 | ARCH - 3 | 80h | 80h |
| 338 | 1.4.4 | Milestone - TRANSCEND Interface Design Finalized - External Dependency | milestone | 0d | 2011-08-04 17:00 | 2011-08-04 17:00 | 337 |  |  | 2011-08-22 17:00 | 2011-08-22 17:00 | 0d | 2011-08-22 17:00 | 2011-08-22 17:00 | 161.42d | 0d |  |  |  |  |
| 339 | 1.4.5 | Milestone - Commitment to Deploy and Test Semantic Adapter Based on Finalized Design- External Dependency | milestone | 0d | 2011-08-04 17:00 | 2011-08-04 17:00 | 338 |  |  | 2011-08-22 17:00 | 2011-08-22 17:00 | 0d | 2011-08-22 17:00 | 2011-08-22 17:00 | 161.42d |  |  |  |  |  |
| 340 | 1.4.6 | Milestone - Deployment Specific Information (Environment Information) - External Dependency | milestone | 0d | 2011-08-04 17:00 A | 2011-08-04 17:00 A | 339 | 100% |  | 2011-08-22 17:00 | 2011-08-22 17:00 | 0d | 2011-08-22 17:00 | 2011-08-22 17:00 |  |  |  |  |  |  |
| 341 | 1.4.7 | Milestone - Mirth Connect SSL Plugin License needed for ESD development activities - No longer needed Alternative Route Determined | milestone | 0d | 2011-08-19 08:00 A | 2011-08-19 08:00 A |  | 100% |  |  |  |  |  |  |  |  | start no earlier than 2011-08-19 08:00 |  |  |  |
| 342 | 1.4.8 | Develop Tolven to SA interface |  | 29d | 2011-08-08 08:00 A | 2011-09-16 17:00 | 340FS-1d | 28% | 21d | 2011-08-23 08:00 | 2011-09-27 17:00 | 25d | 2011-08-22 08:00 | 2011-09-30 17:00 | 0d |  | start no earlier than 2011-08-08 08:00 | ESD | 200h | 64h |
| 343 | 1.4.9 | Quality Test Source to SA Interface |  | 25d | 2011-10-12 08:00 | 2011-11-16 17:00 | 342, 390 |  |  |  |  |  | 2011-12-06 08:00 | 2011-12-16 17:00 | -1d | 0d | finish no earlier than 2011-11-16 17:00 | QA - 1 [21.9%] | 40h |  |
| 344 | 1.5 | **Modeling and Semantic Mapping** |  | 106d | 2011-06-20 08:00 A | 2011-11-18 17:00 |  | 54% | 48.96d | 2011-06-20 08:00 | 2011-11-17 17:00 | 105d | 2011-06-20 08:00 | 2011-11-01 17:00 | 88.42d |  |  |  | 1388.4h | 632.92h |
| 345 | 1.5.1 | Build Initial Computable Transform |  | 5d | 2011-06-20 08:00 A | 2011-06-24 17:00 A |  | 100% |  | 2011-06-20 08:00 | 2011-06-24 17:00 | 5d | 2011-06-20 08:00 | 2011-06-24 17:00 |  |  | start no earlier than 2011-06-20 08:00 | ARCH - 3 [25%] | 10h | 10h |
| 346 | 1.5.2 | Milestone - Initial Computable Transform - Simple Example of Transform (File, URL, SVN Location) - Internal Dependency | milestone | 0d | 2011-06-27 08:00 A | 2011-06-27 08:00 A | 345 | 100% |  | 2011-06-27 08:00 | 2011-06-27 08:00 | 0d | 2011-06-27 08:00 | 2011-06-27 08:00 |  |  | start no earlier than 2011-06-27 08:00 |  |  |  |
| 347 | 1.5.3 | Milestone - TRIM's Finalized (Data Elements, Structure and Semantics) Validate Assumptions - External Dependency | milestone | 0d | 2011-07-22 08:00 A | 2011-07-22 08:00 A |  | 100% |  | 2011-07-05 08:00 | 2011-07-05 08:00 | 0d | 2011-07-05 08:00 | 2011-07-05 08:00 |  |  | start no earlier than 2011-07-22 08:00 | Shalley |  |  |
| 348 | 1.5.4 | Milestone - EPIC Exchange Data Elements Finalized - External Dependency (Will use all 4 Clinical Notes Data Elements as no details provided from TRANSCEND team) | milestone | 0d | 2011-08-12 08:00 A | 2011-08-12 08:00 A |  | 100% |  | 2011-07-05 08:00 | 2011-07-05 08:00 | 0d | 2011-07-05 08:00 | 2011-07-05 08:00 |  |  | start no earlier than 2011-08-12 08:00 | Shalley |  |  |
| 349 | 1.5.5 | Milestone - Sample Data for Consolidated TRIM - TRANSCEND - External Dependency | milestone | 0d | 2011-08-05 08:00 | 2011-08-05 08:00 |  |  |  |  |  |  |  |  | 119d |  | start no earlier than 2011-08-05 08:00 |  |  |  |
| 350 | 1.5.6 | Milestone - Sample Data to Validate Mappings - TRANSCEND - External Dependency | milestone | 0d | 2011-07-22 08:00 A | 2011-07-22 08:00 A |  | 100% |  | 2011-08-01 08:00 | 2011-08-01 08:00 | 0d | 2011-08-01 08:00 | 2011-08-01 08:00 |  |  | start no earlier than 2011-07-22 08:00 |  |  |  |
| 351 | 1.5.7 | Milestone - Sample Data to support Design Activities - TRANSCEND - External Dependency | milestone | 0d | 2011-07-22 08:00 A | 2011-07-22 08:00 A |  | 100% |  | 2011-07-15 08:00 |  | 0d? | 2011-07-01 08:00 | 2011-07-01 08:00 |  |  | start no earlier than 2011-07-22 08:00 | Shalley |  |  |

Notes:
- 335: Commitment needed is approximately 2 - 3 1 hr meetings
- 342: ESD Task

| ID | WBS | Task | Type | Duration | Start | Finish | Predecessors | Complete | Remaining | Baseline start | Baseline finish | Baseline duration | Baseline 1 start | Baseline 1 finish | Total slack | Free slack | Constraint | Resources | Work | Actual work |
| --- | --- | --- | --- | --- | --- | --- | --- | --- | --- | --- | --- | --- | --- | --- | --- | --- | --- | --- | --- | --- |
| 352 | 1.5.8 | **Canonical Model** |  | 60d | 2011-06-27 08:00 A | 2011-09-20 17:00 | 330 | 62% | 23d | 2011-06-27 08:00 | 2011-09-20 17:00 | 60d | 2011-06-27 08:00 | 2011-09-20 17:00 | 89.42d | 0d |  |  | 918.4h | 578.92h |
| 353 | 1.5.8.1 | Milestone - Canonical Model Mapping Questions & Answers - TRANSCEND - Questions will remain on list for one week unresolved questions arch team will document assumptions and continue forward. | milestone | 0d | 2011-08-05 08:00 A | 2011-08-05 08:00 A |  | 100% |  |  |  |  |  |  |  |  | start no earlier than 2011-08-05 08:00 |  |  |  |
| 354 | 1.5.8.2 | Develop Canonical Model |  | 60d | 2011-06-27 08:00 A | 2011-09-20 17:00 |  | 62% | 23d | 2011-06-27 08:00 | 2011-09-20 17:00 | 60d | 2011-06-27 08:00 | 2011-09-20 17:00 | 25d | 0d |  | ARCH - 1 [25%]; ARCH - 2 [25%] | 174.4h | 120.12h |
| 355 | 1.5.8.3 | Develop Canonical Model IG |  | 60d | 2011-06-27 08:00 A | 2011-09-20 17:00 |  | 62% | 23d | 2011-06-27 08:00 | 2011-09-20 17:00 | 60d | 2011-06-27 08:00 | 2011-09-20 17:00 | 89.42d |  |  | ARCH - 2 [35%] | 168h | 103.6h |
| 356 | 1.5.8.4 | Define mapping from Clinical Notes data elements to Canonical Model |  | 60d | 2011-06-27 08:00 A | 2011-09-20 17:00 | 354FF | 62% | 23d | 2011-06-27 08:00 | 2011-09-20 17:00 | 60d | 2011-06-27 08:00 | 2011-09-20 17:00 | 89.42d |  |  | ARCH - 2 [35%] | 168h | 103.6h |
| 357 | 1.5.8.5 | Define mapping from PCO data elements to Canonical Model |  | 60d | 2011-06-27 08:00 A | 2011-09-20 17:00 | 354FF | 62% | 23d | 2011-06-27 08:00 | 2011-09-20 17:00 | 60d | 2011-06-27 08:00 | 2011-09-20 17:00 | 89.42d |  |  | ARCH - 2 [35%] | 168h | 103.6h |
| 358 | 1.5.8.6 | Develop computable transforms from clinical notes to canonical model |  | 60d | 2011-06-27 08:00 A | 2011-09-20 17:00 | 354FF | 62% | 23d | 2011-09-21 08:00 | 2011-11-02 17:00 | 30d | 2011-09-21 08:00 | 2011-10-04 17:00 | 32d | 15d |  | ARCH - 6 [40%] | 192h | 118.4h |
| 359 | 1.5.8.7 | Develop computable transforms from PCO to canonical model |  | 60d | 2011-06-27 08:00 A | 2011-09-20 17:00 | 354FF | 62% | 23d | 2011-09-21 08:00 | 2011-11-02 17:00 | 30d | 2011-09-22 08:00 | 2011-10-05 17:00 | 32d | 15d | start no earlier than 2011-06-27 08:00 | ARCH - 7 [10%] | 48h | 29.6h |
| 360 | 1.5.9 | Quality Test Computable Transforms |  | 7d | 2011-11-07 08:00 | 2011-11-16 17:00 | 358FS-2d, 359FS-2d, 372 |  |  | 2011-11-03 08:00 | 2011-11-17 17:00 | 10d | 2011-09-29 08:00 | 2011-10-13 17:00 | -2d | 0d | finish no later than 2012-01-12 17:00 | QA - 2 | 56h |  |
| 361 | 1.5.10 | Define HL7v2 (Computable Transform) |  | 11d | 2011-09-20 08:00 | 2011-10-04 17:00 | 420 |  |  | 2011-09-21 08:00 | 2011-10-19 17:00 | 20d | 2011-09-21 08:00 | 2011-10-19 17:00 | -1d | 0d | start no later than 2011-09-20 08:00 | ARCH - 1 | 80h |  |
| 362 | 1.5.11 | Define RIM ITS and CCD mapping |  | 6d | 2011-10-04 08:00 | 2011-10-12 17:00 | 361 |  |  | 2011-08-23 08:00 | 2011-09-06 17:00 | 10d | 2011-08-23 08:00 | 2011-09-06 17:00 | -1d | 0d | start no later than 2011-10-04 08:00 | ARCH - 1 | 40h |  |
| 363 | 1.5.12 | Architecture Provide v1.0 XSLT computable transform |  | 3d | 2011-07-05 08:00 A | 2011-07-07 17:00 A |  | 100% |  | 2011-07-05 08:00 | 2011-07-07 17:00 | 0d? | 2011-07-05 08:00 | 2011-07-07 17:00 |  |  | finish no earlier than 2011-07-07 17:00 |  |  |  |
| 364 | 1.5.13 | Build and Deploy for computable and coded transforms - Round 1 |  | 9d | 2011-06-27 08:00 A | 2011-07-08 17:00 A | 346, 363FF | 100% |  | 2011-06-27 08:00 | 2011-07-01 17:00 | 5d | 2011-06-27 08:00 | 2011-07-08 17:00 |  |  |  | ESD | 40h | 40h |
| 365 | 1.5.14 | Build and Deploy for computable and coded transforms - Round 2 |  | 10d | 2011-09-12 08:00 | 2011-09-23 17:00 | 354FS-7d |  |  | 2011-07-05 08:00 | 2011-07-07 12:00 | 2.5d | 2011-09-19 08:00 | 2011-09-30 17:00 | 25d | 0d |  | ESD [50%] | 40h |  |
| 366 | 1.5.15 | Create deployment guide for new transforms (run-time, compile-time, deploy-time) |  | 9.5d | 2011-09-12 08:00 | 2011-09-23 17:00 | 365SS |  |  | 2011-08-22 08:00 | 2011-08-24 12:00 | 2.5d | 2011-09-19 08:00 | 2011-09-30 17:00 | 86.42d | 19d | start no earlier than 2011-08-22 08:00 | ESD | 40h |  |
| 367 | 1.5.16 | Development HL7v2 |  | 9d | 2011-10-03 08:00 | 2011-10-17 12:00 | 361FS-3d |  |  | 2011-10-20 08:00 | 2011-10-24 12:00 | 2.5d | 2011-10-17 08:00 | 2011-10-28 17:00 | 19.5d | 4.5d | start no earlier than 2011-10-03 08:00 | ESD [200%] | 76h |  |
| 368 | 1.5.17 | Development of RIM ITS and CCD mapping |  | 8.5d | 2011-10-11 08:00 | 2011-10-21 17:00 | 362FS-2d |  |  | 2011-09-07 08:00 | 2011-09-09 12:00 | 2.5d | 2011-09-06 08:00 | 2011-09-16 17:00 | 16d | 0d |  | ESD | 40h |  |
| 369 | 1.5.18 | Quality Test HL7v2 |  | 1d | 2011-11-17 08:00 | 2011-11-17 17:00 | 367, 360 |  |  | 2011-10-24 13:00 | 2011-10-26 12:00 | 2d | 2011-10-31 08:00 | 2011-11-01 17:00 | -2d | 0d |  | QA - 2 | 8h |  |
| 370 | 1.5.19 | Quality Test RIM ITS and CCD Mapping |  | 1d | 2011-11-18 08:00 | 2011-11-18 17:00 | 368, 369 |  |  | 2011-09-15 08:00 | 2011-09-16 17:00 | 2d | 2011-09-19 08:00 | 2011-09-20 17:00 | -2d | 0d |  | QA - 2 | 8h |  |
| 371 | 1.5.20 | Quality Test Build and Deploy for computable and coded transforms - Round 1 |  | 4d | 2011-08-17 08:00 A | 2011-08-22 17:00 | 364, 391 | 25% | 3d | 2011-09-15 08:00 | 2011-09-21 12:00 | 4.5d | 2011-09-06 08:00 | 2011-09-12 12:00 | -2d | 0d | start no earlier than 2011-08-15 08:00 | QA - 2 [50%] | 16h | 4h |
| 372 | 1.5.21 | Quality Test Build and Deploy for computable and coded transforms - Round 2 |  | 2d | 2011-11-03 08:00 | 2011-11-04 17:00 | 365, 425 |  |  | 2011-09-15 08:00 | 2011-09-21 12:00 | 4.5d | 2011-09-28 13:00 | 2011-10-04 17:00 | -2d | 0d |  | QA - 2 | 16h |  |
| 373 | 1.6 | **Semantic Adapter (SA)** |  | 85d | 2011-06-27 08:00 A | 2011-10-26 17:00 |  | 52% | 40.48d | 2011-06-27 08:00 | 2011-10-13 17:00 | 76d | 2011-06-27 08:00 | 2011-10-13 17:00 | 64.42d |  |  |  | 176h | 91h |
| 374 | 1.6.1 | ESB Deployment |  | 9d | 2011-06-27 08:00 A | 2011-07-08 17:00 A |  | 100% |  | 2011-06-27 08:00 | 2011-07-01 17:00 | 5d | 2011-06-27 08:00 | 2011-07-08 17:00 |  |  | start no earlier than 2011-06-27 08:00 | ESD [62.5%] | 40h | 40h |
| 375 | 1.6.2 | Design Semantic Adapter |  | 17d | 2011-07-20 08:00 A | 2011-08-24 17:00 | 380FS+6d | 71% | 5d |  |  |  |  |  | 107.42d | 43d | start no earlier than 2011-07-20 08:00 | ARCH - 4 | 48h | 43h |
| 376 | 1.6.3 | Design Identifier Resolver Façade (DESIGN ONLY) |  | 5d | 2011-08-22 08:00 | 2011-08-26 17:00 | 383FS+10d |  |  | 2011-07-28 08:00 | 2011-07-29 17:00 | 2d | 2011-07-28 08:00 | 2011-07-29 17:00 | 105.42d | 41d | start no earlier than 2011-08-22 08:00 | ARCH - 4 | 40h |  |
| 377 | 1.6.4 | Design Vocabulary lookup (DESIGN ONLY) |  | 10d | 2011-10-13 08:00 | 2011-10-26 17:00 | 362 |  |  | 2011-09-29 08:00 | 2011-10-13 17:00 | 10d | 2011-09-29 08:00 | 2011-10-13 17:00 | 64.42d | 0d | start no earlier than 2011-10-12 08:00 | ARCH - 1 [50%] | 40h |  |
| 378 | 1.6.5 | Quality Test ESB Deployment |  | 1d | 2011-07-20 08:00 A | 2011-07-20 17:00 A | 374 | 100% |  | 2011-09-15 08:00 | 2011-09-15 17:00 | 1d | 2011-09-06 08:00 | 2011-09-15 17:00 |  |  | start no earlier than 2011-07-20 08:00 | QA - 1 | 8h | 8h |

Notes:
- 354: ·standards based canonical model / ·map TRANSCEND TRIM(s) to canonical model
- 355: Implementation Guide for canonical model

| ID | WBS | Task | Type | Duration | Start | Finish | Predecessors | Complete | Remaining | Baseline start | Baseline finish | Baseline duration | Baseline 1 start | Baseline 1 finish | Total slack | Free slack | Constraint | Resources | Work | Actual work |
| --- | --- | --- | --- | --- | --- | --- | --- | --- | --- | --- | --- | --- | --- | --- | --- | --- | --- | --- | --- | --- |
| 379 | 1.7 | **IP - Canonical Model Processor** |  | 118.75d | 2011-06-13 08:00 A | 2011-12-01 15:00 |  | 54% | 54.49d | 2011-06-13 08:00 | 2011-10-31 17:00 | 98d | 2011-06-13 08:00 | 2011-11-17 17:00 | 1.25d |  |  |  | 694h | 393h |
| 380 | 1.7.1 | Design Interface - SA to IP |  | 14d | 2011-06-14 08:00 A | 2011-07-11 17:00 A |  | 100% |  | 2011-06-22 08:00 | 2011-06-28 17:00 | 5d | 2011-06-22 08:00 | 2011-06-29 17:00 |  |  | finish no earlier than 2011-07-11 17:00 | ARCH - 4 | 64h | 64h |
| 381 | 1.7.2 | Design CMP Authorization Component |  | 6d | 2011-08-30 08:00 | 2011-09-07 17:00 | 412 |  |  | 2011-08-23 08:00 | 2011-08-29 17:00 | 5d | 2011-08-23 08:00 | 2011-08-29 17:00 | -1d | 0d | start no later than 2011-08-30 08:00 | ARCH - 3 | 40h |  |
| 382 | 1.7.3 | Design CMP - Validation, Invocation |  | 10d | 2011-08-15 08:00 A | 2011-08-26 17:00 | 419FS-5d | 30% | 7d | 2011-10-18 08:00 | 2011-10-31 17:00 | 10d | 2011-10-18 08:00 | 2011-10-31 17:00 | -3d | 0d | start no earlier than 2011-08-12 08:00 | ARCH - 1 | 80h | 24h |
| 383 | 1.7.4 | Define Logging Policy and Log format |  | 11d | 2011-07-13 08:00 A | 2011-08-05 17:00 A | 418FS+3d | 100% |  | 2011-08-01 08:00 | 2011-08-12 17:00 | 10d | 2011-08-01 08:00 | 2011-08-12 17:00 |  |  | start no earlier than 2011-07-13 08:00 | ARCH - 4 | 48h | 48h |
| 384 | 1.7.5 | Deploy IP ESB |  | 9d | 2011-06-27 08:00 A | 2011-07-08 17:00 A | 374SS | 100% |  | 2011-07-05 08:00 | 2011-07-07 17:00 | 3d | 2011-06-27 08:00 | 2011-07-08 17:00 |  |  |  | ESD [37.5%] | 24h | 24h |
| 385 | 1.7.6 | Develop Web Service Interface (CanonicalModelProcessor) |  | 18d | 2011-07-11 08:00 A | 2011-09-09 17:00 | 380, 381FF | 83% | 3d | 2011-08-02 08:00 | 2011-08-29 17:00 | 20d | 2011-08-02 08:00 | 2011-09-02 17:00 | -1d | 0d | start no later than 2011-07-11 08:00 | ESD [187.5%] | 160h | 145h |
| 386 | 1.7.7 | Invoke ETL Process |  | 10d | 2011-07-18 08:00 A | 2011-07-29 17:00 A | 385SS+5d | 100% |  | 2011-08-30 08:00 | 2011-09-06 17:00 | 5d | 2011-09-06 08:00 | 2011-09-16 17:00 |  |  | start no earlier than 2011-07-11 08:00 | ESD [50%] | 40h | 40h |
| 387 | 1.7.8 | Document Router/Document Transfer Request Builder |  | 9d | 2011-09-12 08:00 | 2011-09-22 17:00 | 385 |  |  | 2011-08-30 08:00 | 2011-09-13 17:00 | 10d | 2011-09-06 08:00 | 2011-09-16 17:00 | 48d | 0d | start no earlier than 2011-09-12 08:00 | ESD | 72h |  |
| 388 | 1.7.9 | Node Authentication (provisioning certs and trust stores) |  | 10d | 2011-06-13 08:00 A | 2011-06-24 17:00 A |  | 100% |  | 2011-06-13 08:00 | 2011-06-24 17:00 | 10d | 2011-06-13 08:00 | 2011-06-24 17:00 |  |  | finish no earlier than 2011-06-24 17:00 | ESD [50%] | 40h | 40h |
| 389 | 1.7.10 | Quality Test IP ESB Deployment |  | 2d | 2011-11-21 08:00 | 2011-11-22 17:00 | 384, 370 |  |  | 2011-09-15 08:00 | 2011-09-16 12:00 | 1.5d | 2011-09-06 08:00 | 2011-10-28 17:00 | -2d | 0d |  | QA - 2 | 16h |  |
| 390 | 1.7.11 | Quality Test Web Service Inteface (CanonicalModelProcessor) |  | 30d | 2011-08-29 08:00 | 2011-10-11 17:00 | 385FS-5% |  |  | 2011-09-15 08:00 | 2011-09-28 17:00 | 10d | 2011-09-06 08:00 | 2011-09-19 17:00 | -1d | 0d |  | QA - 1 [40.6%] | 56h |  |
| 391 | 1.7.12 | Quality Test ETL Process |  | 2d | 2011-08-15 08:00 A | 2011-08-16 17:00 A | 386 | 100% |  | 2011-09-15 08:00 | 2011-09-20 15:00 | 3.75d | 2011-11-14 08:00 | 2011-11-17 17:00 |  |  | start no earlier than 2011-08-15 08:00 | QA - 2 [50%] | 8h | 8h |
| 392 | 1.7.13 | Quality Test Document Router/Document Transfer Request Builder |  | 2d | 2011-11-23 08:00 | 2011-11-25 17:00 | 387SS, 389 |  |  | 2011-09-15 08:00 | 2011-09-16 17:00 | 2d | 2011-09-19 08:00 | 2011-09-20 17:00 | -2d | 0d |  | QA - 2 | 16h |  |
| 393 | 1.7.14 | Quality Test Node Authentication |  | 3.75d | 2011-11-28 08:00 | 2011-12-01 15:00 | 388FF, 392 |  |  | 2011-11-07 08:00 | 2011-11-14 17:00 | 0d? | 2011-11-07 08:00 | 2011-11-14 17:00 | -2d | 0d |  | QA - 2 | 30h |  |
| 394 | 1.8 | **IP - Document Router** |  | 131d | 2011-06-20 08:00 A | 2011-12-27 17:00 |  | 38% | 81.75d | 2011-06-20 08:00 | 2011-11-03 17:00 | 96d | 2011-06-20 08:00 | 2011-11-15 17:00 | 0d |  |  |  | 1076h | 575h |
| 395 | 1.8.1 | Design Router configurations mechanism |  | 10d | 2011-08-05 08:00 A | 2011-08-18 17:00 | 337 | 90% | 1d | 2011-09-14 08:00 | 2011-10-12 17:00 | 20d | 2011-08-30 08:00 | 2011-09-27 17:00 | -1.75d | 0d | start no earlier than 2011-08-05 08:00 | ARCH - 3 | 80h | 72h |
| 396 | 1.8.2 | Develop XDS Document Metadata Builder |  | 10d | 2011-08-22 08:00 | 2011-09-02 17:00 | 395FS+1d |  |  | 2011-10-13 08:00 | 2011-10-24 12:00 | 7.5d | 2011-09-19 08:00 | 2011-09-30 17:00 | 14.42d | 0d |  | ESD [200%] | 120h |  |
| 397 | 1.8.3 | Finish up NAV Sender development |  | 1.67d | 2011-06-20 08:00 A | 2011-06-21 14:20 A |  | 100% |  | 2011-06-20 08:00 | 2011-06-21 14:20 | 1.67d | 2011-06-20 08:00 | 2011-06-21 14:20 |  |  | start no earlier than 2011-06-20 08:00 | ESD [300%] | 40h | 40h |
| 398 | 1.8.4 | Develop OpenXDS Interaction (register, store) |  | 25d | 2011-08-01 08:00 A | 2011-09-02 17:00 | 396FF | 60% | 10d | 2011-07-28 13:00 | 2011-10-24 12:00 | 60d | 2011-07-11 08:00 | 2011-10-07 12:00 | 57.75d | 8.75d | start no earlier than 2011-08-01 08:00 | ESD | 120h | 68h |
| 399 | 1.8.5 | Create NAV documentation |  | 10d | 2011-08-22 08:00 | 2011-09-02 17:00 | 397 |  |  | 2011-08-22 08:00 | 2011-08-26 17:00 | 5d | 2011-08-22 08:00 | 2011-08-26 17:00 | 69d | 8.75d | finish no earlier than 2011-09-02 17:00 | ESD [25%] | 20h |  |
| 400 | 1.8.6 | OpenXDS Development - Security |  | 45.75d | 2011-06-27 08:00 A | 2011-09-16 15:00 | 407SS | 55% | 20.75d | 2011-07-05 08:00 | 2011-08-25 12:00 | 37.5d | 2011-06-27 08:00 | 2011-08-24 17:00 | 91.67d | 0d | start no earlier than 2011-06-27 08:00 | ESD [200%] | 600h | 389h |
| 401 | 1.8.7 | Quality Test XDS Document Metadata Builder |  | 28d | 2011-11-16 08:00 | 2011-12-27 17:00 | 396, 343 |  |  | 2011-10-24 13:00 | 2011-11-02 12:00 | 7d | 2011-10-03 08:00 | 2011-10-12 17:00 | -1d | 0d | start no later than 2011-11-16 08:00 | QA - 1 [21.9%]; QA - 2 | 56h |  |
| 402 | 1.8.8 | Quality Test NAV Sender |  | 2d | 2011-08-03 08:00 A | 2011-08-05 17:00 | 397 | 50% | 1d |  |  |  | 2011-08-03 08:00 | 2011-08-03 17:00 | 120.42d | 97d |  | QA - 1 [75%] | 8h | 6h |
| 403 | 1.8.9 | Quality Test OpenXDS Interaction |  | 2d | 2011-12-01 15:00 | 2011-12-05 15:00 | 398, 393 |  |  | 2011-10-24 13:00 | 2011-11-02 12:00 | 7d | 2011-10-07 13:00 | 2011-10-19 12:00 | -2d | 0d |  | QA - 2 | 16h |  |
| 404 | 1.8.10 | Quality Review of Documentation for NAV |  | 3d | 2011-12-15 08:00 | 2011-12-19 17:00 | 399, 416 |  |  | 2011-09-15 08:00 | 2011-09-26 12:00 | 7.5d | 2011-09-06 08:00 | 2011-11-07 17:00 | -1d | 0d | finish no later than 2011-12-19 17:00 | QA - 2 | 16h |  |
| 405 | 1.8.11 | Quality Test OpenXDS Development (No QA Effort to be Expended - Unit Testing Only) | milestone | 0d | 2011-09-15 08:00 | 2011-09-15 08:00 | 400FS-10d |  |  | 2011-09-15 08:00 | 2011-11-03 17:00 | 35d | 2011-09-15 08:00 | 2011-11-03 17:00 | 93.42d | 70d | start no earlier than 2011-09-15 08:00 |  |  |  |

| ID | WBS | Task | Duration | Start | Finish | Predecessors | Complete | Remaining | Baseline start | Baseline finish | Baseline duration | Baseline 1 start | Baseline 1 finish | Total slack | Free slack | Constraint | Resources | Work | Actual work |
| --- | --- | --- | --- | --- | --- | --- | --- | --- | --- | --- | --- | --- | --- | --- | --- | --- | --- | --- | --- |
| 406 | 1.9 | **IP - Document Transfer** | 129d | 2011-06-13 08:00 A | 2011-12-15 17:00 |  | 38% | 80.16d | 2011-06-13 08:00 | 2011-11-22 17:00 | 113d | 2011-06-13 08:00 | 2011-12-30 17:00 | -1d | 0d |  |  | 410h | 136h |
| 407 | 1.9.1 | Design Pluggable Authorization Component for XDS Interface | 12.5d | 2011-06-29 08:00 A | 2011-07-18 12:00 A | 330FS+2d | 100% |  | 2011-06-27 08:00 | 2011-07-20 14:20 | 16.67d | 2011-06-29 08:00 | 2011-07-22 14:20 |  |  |  | ARCH - 3 | 100h | 100h |
| 408 | 1.9.2 | Create XDS Outbound Interface Specification (SDS) | 2d | 2011-07-18 13:00 A | 2011-07-20 12:00 A | 407 | 100% |  |  |  |  |  |  |  |  |  | ARCH - 3 | 16h | 16h |
| 409 | 1.9.3 | Design Secure Email Interface | 3.75d | 2011-08-19 08:00 | 2011-08-24 15:00 | 395 |  |  | 2011-07-20 14:20 | 2011-07-28 16:20 | 6.25d | 2011-07-22 14:20 | 2011-08-01 16:20 | -1.75d | 0d | start no earlier than 2011-08-05 08:00 | ARCH - 3 | 30h |  |
| 410 | 1.9.4 | Ability to send a secure email | 5d | 2011-06-13 08:00 A | 2011-06-17 17:00 A |  | 100% |  | 2011-06-13 08:00 | 2011-06-17 17:00 | 5d | 2011-06-13 08:00 | 2011-06-17 17:00 |  |  |  | ESD [50%] | 20h | 20h |
| 411 | 1.9.5 | Secure Email routing components | 9d | 2011-08-29 08:00 | 2011-09-09 17:00 | 409 |  |  | 2011-07-28 16:20 | 2011-08-04 16:20 | 5d | 2011-08-01 16:20 | 2011-08-12 17:00 | 57d | 5d | start no earlier than 2011-08-29 08:00 | ESD [275%] | 78h |  |
| 412 | 1.9.6 | Design Secure File Transfer Protocol Interface | 5d | 2011-08-24 08:00 | 2011-08-30 17:00 | 409 |  |  | 2011-10-25 08:00 | 2011-11-07 17:00 | 10d | 2011-08-01 16:20 | 2011-08-15 16:20 | -1d | 0d | start no later than 2011-08-24 08:00 | ARCH - 3 | 30h |  |
| 413 | 1.9.7 | Develop Secure File Transfer Protocol Interface | 5d | 2011-09-12 08:00 | 2011-09-16 17:00 | 412 |  |  | 2011-11-08 08:00 | 2011-11-15 17:00 | 5d | 2011-09-12 08:00 | 2011-09-16 17:00 | 56d | 0d | start no earlier than 2011-09-12 08:00 | ESD [200%] | 80h |  |
| 414 | 1.9.8 | Quality Test Ability to send a secure email | 1.25d | 2011-12-05 15:00 | 2011-12-06 17:00 | 410, 403 |  |  |  |  |  |  |  | -2d | 0d |  | QA - 2 | 8h |  |
| 415 | 1.9.9 | Quality Test Secure Email | 4d | 2011-12-06 08:00 | 2011-12-09 17:00 | 411, 414 |  |  |  |  |  |  |  | -1d | 0d | start no later than 2011-12-06 08:00 | QA - 2 | 24h |  |
| 416 | 1.9.10 | Quality Test Secure File Transfer Protocol Interface | 4d | 2011-12-12 08:00 | 2011-12-15 17:00 | 413, 415 |  |  |  |  |  |  |  | -1d | 0d |  | QA - 2 | 24h |  |
| 417 | 1.10 | **Clinical Data Warehouse (CDW)** | 87d | 2011-06-30 08:00 A | 2011-11-02 17:00 |  | 41% | 51.66d | 2011-06-27 08:00 | 2011-11-16 12:00 | 98.5d | 2011-06-30 08:00 | 2011-12-30 17:00 | 59.42d |  |  |  | 1390.17h | 562.15h |
| 418 | 1.10.1 | Prototype XML to RDF Converter | 5d | 2011-06-30 08:00 A | 2011-07-07 17:00 A | 329 | 100% |  |  |  |  |  |  |  |  | start no earlier than 2011-06-30 08:00 | ARCH - 4 | 40h | 40h |
| 419 | 1.10.2 | Design Schema and map Canonical to Data Warehouse format | 33.9d | 2011-06-30 08:00 A | 2011-08-17 17:00 A | 329 | 100% |  | 2011-06-29 08:00 | 2011-08-24 17:00 | 40d | 2011-06-30 08:00 | 2011-08-25 17:00 |  |  | finish no earlier than 2011-08-19 17:00 | ARCH - 1 [91.5%] | 133.37h | 133.37h |
| 420 | 1.10.3 | Design free text indexes and views | 21d | 2011-08-22 08:00 | 2011-09-20 17:00 | 382FS-4d |  |  |  |  |  |  |  | -2d | 0d | start no later than 2011-08-22 08:00 | ARCH - 4; ARCH - 1 [67.5%] | 268h |  |
| 421 | 1.10.4 | Integrate free text indexes and views | 3d | 2011-09-07 08:00 | 2011-09-09 17:00 | 420SS+11d |  |  |  |  |  |  |  | 96.42d | 4.4d |  | ESD [41.7%] | 10h |  |
| 422 | 1.10.5 | Design ETL- IP to CDW | 12d | 2011-07-18 08:00 A | 2011-08-12 11:12 A | 331FS+5d | 100% |  | 2011-09-29 08:00 | 2011-10-27 17:00 | 20d | 2011-09-29 08:00 | 2011-10-27 17:00 |  |  | start no earlier than 2011-07-18 08:00 | ARCH - 4 | 28.8h | 28.8h |
| 423 | 1.10.6 | Create Non-canonical to CDW transform and integrate with Canonical to CDW transform | 13d | 2011-08-19 08:00 | 2011-09-07 17:00 | 419FS+1d |  |  |  |  |  |  |  | 1d |  | start no later than 2011-08-22 08:00 | ARCH - 4 [40%] | 40h |  |
| 424 | 1.10.7 | Develop ETL - IP to CDW | 8d | 2011-08-15 11:12 | 2011-09-16 11:12 | 422FS+1d |  |  | 2011-10-28 08:00 | 2011-11-03 17:00 | 5d | 2011-10-31 08:00 | 2011-11-10 17:00 | 25.6d | 0d |  | ESD [125%] | 80h |  |
| 425 | 1.10.8 | Test ETL - IP to CDW | 5d | 2011-10-27 08:00 | 2011-11-02 17:00 | 424, 428 |  |  | 2011-11-04 08:00 | 2011-11-16 12:00 | 7.5d | 2011-12-01 08:00 | 2011-12-12 12:00 | -2d | 0d |  | QA - 2 | 40h |  |
| 426 | 1.10.9 | Design CDW Security | 11d | 2011-09-07 08:00 | 2011-09-21 17:00 |  |  |  | 2011-10-13 08:00 | 2011-11-09 17:00 | 20d | 2011-09-29 08:00 | 2011-10-27 17:00 | 88.42d | 0d | start no earlier than 2011-09-07 08:00 | ARCH - 3 | 80h |  |
| 427 | 1.10.10 | Develop Clinical Data Warehouse (Virtuoso) | 25d | 2011-07-18 08:00 A | 2011-08-22 08:00 | 419FF | 92% | 2d | 2011-07-28 08:00 | 2011-09-30 17:00 | 46d | 2011-07-25 08:00 | 2011-09-30 17:00 | -1d | 0d | start no earlier than 2011-07-11 08:00 | ESD [200%] | 390h | 359.98h |
| 428 | 1.10.11 | Data Warehouse Testing | 45d | 2011-08-23 08:00 | 2011-10-26 17:00 | 427, 371 |  |  | 2011-09-15 08:00 | 2011-11-03 17:00 | 35d | 2011-11-30 08:00 | 2011-12-30 17:00 | -2d | 0d | start no later than 2011-10-05 08:00 | QA - 2 | 280h |  |
| 429 | 1.11 | **QA** | 134d | 2011-06-20 08:00 A | 2011-12-30 17:00 |  | 7% | 124.9d | 2011-06-20 08:00 | 2012-02-03 17:00 | 159d | 2011-06-20 08:00 | 2012-01-20 17:00 | 60.42d |  |  |  | 776h | 208h |
| 430 | 1.11.1 | Manual Build, Configuration, Installation/Deployment for Testing | 99d | 2011-06-20 08:00 A | 2011-12-29 17:00 |  | 8% | 91d | 2011-06-20 08:00 | 2011-09-09 17:00 | 18d | 2011-06-20 08:00 | 2011-11-16 17:00 | 61.42d |  | start no earlier than 2011-06-20 08:00 | QA - 1 | 200h | 64h |
| 431 | 1.11.2 | Test Automation | 105d | 2011-07-13 08:00 A | 2011-12-30 17:00 |  | 12% | 92d | 2011-06-20 08:00 | 2011-10-14 17:00 | 9.6w | 2011-06-20 08:00 | 2012-01-20 17:00 | 60.42d |  | start no earlier than 2011-07-13 08:00 | QA - 1 | 336h | 104h |
| 432 | 1.11.3 | Test and results documentation/reporting | 97d | 2011-06-20 08:00 A | 2011-12-30 17:00 |  | 5% | 92d | 2011-06-20 08:00 | 2011-11-10 17:00 | 21d | 2011-06-20 08:00 | 2011-11-09 17:00 | 60.42d |  | start no earlier than 2011-06-20 08:00 | QA - 1 | 112h | 40h |
| 433 | 1.11.4 | Security Testing | 82d | 2011-09-01 08:00 | 2011-12-30 17:00 |  |  |  | 2011-09-15 08:00 | 2012-02-03 17:00 | 40d | 2011-07-19 08:00 | 2011-10-12 17:00 | 60.42d |  | start no earlier than 2011-09-01 08:00 | QA - 1 [25%] | 128h |  |

Notes:
- 417: ·Design Support for ad-hoc queries and report generation on Clinical Data Warehouse (no implementation)/ ·Data Warehouse will support all data elements extracted from TRANSCEND/ ·Q - CDW being deployed @ NCI/ ·CDW - GRID Security Enabled

| ID | WBS | Task | Type | Duration | Start | Finish | Predecessors | Baseline start | Baseline finish | Baseline duration | Baseline 1 start | Baseline 1 finish | Total slack | Free slack | Constraint | Resources | Work |
| --- | --- | --- | --- | --- | --- | --- | --- | --- | --- | --- | --- | --- | --- | --- | --- | --- | --- |
| 434 | 1.12 | **Pre-Deployment** |  | 4d | 2011-09-21 08:00 | 2011-09-26 17:00 |  |  |  |  |  |  | 125.42d |  |  |  | 24h |
| 435 | 1.12.1 | Document TRANSCEND Deployment Architecture |  | 4d | 2011-09-21 08:00 | 2011-09-26 17:00 |  |  |  |  |  |  | 125.42d |  | start no earlier than 2011-09-21 08:00 | ARCH - 3 | 24h |
| 436 | 1.7 | **Software Development Project Close Out** |  | 15d | 2011-12-06 08:00 | 2011-12-27 17:00 | 32FS-15d | 2011-11-23 08:00 | 2011-12-14 17:00 | 15d | 2011-12-30 17:00 | 2012-01-20 17:00 | 63.42d |  |  |  | 116.67h |
| 437 | 1.13.1 | Ensure that all artifacts are checked into NCI subversion | milestone | 0d | 2011-12-06 08:00 | 2011-12-06 08:00 |  |  |  |  | 2011-12-30 17:00 | 2011-12-30 17:00 | 78.42d |  |  |  |  |
| 438 | 1.7.1 | Final Deliverables Accepted |  | 4d | 2011-12-06 08:00 | 2011-12-09 17:00 |  | 2011-11-23 08:00 | 2011-11-29 17:00 | 4d | 2012-01-02 08:00 | 2012-01-05 17:00 | 74.42d |  |  | Hurley [25%] | 6.67h |
| 439 | 1.7.2 | Final Deliverables Published |  | 15d | 2011-12-06 08:00 | 2011-12-27 17:00 |  | 2011-11-23 08:00 | 2011-12-14 17:00 | 15d | 2012-01-02 08:00 | 2012-01-20 17:00 | 63.42d |  |  | Hurley [25%] | 30h |
| 440 | 1.7.3 | Project Summary Report Completed |  | 15d | 2011-12-06 08:00 | 2011-12-27 17:00 |  | 2011-11-23 08:00 | 2011-12-14 17:00 | 15d | 2012-01-02 08:00 | 2012-01-20 17:00 | 63.42d | 0d |  | Hurley [75%] | 80h |
| 441 | 1.7.4 | Project Complete | milestone | 0d | 2011-12-27 17:00 | 2011-12-27 17:00 | 440 | 2011-12-14 17:00 | 2011-12-14 17:00 | 0d | 2012-01-20 17:00 | 2012-01-20 17:00 | 63.42d |  |  |  |  |
| 442 | 1.14 | **Deployment** |  | 40d | 2011-12-28 08:00 | 2012-02-21 17:00 | 32 | 2012-02-06 08:00 | 2012-03-30 17:00 | 40d | 2011-12-28 08:00 | 2012-02-24 17:00 | 0d |  |  |  | 400h |
| 443 | 1.14.1 | Architecture Deployment Support |  | 40d | 2011-12-28 08:00 | 2012-02-21 17:00 |  | 2012-02-06 08:00 | 2012-03-30 17:00 | 40d | 2012-01-02 08:00 | 2012-02-24 17:00 | 0d |  | start no earlier than 2011-11-01 08:00 | ARCHDEPLOYRES- 1 [25%] | 80h |
| 444 | 1.14.2 | Site Deployment - ESD |  | 6.67d | 2011-12-28 08:00 | 2012-01-05 14:20 |  | 2012-02-06 08:00 | 2012-02-14 14:20 | 6.67d | 2012-01-02 08:00 | 2012-01-10 14:20 | 56.75d |  | start no earlier than 2011-11-01 08:00 | ESDDEPLOYRES [300%] | 160h |
| 445 | 1.14.3 | Integration Testing |  | 10d | 2011-12-28 08:00 | 2012-01-10 17:00 |  | 2012-02-06 08:00 | 2012-03-01 10:02 | 18.25d | 2011-12-28 08:00 | 2012-01-18 08:18 | 53.42d |  |  | QADEPLOYRES | 80h |
| 446 | 1.14.4 | Pre-release support/testing Alpha, Beta, etc |  | 10d | 2011-12-28 08:00 | 2012-01-10 17:00 |  | 2011-09-30 08:00 | 2011-10-14 17:00 | 10d | 2011-09-30 08:00 | 2011-10-14 17:00 | 53.42d |  | start no earlier than 2011-09-30 08:00 | QADEPLOYRES2 | 80h |

Notes:
- 442: ·Deployment of caCIS Integration Platform into TRANSCEND Environemnt / ·Integration and configuration of software at TRANSCEND (IP, SA)
