# caCIS-EpicIntegration

Schedule from MS Project, 2012-03-01 to 2013-04-15, A marks actual dates.
NIH\NCI

## Calendars

- Standard: Mon-Fri 08:00-12:00, 13:00-17:00; Sat-Sun off. Exceptions (off unless hours are given): 2012-09-03, 2012-10-08, 2012-11-12, 2012-11-22, 2012-12-25, 2013-01-01.

## Resources

| Resource |
| --- |
| ESSRT |
| caCIS Team |
| UCSF |
| Modi |
| McKenzie |
| Nalamala |
| caCIS QA team |
| caCIS Dev team |
| UCSF team |
| ARB |
| THE Force team |
| THE Force Infrastructure team |
| Shalley |
| JD |
| Greg |

## Schedule

| ID | WBS | Task | Type | Duration | Start | Finish | Predecessors | Complete | Remaining | Total slack | Constraint | Resources | Work | Actual work |
| --- | --- | --- | --- | --- | --- | --- | --- | --- | --- | --- | --- | --- | --- | --- |
| 1 | 1 | **caCIS O & M** |  | 287d? | 2012-03-01 A | 2013-04-15 |  | 55% | 127.76d? | 0d |  |  | 1077.5h | 749.42h |
| 2 | 1.1 | Development Environment Set up | milestone | 0d | 2012-03-01 | 2012-03-01 |  |  |  | 217d | start no earlier than 2012-03-01 |  |  |  |
| 3 | 1.2 | QA Environment Set up | milestone | 0d | 2012-04-30 | 2012-04-30 |  |  |  | 175d | start no earlier than 2012-04-30 |  |  |  |
| 4 | 1.3 | RC1 - SA Security, CDA Header Fix, Error Handling Fixes, Deployment Guide Updates | milestone | 0d | 2012-04-20 | 2012-04-20 |  |  |  | 181d | start no earlier than 2012-04-20 |  |  |  |
| 5 | 1.4 | MR1 - RC1 Bug Fixes, Re-deployment Guide | milestone | 0d | 2012-06-27 | 2012-06-27 |  |  |  | 133d | start no earlier than 2012-06-27 |  |  |  |
| 6 | 1.5 | MR2 - Security Administration Module, SFTP Support | milestone | 0d | 2012-07-16 | 2012-07-16 |  |  |  | 120d | start no earlier than 2012-07-16 |  |  |  |
| 7 | 1.6 | MR3 - MR2 Fixes, Async CDW Load, App. Scan Fixes, 508 Compliance Fixes | milestone | 0d | 2012-08-31 | 2012-08-31 |  |  |  | 86d | start no earlier than 2012-08-31 |  |  |  |
| 8 | 1.7 | MR3 QA (support) |  | 38d | 2012-09-10 | 2012-11-01 |  |  |  | 61d | start no earlier than 2012-09-10 |  |  |  |
| 9 | 1.8 | **caCIS - Epic Integration (MR4)** |  | 137d | 2012-06-05 A | 2012-12-18 A |  | 100% |  |  |  |  | 486.3h | 486.3h |
| 10 | 1.8.1 | **Architecture and Design** |  | 59d | 2012-06-05 A | 2012-08-24 A |  | 100% |  |  |  |  | 165.1h | 165.1h |
| 11 | 1.8.1.1 | Create draft architecture |  | 8d | 2012-06-05 A | 2012-06-14 A |  | 100% |  |  |  | ESSRT [25%] | 16h | 16h |
| 12 | 1.8.1.2 | Seek agreement on architecture with UCSF |  | 15d | 2012-06-05 A | 2012-06-25 A |  | 100% |  |  |  | ESSRT [25%] | 30h | 30h |
| 13 | 1.8.1.3 | Review and approve architecture |  | 1d | 2012-07-25 A | 2012-07-25 A |  | 100% |  |  | start no earlier than 2012-07-25 | ARB | 8h | 8h |
| 14 | 1.8.1.4 | Finalize HL7v2 Handshake Parameters |  | 27d | 2012-07-18 A | 2012-08-23 A | 13FS-6d | 100% |  |  |  | Modi [10%]; UCSF team [10%]; Nalamala [3.1%] | 49.95h | 49.95h |
| 15 | 1.8.1.5 | Finalize Interface Security |  | 27d | 2012-07-18 A | 2012-08-23 A | 13FS-6d | 100% |  |  |  | UCSF team [10%]; Modi [10%]; Nalamala [3.1%] | 49.95h | 49.95h |
| 16 | 1.8.1.6 | Finalize Overall Design Document |  | 1d | 2012-08-24 A | 2012-08-24 A | 14, 15 | 100% |  |  |  | Modi [40%] | 3.2h | 3.2h |
| 17 | 1.8.1.7 | Create CDA to MDM mapping document |  | 5d | 2012-07-26 A | 2012-08-01 A | 13 | 100% |  |  |  | McKenzie [20%] | 8h | 8h |
| 18 | 1.8.2 | **Development** |  | 63d | 2012-08-09 A | 2012-11-07 A |  | 100% |  |  |  |  | 173.2h | 173.2h |
| 19 | 1.8.2.1 | Complete Mirth Configurations |  | 5d | 2012-08-27 A | 2012-08-31 A | 16 | 100% |  |  |  | Nalamala [50%] | 20h | 20h |
| 20 | 1.8.2.2 | Mirth Channel Development |  | 9d | 2012-09-04 A | 2012-09-14 A | 19 | 100% |  |  |  | Nalamala [50%] | 36h | 36h |
| 21 | 1.8.2.3 | Update deployment Guide (on Wiki, shared with MR3) |  | 2d | 2012-11-06 A | 2012-11-07 A | 20, 8 | 100% |  |  | start no earlier than 2012-11-06 | Nalamala [50%] | 8h | 8h |
| 22 | 1.8.2.4 | Develop CDA to HL7v2 MDM transform |  | 20d | 2012-08-09 A | 2012-09-06 A | 17FS+5d | 100% |  |  |  | McKenzie [30%] | 48h | 48h |
| 23 | 1.8.2.5 | Conduct HL7v2 MDM Transform Unit Testing |  | 4d | 2012-09-07 A | 2012-09-12 A | 22 | 100% |  |  |  | Modi [50%]; McKenzie [25%] | 24h | 24h |
| 24 | 1.8.2.6 | Conduct E2E Development Testing |  | 5d | 2012-09-19 A | 2012-09-25 A | 19, 20, 22 | 100% |  |  | start no earlier than 2012-09-19 | Nalamala [25%]; Modi [50%] | 30h | 30h |
| 25 | 1.8.2.7 | Fixes to CDA to HL7v2 MDM transform |  | 2d | 2012-09-26 A | 2012-09-27 A | 24 | 100% |  |  | start no earlier than 2012-09-26 | Nalamala [25%] | 4h | 4h |
| 26 | 1.8.2.8 | Retest |  | 1d | 2012-09-28 A | 2012-09-28 A | 25 | 100% |  |  |  | Modi [40%] | 3.2h | 3.2h |

| ID | WBS | Task | Type | Duration | Start | Finish | Predecessors | Complete | Remaining | Total slack | Constraint | Resources | Work | Actual work |
| --- | --- | --- | --- | --- | --- | --- | --- | --- | --- | --- | --- | --- | --- | --- |
| 27 | 1.8.3 | **Testing (App. QA)** |  | 19d | 2012-11-21 A | 2012-12-18 A |  | 100% |  |  |  |  | 136h | 136h |
| 28 | 1.8.3.1 | Tag sent to QA | milestone | 0d | 2012-11-21 A | 2012-11-21 A |  | 100% |  |  | start no earlier than 2012-11-14 |  |  |  |
| 29 | 1.8.3.2 | Conduct Integration Testing (QA) - Round 1 |  | 17d | 2012-11-26 A | 2012-12-18 A | 18, 28 | 100% |  |  | start no earlier than 2012-11-26 | caCIS QA team | 136h | 136h |
| 30 | 1.8.4 | QA support |  | 15d | 2012-11-21 A | 2012-12-12 A | 27SS | 100% |  |  |  | Modi [10%] | 12h | 12h |
| 31 | 1.9 | **Trial Summary note and NHIN Compliance (MR5)** |  | 79d? | 2012-11-08 A | 2013-03-04 | 18 | 89% | 8.35d? | 30d |  |  | 307.2h | 263.12h |
| 32 | 1.9.1 | **Development** |  | 64d? | 2012-11-08 A | 2013-02-12 A |  | 100% |  |  |  |  | 215.2h | 215.2h |
| 33 | 1.9.1.1 | **Trial Summary note** |  | 60d | 2012-11-15 A | 2013-02-12 A |  | 100% |  |  |  |  | 94.4h | 94.4h |
| 34 | 1.9.1.1.1 | Update Semantic Adapter design |  | 7.5d | 2012-11-15 A | 2012-12-12 A | 41 | 100% |  |  |  | Modi [20%] | 12h | 12h |
| 35 | 1.9.1.1.2 | Code Semantic Adapter changes |  | 8d | 2013-01-14 A | 2013-01-23 A | 34, 42 | 100% |  |  | start no earlier than 2013-01-14 | Nalamala [35%] | 22.4h | 22.4h |
| 36 | 1.9.1.1.3 | Unit Test (generic message support) |  | 3d | 2013-01-24 A | 2013-01-28 A | 35, 45 | 100% |  |  | start no earlier than 2013-01-21 | Modi [50%] | 12h | 12h |
| 37 | 1.9.1.1.4 | Develop example Trial Summary note |  | 10d | 2013-01-23 A | 2013-02-07 A |  | 100% |  |  | start no earlier than 2013-01-23 | Greg [50%] | 40h | 40h |
| 38 | 1.9.1.1.5 | Test with example Trial Summary note |  | 2d | 2013-02-07 A | 2013-02-11 A | 36, 37 | 100% |  |  |  | Greg [50%] | 8h | 8h |
| 39 | 1.9.1.1.6 | example Trial Summary note provided to UCSF | milestone | 0d | 2013-02-12 A | 2013-02-12 A | 38 | 100% |  |  | start no earlier than 2013-02-12 |  |  |  |
| 40 | 1.9.1.2 | **Secure Email - NHIN Compliance** |  | 61d? | 2012-11-08 A | 2013-02-06 A |  | 100% |  |  |  |  | 120.8h | 120.8h |
| 41 | 1.9.1.2.1 | Update design document for XDM compliant header |  | 4d | 2012-11-08 A | 2012-11-14 A |  | 100% |  |  |  | Modi [50%] | 16h | 16h |
| 42 | 1.9.1.2.2 | Develop code for populating header metadata |  | 9d | 2012-11-15 A | 2012-12-05 A | 41 | 100% |  |  |  | Nalamala [60%] | 43.2h | 43.2h |
| 43 | 1.9.1.2.3 | Address design issues with repeated entries and previous implementation not matching design documents |  | 1d? | 2012-12-07 A | 2012-12-07 A |  | 100% |  |  | start no earlier than 2012-12-07 |  |  |  |
| 44 | 1.9.1.2.4 | Code revised design for populating INDEX and README |  | 4d | 2012-12-14 A | 2012-12-19 A |  | 100% |  |  | start no earlier than 2012-12-14 | Nalamala [50%] | 16h | 16h |
| 45 | 1.9.1.2.5 | Unit Test |  | 8d | 2012-12-20 A | 2013-01-02 A | 44 | 100% |  |  |  | Modi [40%] | 25.6h | 25.6h |
| 46 | 1.9.1.2.6 | Bug fix (from development testing) and re-test |  | 4d | 2013-01-07 A | 2013-01-10 A | 45 | 100% |  |  | start no earlier than 2013-01-07 | Nalamala [25%]; Modi [25%] | 16h | 16h |
| 47 | 1.9.1.2.7 | Documentation Updates |  | 1d | 2013-02-06 A | 2013-02-06 A | 44 | 100% |  |  | start no earlier than 2013-02-06 | Nalamala [50%] | 4h | 4h |
| 48 | 1.9.1.3 | **caCIS-213 (intermittent trust anchor issues)** |  | 9d | 2013-01-29 A | 2013-02-08 A |  | 100% |  |  |  |  |  |  |
| 49 | 1.9.1.3.1 | Analysis and proposed solution |  | 5d | 2013-01-29 A | 2013-02-04 A |  | 100% |  |  | start no earlier than 2013-01-29 |  |  |  |
| 50 | 1.9.1.3.2 | Coding |  | 2d | 2013-02-05 A | 2013-02-06 A | 49 | 100% |  |  |  |  |  |  |
| 51 | 1.9.1.3.3 | Test |  | 2d | 2013-02-07 A | 2013-02-08 A | 50 | 100% |  |  |  |  |  |  |

| ID | WBS | Task | Type | Duration | Start | Finish | Predecessors | Complete | Remaining | Total slack | Free slack | Constraint | Resources | Work | Actual work |
| --- | --- | --- | --- | --- | --- | --- | --- | --- | --- | --- | --- | --- | --- | --- | --- |
| 52 | 1.9.1.4 | **Open Issues** |  | 0d? | 2012-12-18 A | 2012-12-18 A |  | 100% |  |  |  |  |  |  |  |
| 53 | 1.9.1.4.1 | Ensure clinical notes stored in XDS {not stored unless sent using XDS, waiting for direction} | milestone | 0d? | 2012-12-18 A | 2012-12-18 A |  | 100% |  |  |  |  |  |  |  |
| 54 | 1.9.1.4.2 | Will performance improvements to PCO load apply to Trial Summary note? {yes} | milestone | 0d? | 2012-12-18 A | 2012-12-18 A |  | 100% |  |  |  |  |  |  |  |
| 55 | 1.9.2 | **QA [schedule not provided by QA]** |  | 15d | 2013-02-12 A | 2013-03-04 |  | 50% | 7.5d | 20d | 0d |  |  | 80h | 40h |
| 56 | 1.9.2.1 | Tag sent to QA | milestone | 0d | 2013-02-12 A | 2013-02-12 A | 32 | 100% |  |  |  | start no earlier than 2013-02-12 |  |  |  |
| 57 | 1.9.2.2 | Conduct Integration Testing (QA) - focused on UCSF use case |  | 10d | 2013-02-19 A | 2013-03-04 | 56 | 50% | 5d | 15d |  | start no earlier than 2013-02-19 | caCIS QA team | 80h | 40h |
| 58 | 1.9.3 | QA support |  | 15d | 2013-02-12 A | 2013-03-04 | 55SS | 66% | 5.1d | 25d |  |  | Modi [10%] | 12h | 7.92h |
| 59 | 1.9.4 | Available for integration testing at UCSF | milestone | 0d | 2013-03-04 | 2013-03-04 | 55 |  |  | 25d |  |  |  |  |  |
| 60 | 1.10 | **Queueing and parallel processing (RC1)** |  | 45d? | 2013-02-12 | 2013-04-15 | 32 |  |  | 0d |  |  |  | 150h |  |
| 61 | 1.10.1 | QA reliability testing (against MR5) |  | 10d? | 2013-03-05 | 2013-03-18 | 55 |  |  | 15d |  |  | caCIS QA team | 80h |  |
| 62 | 1.10.2 | **Development** |  | 15d | 2013-02-12 | 2013-03-04 |  |  |  | 0d |  |  |  | 70h |  |
| 63 | 1.10.2.1 | **Queueing and parallel processing (queue reliability)** |  | 15d | 2013-02-12 | 2013-03-04 |  |  |  | 0d |  |  |  | 70h |  |
| 64 | 1.10.2.1.1 | Initial research and analysis under MR5 | milestone | 0d | 2013-02-12 | 2013-02-12 |  |  |  | 0d |  |  |  |  |  |
| 65 | 1.10.2.1.2 | Analysis and design |  | 10d | 2013-02-12 | 2013-02-25 | 64 |  |  | 0d |  |  | Modi [50%] | 40h |  |
| 66 | 1.10.2.1.3 | Coding and test |  | 5d | 2013-02-26 | 2013-03-04 | 65 |  |  | 0d |  |  | Nalamala [50%]; Modi [25%] | 30h |  |
| 67 | 1.10.3 | QA |  | 30d? | 2013-03-05 | 2013-04-15 | 62 |  |  | 0d |  |  |  |  |  |
| 68 | 1.10.4 | QA support |  | 30d? | 2013-03-05 | 2013-04-15 | 67SS |  |  | 0d |  |  |  |  |  |
| 69 | 1.10.5 | AppScan |  | 30d? | 2013-02-12 | 2013-03-25 |  |  |  | 10d |  |  |  |  |  |
| 70 | 1.11 | **OSDI** |  | 25d? | 2013-02-19 | 2013-03-25 |  |  |  | 12d | 0d |  |  | 90h |  |
| 71 | 1.11.1 | Initial contact, checklist, kickoff |  | 10d? | 2013-02-19 | 2013-03-04 |  |  |  | 12d | 0d | start no earlier than 2013-02-19 |  |  |  |
| 72 | 1.11.2 | Additional tasks not detailed yet |  | 15d? | 2013-03-05 | 2013-03-25 | 71 |  |  | 12d |  |  | Modi [50%]; Nalamala [25%] | 90h |  |
| 73 | 1.12 | Update documentation to reflect CCD-plus |  | 1d? | 2013-03-05 | 2013-03-05 | 71 |  |  | 29d |  |  |  |  |  |
| 74 | 1.13 | Update SPARQL queries in the CDW user guide for Trial Summary |  | 8d | 2013-03-05 | 2013-03-14 | 66 |  |  | 19d | 7d |  | Modi [50%] | 32h |  |
| 75 | 1.14 | Provide analysis of approach for validating ontologies in RDF store (CDW) against canonical (EVS, caDSR) |  | 3d | 2013-03-26 | 2013-03-28 | 74, 70 |  |  | 12d |  |  | Modi [50%] | 12h |  |
| 76 | 1.15 | End-To-End Dev. Testing with THE Force (OUT OF SCOPE) | milestone | 0d | 2013-03-29 | 2013-03-29 |  |  |  | 12d |  | start no earlier than 2013-03-29 |  |  |  |
| 77 | 2 | END caCIS O & M | milestone | 0d | 2013-03-29 | 2013-03-29 |  |  |  | 12d |  | start no earlier than 2013-03-29 |  |  |  |
