# caCIS_Project_Schedule

Schedule from MS Project XML, 2011-03-28 to 2012-01-02, A marks actual dates.

## Calendars

- Standard: Mon-Fri 08:00-12:00, 13:00-17:00; Sat-Sun off. Exceptions (off unless hours are given): 2011-07-04, 2011-09-05, 2011-10-10, 2011-11-11, 2011-11-24, 2011-12-26.

## Resources

| Resource |
| --- |
| ANA - 1 |
| ARCH - 1 |
| ARCH - 2 |
| ARCH - 3 |
| ARCH - 4 |
| ARCH - 5 |
| ARCH - 6 |
| ARCH - 7 |
| ARCHDEPLOYRES- 1 |
| Andonyadis |
| CDO |
| Cabral |
| Chintalapati |
| ESD |
| ESDDEPLOYRES |
| Gann |
| Hurley |
| Joshi |
| NCI |
| Parnell |
| Phillips |
| Pierce |
| QA - 1 |
| QA - 2 |
| QA - 3 |
| QADEPLOYRES |
| QADEPLOYRES2 |
| SAIC-F |
| Shalley |
| Shirley |
| Tech Writer |
| Undale |

## Schedule

| ID | WBS | Task | Type | Duration | Start | Predecessors | Complete | Actual finish | Total slack | Constraint | Text1 |
| --- | --- | --- | --- | --- | --- | --- | --- | --- | --- | --- | --- |
| 1 | 1 | **caCIS Project** |  | 0d | 2011-03-28 |  | 96% |  | 0d |  |  |
| 2 | 1.1 | **Milestones** |  | 0d | 2011-06-29 |  | 50% |  | 0d |  |  |
| 3 | 1.1.1 | Solution Scope Approved | milestone | 0h | 2011-07-12 A | 430 | 100% | 2011-07-12 |  |  | Completed |
| 4 | 1.1.2 | **TRANSCEND Interface** |  | 0d | 2011-08-04 |  | 100% | 2011-09-16 |  |  |  |
| 5 | 1.1.2.1 | TRANSCEND Interface Architecture Complete | milestone | 0h | 2011-08-04 A | 441FF | 100% | 2011-08-04 |  |  | Completed |
| 6 | 1.1.2.2 | TRANSCEND Interface Development Complete | milestone | 0h | 2011-09-16 A | 446 | 100% | 2011-09-16 |  |  | Completed |
| 7 | 1.1.3 | **Modeling and Semantic Mapping** |  | 0d | 2011-10-19 |  | 100% | 2011-11-01 |  |  |  |
| 8 | 1.1.3.1 | Canonical Model Complete | milestone | 0h | 2011-10-19 A | 458, 460, 459, 457, 462, 461 | 100% | 2011-10-19 |  | start no earlier than 2011-10-18 | Completed |
| 9 | 1.1.3.2 | Mapping Architecture Complete (Includes Transforms) | milestone | 0h | 2011-10-19 A | 461, 465, 462, 466, 464 | 100% | 2011-10-19 |  |  | Completed |
| 10 | 1.1.3.3 | Mapping Development Complete | milestone | 0h | 2011-11-01 A | 468, 471, 472, 469, 467 | 100% | 2011-11-01 |  |  | Completed |
| 11 | 1.1.4 | **Semantic Adapter** |  | 0d | 2011-07-08 |  | 100% | 2011-10-19 |  |  |  |
| 12 | 1.1.4.1 | Semantic Adapter Architecture Complete (Includes Design Only Features) | milestone | 0h | 2011-10-19 A | 477, 478, 476 | 100% | 2011-10-19 |  |  | Completed |
| 13 | 1.1.4.2 | Semantic Adapter Development Complete | milestone | 0h | 2011-07-08 A | 475 | 100% | 2011-07-08 |  |  | Completed |
| 14 | 1.1.4.3 | Semantic Adapter Quality Complete | milestone | 0h | 2011-07-20 A | 480 | 100% | 2011-07-20 |  |  | Completed |
| 15 | 1.1.5 | **Integration Platform** |  | 0d | 2011-08-18 |  | 88% |  | 0d |  |  |
| 16 | 1.1.5.1 | Integration Platform Canonical Model Processor Architecture Complete | milestone | 0h | 2011-09-06 A | 482, 483, 485, 484 | 100% | 2011-09-06 |  |  | Completed |
| 17 | 1.1.5.2 | Integration Platform Canonical Model Processor Development Complete | milestone | 0h | 2011-09-30 A | 488, 490, 486, 489, 487 | 100% | 2011-09-30 |  |  | Completed |
| 18 | 1.1.5.3 | Integraton Platform Canonical Model Processor Quality Complete | milestone | 0h | 2011-10-25 A | 492 | 100% | 2011-10-25 |  |  | Completed |
| 19 | 1.1.5.4 | Integration Platform Document Router Architecture Complete | milestone | 0h | 2011-08-18 A | 495 | 100% | 2011-08-18 |  |  | Completed |
| 20 | 1.1.5.5 | Integration Platform Document Router Development Complete | milestone | 0h | 2011-09-30 A | 497, 499, 498, 496, 500 | 100% | 2011-09-30 |  |  | Completed |
| 21 | 1.1.5.6 | Integration Platform Document Router Quality Complete | milestone | 0h | 2011-12-23 A | 503, 502 | 100% | 2011-12-23 |  |  |  |
| 22 | 1.1.5.7 | Integration Platform Document Transfer Architecture Complete | milestone | 0h | 2011-08-29 A | 506, 505, 510, 507 | 100% | 2011-08-29 |  |  | Completed |
| 23 | 1.1.5.8 | Integration Platform Document Transfer Development Complete | milestone | 0h | 2011-09-16 A | 509, 511, 508 | 100% | 2011-09-16 |  |  | Completed |
| 24 | 1.1.5.9 | Integration Platform Document Transfer Quality Complete | milestone | 0h | 2011-12-23 | 503, 502 |  |  | 0d |  |  |

| ID | WBS | Task | Type | Duration | Start | Predecessors | Complete | Actual finish | Total slack | Constraint | Resources | Work | Text1 |
| --- | --- | --- | --- | --- | --- | --- | --- | --- | --- | --- | --- | --- | --- |
| 25 | 1.1.6 | **Clinical Data Warehouse** |  | 0d | 2011-06-29 |  | 100% | 2011-11-14 |  |  |  |  |  |
| 26 | 1.1.6.1 | Clinical Data Warehouse Evaluation and Selection Complete | milestone | 0h | 2011-06-29 A | 433 | 100% | 2011-06-29 |  |  |  |  | Completed |
| 27 | 1.1.6.2 | Clinical Data Warehouse Architecture Complete | milestone | 0h | 2011-09-22 A | 514, 513, 515, 518, 517, 523, 519 | 100% | 2011-09-22 |  |  |  |  | Completed |
| 28 | 1.1.6.3 | Clinical Data Warehouse Development Complete | milestone | 0h | 2011-09-30 A | 524, 520, 516 | 100% | 2011-09-30 |  |  |  |  | Completed |
| 29 | 1.1.6.4 | Clinical Data Warehouse Quality Complete | milestone | 0h | 2011-11-14 A | 522 | 100% | 2011-11-14 |  |  |  |  | Completed |
| 30 | 1.1.7 | **Quality Solution Testing** |  | 0d | 2011-12-23 |  |  |  | 0d |  |  |  |  |
| 31 | 1.1.7.1 | Performance Testing Quality Complete | milestone | 0h | 2011-12-23 | 549 |  |  | 0d |  |  |  |  |
| 32 | 1.1.7.2 | Integration Testing Quality Complete | milestone | 0h | 2011-12-23 | 550 |  |  | 0d |  |  |  |  |
| 33 | 1.1.7.3 | Quality Results and Wrap-up | milestone | 0h | 2011-12-30 | 551 |  |  | 0d |  |  |  |  |
| 34 | 1.1.8 | Solution Ready for TRANSCEND Deployment | milestone | 0h | 2011-12-30 | 15, 30, 4, 11, 7, 25 |  |  | 0d |  |  |  |  |
| 35 | 1.2 | **Project Management** |  | 0d | 2011-03-28 |  | 99% |  | 0d | finish no earlier than 2011-12-30 |  |  |  |
| 36 | 1.2.1 | **Scope Management** |  | 0d | 2011-03-28 |  | 99% |  | 0d |  |  |  |  |
| 37 | 1.2.1.1 | Create WBS per Proposed Solution |  | 5.12d | 2011-04-15 A |  | 100% | 2011-04-22 |  | start no earlier than 2011-04-15 | Hurley | 10h |  |
| 38 | 1.2.1.2 | Charter Approach Approved |  | 0h | 2011-03-28 A |  | 100% | 2011-03-28 |  |  |  |  |  |
| 39 | 1.2.1.3 | ESD Assessment and Initial LOE on Proposed Solution |  | 4.5d | 2011-04-15 A |  | 100% | 2011-04-21 |  | finish no earlier than 2011-04-21 | Phillips [20%]; Parnell [80%] | 36h |  |
| 40 | 1.2.1.4 | Quality Team Assessment and Initial LOE on Proposed Solution |  | 4.5d | 2011-04-15 A |  | 100% | 2011-04-21 |  | finish no earlier than 2011-04-21 | Pierce | 36h |  |
| 41 | 1.2.1.5 | Draft 1 - Architectural Solution Proposal and Feedback Due |  | 3.5d | 2011-04-15 A |  | 100% | 2011-04-20 |  | finish no earlier than 2011-04-20 | Andonyadis [26.67%]; Cabral [20%]; Shirley [26.67%]; Undale [26.67%] | 105h |  |
| 42 | 1.2.1.6 | Draft 2 - Solution Proposal Scope and Schedule Submitted to SAIC-F and Govt - For Final Review |  | 9.5d | 2011-04-19 A | 41FS-1d | 100% | 2011-05-02 |  | finish no earlier than 2011-05-02 | Hurley [30.3%]; Pierce [30.3%]; Chintalapati [15.15%]; Parnell [24.24%] | 250.8h |  |
| 43 | 1.2.1.7 | Proposed Solution Review |  | 3.5d | 2011-05-02 A | 260FS-3d | 100% | 2011-05-05 |  | finish no earlier than 2011-05-05 | Undale [26.67%]; Andonyadis [26.67%]; Shirley [26.67%]; Cabral [20%] | 90h |  |
| 44 | 1.2.1.8 | Project Solution Proposed Scope and Schedule Approval Meeting 1 |  | 0h | 2011-05-05 A | 43 | 100% | 2011-05-05 |  |  |  |  |  |
| 45 | 1.2.1.9 | Security Considerations for Proposed Solution |  | 5d | 2011-05-06 A | 44FS+1d | 100% | 2011-05-12 |  |  | Chintalapati | 20h |  |
| 46 | 1.2.1.10 | Security Considerations Review Meeting - 2nd Phase for Project Approval |  | 0h | 2011-05-13 A | 45 | 100% | 2011-05-13 |  | start no earlier than 2011-05-13 |  |  |  |
| 47 | 1.2.1.11 | **Update Proposed Solution (New Use Cases)** |  | 0d | 2011-05-13 | 46 | 100% | 2011-06-10 |  |  |  |  |  |
| 48 | 1.2.1.11.1 | Architecture elaboration of use cases |  | 11d | 2011-05-13 A |  | 100% | 2011-05-30 |  | start no earlier than 2011-05-13 |  |  |  |
| 49 | 1.2.1.11.2 | Architecture and Government Internal Review Meeting on proposed solution (new use cases) |  | 0h | 2011-05-18 A |  | 100% | 2011-05-18 |  | start no earlier than 2011-05-18 | Chintalapati; Shirley; Andonyadis |  |  |
| 50 | 1.2.1.11.3 | Architecture to circulate draft of elaborated use cases |  | 0h | 2011-05-19 A |  | 100% | 2011-05-19 |  | start no earlier than 2011-05-19 | Chintalapati |  |  |
| 51 | 1.2.1.11.4 | Team Feedback due on draft of elaborated use cases |  | 2d | 2011-05-20 A | 50 | 100% | 2011-05-23 |  | start no earlier than 2011-05-20 |  |  |  |
| 52 | 1.2.1.11.5 | Architecture issues proposed solution update for team review |  | 0h | 2011-05-25 A | 51 | 100% | 2011-05-25 |  | start no earlier than 2011-05-25 |  |  |  |
| 53 | 1.2.1.11.6 | Architectural Review Meeting |  | 0h | 2011-05-26 A | 52 | 100% | 2011-05-26 |  |  | Chintalapati |  |  |
| 54 | 1.2.1.11.7 | Architecture Incorporation of use case feedback |  | 2d | 2011-05-27 A | 53 | 100% | 2011-05-30 |  |  | Chintalapati | 8h |  |
| 55 | 1.2.1.11.8 | Review meeting on feedback on use case comments |  | 0h | 2011-05-27 A |  | 100% | 2011-05-27 |  | start no earlier than 2011-05-27 | Chintalapati |  |  |
| 56 | 1.2.1.11.9 | Finalize feedback and update documentation |  | 2d | 2011-05-27 A | 55 | 100% | 2011-05-31 |  |  | Chintalapati | 8h |  |
| 57 | 1.2.1.11.10 | Outline Plan with DSLs |  | 1d | 2011-05-31 A |  | 100% | 2011-06-01 |  | start no earlier than 2011-05-31 |  |  |  |
| 58 | 1.2.1.11.11 | Plan Elaboration (Rough Order of Magnitude) |  | 1d | 2011-06-02 A | 57 | 100% | 2011-06-02 |  | start no earlier than 2011-05-31 |  |  |  |
| 59 | 1.2.1.11.12 | Proposed Solution Issued |  | 1d | 2011-06-03 A | 58 | 100% | 2011-06-03 |  | start no earlier than 2011-06-02 | Chintalapati | 4h |  |
| 60 | 1.2.1.11.13 | Development of Executive Slide Deck |  | 3d | 2011-06-01 A |  | 100% | 2011-06-03 |  | start no earlier than 2011-06-01 |  |  |  |
| 61 | 1.2.1.11.14 | Plan, Proposal and Review Meeting |  | 0h | 2011-06-03 A | 60 | 100% | 2011-06-03 |  | start no earlier than 2011-06-03 |  |  |  |
| 62 | 1.2.1.11.15 | Revise Solution and Level of Effort based on June 3 Meeting |  | 4d | 2011-06-06 A | 61 | 100% | 2011-06-10 |  | start no earlier than 2011-06-06 |  |  |  |
| 63 | 1.2.1.11.16 | Provide Solution to Government |  | 0h | 2011-06-09 A | 62 | 100% | 2011-06-09 |  |  |  |  |  |
| 64 | 1.2.1.11.17 | Solution Approval |  | 0h | 2011-06-10 A | 63 | 100% | 2011-06-10 |  | start no earlier than 2011-06-10 |  |  |  |
| 65 | 1.2.1.12 | Development Environments Established for Elaboration (ESD - Tolven-Related CI Environment Enablement) |  | 5d | 2011-04-25 A |  | 100% | 2011-04-29 |  | finish no earlier than 2011-04-29 | Parnell | 20h |  |
| 66 | 1.2.1.13 | Format and Data Elements Gap Spreadsheet |  | 6.5d | 2011-04-19 A |  | 100% | 2011-04-27 |  | start no earlier than 2011-04-19 | Parnell [50%]; Chintalapati [50%] | 52h |  |
| 67 | 1.2.1.14 | Map Data Elements from PCO for Modeling Activities |  | 1d | 2011-04-28 A | 66 | 100% | 2011-04-29 |  | finish no earlier than 2011-05-02 | Chintalapati | 4h |  |

Notes:
- 38: Charter reviewed with CBIIT Director @ March 21, 2011 Meeting. Outlined Scope Parameters in Charter are clear. Definiton of achievable tasks within project timeframe continue to elaborate

| ID | WBS | Task | Duration | Start | Predecessors | Complete | Actual finish | Total slack | Constraint | Resources | Work |
| --- | --- | --- | --- | --- | --- | --- | --- | --- | --- | --- | --- |
| 68 | 1.2.1.15 | **Security** | 0d | 2011-04-25 |  | 100% | 2011-04-26 |  |  |  |  |
| 69 | 1.2.1.15.1 | Security Considerations and Justification Document | 1.5d | 2011-04-25 A |  | 100% | 2011-04-26 |  | start no earlier than 2011-04-25 | Chintalapati | 6h |
| 70 | 1.2.1.15.2 | Security Meeting (Discuss Security Considerations) | 0.5d | 2011-04-26 A |  | 100% | 2011-04-26 |  | start no earlier than 2011-04-26 | Chintalapati | 2h |
| 71 | 1.2.1.16 | **caCIS Requirements Document** | 0d | 2011-04-05 |  | 100% | 2011-04-28 |  |  |  |  |
| 72 | 1.2.1.16.1 | Scope and Requirements - Draft 1 | 7.5d | 2011-04-05 A |  | 100% | 2011-04-14 |  |  | ANA - 1 | 60h |
| 73 | 1.2.1.16.2 | Feed back and Review of Scope and Requirements Draft 1 | 4d | 2011-04-15 A | 72 | 100% | 2011-04-21 |  | start no earlier than 2011-04-15 |  |  |
| 74 | 1.2.1.16.3 | Scope and Requirements - Draft 2 | 9.38d | 2011-04-15 A |  | 100% | 2011-04-28 |  | finish no earlier than 2011-04-28 | ARCH - 1 | 72h |
| 75 | 1.2.1.17 | **Daily Scrum Meetings (DSL and Team)** | 0d | 2011-04-05 |  | 99% |  | 0d |  |  |  |
| 76 | 1.2.1.17.1 | Daily Scrum Meetings 1 | 0.5h | 2011-04-05 A |  | 100% | 2011-04-05 |  | start no earlier than 2011-04-05 | Hurley | 0.5h |
| 77 | 1.2.1.17.2 | Daily Scrum Meetings 2 | 0.5h | 2011-04-06 A |  | 100% | 2011-04-06 |  | start no earlier than 2011-04-06 | Hurley | 0.5h |
| 78 | 1.2.1.17.3 | Daily Scrum Meetings 3 | 0.5h | 2011-04-07 A |  | 100% | 2011-04-07 |  | start no earlier than 2011-04-07 | Hurley | 0.5h |
| 79 | 1.2.1.17.4 | Daily Scrum Meetings 4 | 0.5h | 2011-04-08 A |  | 100% | 2011-04-08 |  | start no earlier than 2011-04-08 | Hurley | 0.5h |
| 80 | 1.2.1.17.5 | Daily Scrum Meetings 5 | 0.5h | 2011-04-11 A |  | 100% | 2011-04-11 |  | start no earlier than 2011-04-11 | Hurley | 0.5h |
| 81 | 1.2.1.17.6 | Daily Scrum Meetings 6 | 0.5h | 2011-04-12 A |  | 100% | 2011-04-12 |  | start no earlier than 2011-04-12 | Hurley | 0.5h |
| 82 | 1.2.1.17.7 | Daily Scrum Meetings 7 | 0.5h | 2011-04-13 A |  | 100% | 2011-04-13 |  | start no earlier than 2011-04-13 | Hurley | 0.5h |
| 83 | 1.2.1.17.8 | Daily Scrum Meetings 8 | 0.5h | 2011-04-14 A |  | 100% | 2011-04-14 |  | start no earlier than 2011-04-14 | Hurley | 0.5h |
| 84 | 1.2.1.17.9 | Daily Scrum Meetings 9 | 0.5h | 2011-04-15 A |  | 100% | 2011-04-15 |  | start no earlier than 2011-04-15 | Hurley | 0.5h |
| 85 | 1.2.1.17.10 | Daily Scrum Meetings 10 | 0.5h | 2011-04-18 A |  | 100% | 2011-04-18 |  | start no earlier than 2011-04-18 | Hurley | 0.5h |
| 86 | 1.2.1.17.11 | Daily Scrum Meetings 11 | 0.5h | 2011-04-19 A |  | 100% | 2011-04-19 |  | start no earlier than 2011-04-19 | Hurley | 0.5h |
| 87 | 1.2.1.17.12 | Daily Scrum Meetings 12 | 0.5h | 2011-04-20 A |  | 100% | 2011-04-20 |  | start no earlier than 2011-04-20 | Hurley | 0.5h |
| 88 | 1.2.1.17.13 | Daily Scrum Meetings 13 | 0.5h | 2011-04-21 A |  | 100% | 2011-04-21 |  | start no earlier than 2011-04-21 | Hurley | 0.5h |
| 89 | 1.2.1.17.14 | Daily Scrum Meetings 14 | 0.5h | 2011-04-22 A |  | 100% | 2011-04-22 |  | start no earlier than 2011-04-22 | Hurley | 0.5h |
| 90 | 1.2.1.17.15 | Daily Scrum Meetings 15 | 0.5h | 2011-04-25 A |  | 100% | 2011-04-25 |  | start no earlier than 2011-04-25 | Hurley | 0.5h |
| 91 | 1.2.1.17.16 | Daily Scrum Meetings 16 | 0.5h | 2011-04-26 A |  | 100% | 2011-04-26 |  | start no earlier than 2011-04-26 | Hurley | 0.5h |
| 92 | 1.2.1.17.17 | Daily Scrum Meetings 17 | 0.5h | 2011-04-27 A |  | 100% | 2011-04-27 |  | start no earlier than 2011-04-27 | Hurley | 0.5h |
| 93 | 1.2.1.17.18 | Daily Scrum Meetings 18 | 0.5h | 2011-04-28 A |  | 100% | 2011-04-28 |  | start no earlier than 2011-04-28 | Hurley | 0.5h |
| 94 | 1.2.1.17.19 | Daily Scrum Meetings 19 | 0.5h | 2011-04-29 A |  | 100% | 2011-04-29 |  | start no earlier than 2011-04-29 | Hurley | 0.5h |
| 95 | 1.2.1.17.20 | Daily Scrum Meetings 20 | 0.5h | 2011-05-02 A |  | 100% | 2011-05-02 |  | start no earlier than 2011-05-02 | Hurley | 0.5h |
| 96 | 1.2.1.17.21 | Daily Scrum Meetings 21 | 0.5h | 2011-05-03 A |  | 100% | 2011-05-03 |  | start no earlier than 2011-05-03 | Hurley | 0.5h |
| 97 | 1.2.1.17.22 | Daily Scrum Meetings 22 | 1h | 2011-05-04 A |  | 100% | 2011-05-04 |  | start no earlier than 2011-05-04 | Hurley | 1h |
| 98 | 1.2.1.17.23 | Daily Scrum Meetings 23 | 1h | 2011-05-05 A |  | 100% | 2011-05-05 |  | start no earlier than 2011-05-05 | Hurley | 1h |
| 99 | 1.2.1.17.24 | Daily Scrum Meetings 24 | 1h | 2011-05-06 A |  | 100% | 2011-05-06 |  | start no earlier than 2011-05-06 | Hurley | 1h |
| 100 | 1.2.1.17.25 | Daily Scrum Meetings 25 | 1h | 2011-05-09 A |  | 100% | 2011-05-09 |  | start no earlier than 2011-05-09 | Hurley | 1h |
| 101 | 1.2.1.17.26 | Daily Scrum Meetings 26 | 1h | 2011-05-10 A |  | 100% | 2011-05-10 |  | start no earlier than 2011-05-10 | Hurley | 1h |
| 102 | 1.2.1.17.27 | Daily Scrum Meetings 27 | 1h | 2011-05-11 A |  | 100% | 2011-05-11 |  | start no earlier than 2011-05-11 | Hurley | 1h |
| 103 | 1.2.1.17.28 | Daily Scrum Meetings 28 | 1h | 2011-05-12 A |  | 100% | 2011-05-12 |  | start no earlier than 2011-05-12 | Hurley | 1h |
| 104 | 1.2.1.17.29 | Daily Scrum Meetings 29 | 1h | 2011-05-13 A |  | 100% | 2011-05-13 |  | start no earlier than 2011-05-13 | Hurley | 1h |
| 105 | 1.2.1.17.30 | Daily Scrum Meetings 30 | 1h | 2011-05-16 A |  | 100% | 2011-05-16 |  | start no earlier than 2011-05-16 | Hurley | 1h |
| 106 | 1.2.1.17.31 | Daily Scrum Meetings 31 | 1h | 2011-05-17 A |  | 100% | 2011-05-17 |  | start no earlier than 2011-05-17 | Hurley | 1h |
| 107 | 1.2.1.17.32 | Daily Scrum Meetings 32 | 1h | 2011-05-18 A |  | 100% | 2011-05-18 |  | start no earlier than 2011-05-18 | Hurley | 1h |
| 108 | 1.2.1.17.33 | Daily Scrum Meetings 33 | 1h | 2011-05-19 A |  | 100% | 2011-05-19 |  | start no earlier than 2011-05-19 | Hurley | 1h |
| 109 | 1.2.1.17.34 | Daily Scrum Meetings 34 | 1h | 2011-05-20 A |  | 100% | 2011-05-20 |  | start no earlier than 2011-05-20 | Hurley | 1h |
| 110 | 1.2.1.17.35 | Daily Scrum Meetings 35 | 1h | 2011-05-23 A |  | 100% | 2011-05-23 |  | start no earlier than 2011-05-23 | Hurley | 1h |
| 111 | 1.2.1.17.36 | Daily Scrum Meetings 36 | 1h | 2011-05-24 A |  | 100% | 2011-05-24 |  | start no earlier than 2011-05-24 | Hurley | 1h |
| 112 | 1.2.1.17.37 | Daily Scrum Meetings 37 | 1h | 2011-05-25 A |  | 100% | 2011-05-25 |  | start no earlier than 2011-05-25 | Hurley | 1h |
| 113 | 1.2.1.17.38 | Daily Scrum Meetings 38 | 1h | 2011-05-26 A |  | 100% | 2011-05-26 |  | start no earlier than 2011-05-26 | Hurley | 1h |
| 114 | 1.2.1.17.39 | Daily Scrum Meetings 39 | 1h | 2011-05-27 A |  | 100% | 2011-05-27 |  | start no earlier than 2011-05-27 | Hurley | 1h |
| 115 | 1.2.1.17.40 | Daily Scrum Meetings 40 | 1h | 2011-05-31 A |  | 100% | 2011-05-31 |  | start no earlier than 2011-05-31 | Hurley | 1h |
| 116 | 1.2.1.17.41 | Daily Scrum Meetings 41 | 1h | 2011-06-01 A |  | 100% | 2011-06-01 |  | start no earlier than 2011-06-01 | Hurley | 1h |
| 117 | 1.2.1.17.42 | Daily Scrum Meetings 42 | 1h | 2011-06-02 A |  | 100% | 2011-06-02 |  | start no earlier than 2011-06-02 | Undale | 1h |
| 118 | 1.2.1.17.43 | Daily Scrum Meetings 43 | 1h | 2011-06-03 A |  | 100% | 2011-06-03 |  | start no earlier than 2011-06-03 | Undale | 1h |
| 119 | 1.2.1.17.44 | Daily Scrum Meetings 44 | 1h | 2011-06-06 A |  | 100% | 2011-06-06 |  | start no earlier than 2011-06-06 | Hurley | 1h |
| 120 | 1.2.1.17.45 | Daily Scrum Meetings 45 | 1h | 2011-06-07 A |  | 100% | 2011-06-07 |  | start no earlier than 2011-06-07 | Hurley | 1h |
| 121 | 1.2.1.17.46 | Daily Scrum Meetings 46 | 1h | 2011-06-08 A |  | 100% | 2011-06-08 |  | start no earlier than 2011-06-08 | Hurley | 1h |
| 122 | 1.2.1.17.47 | Daily Scrum Meetings 47 | 1h | 2011-06-09 A |  | 100% | 2011-06-09 |  | start no earlier than 2011-06-09 | Hurley | 1h |
| 123 | 1.2.1.17.48 | Daily Scrum Meetings 48 | 1h | 2011-06-10 A |  | 100% | 2011-06-10 |  | start no earlier than 2011-06-10 | Hurley | 1h |
| 124 | 1.2.1.17.49 | Daily Scrum Meetings 49 | 1h | 2011-06-13 A |  | 100% | 2011-06-13 |  | start no earlier than 2011-06-13 | Hurley | 1h |
| 125 | 1.2.1.17.50 | Daily Scrum Meetings 50 | 1h | 2011-06-14 A |  | 100% | 2011-06-14 |  | start no earlier than 2011-06-14 | Hurley | 1h |
| 126 | 1.2.1.17.51 | Daily Scrum Meetings 51 | 1h | 2011-06-15 A |  | 100% | 2011-06-15 |  | start no earlier than 2011-06-15 | Hurley | 1h |
| 127 | 1.2.1.17.52 | Daily Scrum Meetings 52 | 1h | 2011-06-16 A |  | 100% | 2011-06-16 |  | start no earlier than 2011-06-16 | Hurley | 1h |
| 128 | 1.2.1.17.53 | Daily Scrum Meetings 53 | 1h | 2011-06-17 A |  | 100% | 2011-06-17 |  | start no earlier than 2011-06-17 | Hurley | 1h |
| 129 | 1.2.1.17.54 | Daily Scrum Meetings 54 | 1h | 2011-06-20 A |  | 100% | 2011-06-20 |  | start no earlier than 2011-06-20 | Undale | 1h |
| 130 | 1.2.1.17.55 | Daily Scrum Meetings 55 | 1h | 2011-06-21 A |  | 100% | 2011-06-21 |  | start no earlier than 2011-06-21 | Undale | 1h |
| 131 | 1.2.1.17.56 | Daily Scrum Meetings 56 | 1h | 2011-06-22 A |  | 100% | 2011-06-22 |  | start no earlier than 2011-06-22 | Undale | 1h |
| 132 | 1.2.1.17.57 | Daily Scrum Meetings 57 | 1h | 2011-06-23 A |  | 100% | 2011-06-23 |  | start no earlier than 2011-06-23 | Undale | 1h |
| 133 | 1.2.1.17.58 | Daily Scrum Meetings 58 | 1h | 2011-06-24 A |  | 100% | 2011-06-24 |  | start no earlier than 2011-06-24 | Undale | 1h |
| 134 | 1.2.1.17.59 | Daily Scrum Meetings 59 | 1h | 2011-06-27 A |  | 100% | 2011-06-27 |  | start no earlier than 2011-06-27 | Hurley | 1h |
| 135 | 1.2.1.17.60 | Daily Scrum Meetings 60 | 1h | 2011-06-28 A |  | 100% | 2011-06-28 |  | start no earlier than 2011-06-28 | Hurley | 1h |
| 136 | 1.2.1.17.61 | Daily Scrum Meetings 61 | 1h | 2011-06-29 A |  | 100% | 2011-06-29 |  | start no earlier than 2011-06-29 | Hurley | 1h |
| 137 | 1.2.1.17.62 | Daily Scrum Meetings 62 | 1h | 2011-06-30 A |  | 100% | 2011-06-30 |  | start no earlier than 2011-06-30 | Hurley | 1h |

| ID | WBS | Task | Type | Duration | Start | Complete | Actual finish | Constraint | Resources | Work |
| --- | --- | --- | --- | --- | --- | --- | --- | --- | --- | --- |
| 138 | 1.2.1.17.63 | Daily Scrum Meetings 63 |  | 1h | 2011-07-01 A | 100% | 2011-07-01 | start no earlier than 2011-07-01 | Undale | 1h |
| 139 | 1.2.1.17.64 | Daily Scrum Meetings 64 |  | 1h | 2011-07-05 A | 100% | 2011-07-05 | start no earlier than 2011-07-05 | Hurley | 1h |
| 140 | 1.2.1.17.65 | Daily Scrum Meetings 65 |  | 1h | 2011-07-06 A | 100% | 2011-07-06 | start no earlier than 2011-07-06 | Hurley | 1h |
| 141 | 1.2.1.17.66 | Daily Scrum Meetings 66 |  | 1h | 2011-07-07 A | 100% | 2011-07-07 | start no earlier than 2011-07-07 | Hurley | 1h |
| 142 | 1.2.1.17.67 | Daily Scrum Meetings 67 |  | 1h | 2011-07-08 A | 100% | 2011-07-08 | start no earlier than 2011-07-08 | Hurley | 1h |
| 143 | 1.2.1.17.68 | Daily Scrum Meetings 68 |  | 0.5h | 2011-07-11 A | 100% | 2011-07-11 | start no earlier than 2011-07-11 | Hurley | 0.5h |
| 144 | 1.2.1.17.69 | Daily Scrum Meetings 69 |  | 1h | 2011-07-12 A | 100% | 2011-07-12 | start no earlier than 2011-07-12 | Hurley | 1h |
| 145 | 1.2.1.17.70 | Daily Scrum Meetings 70 |  | 1h | 2011-07-13 A | 100% | 2011-07-13 | start no earlier than 2011-07-13 | Hurley | 1h |
| 146 | 1.2.1.17.71 | Daily Scrum Meetings 71 |  | 1h | 2011-07-14 A | 100% | 2011-07-14 | start no earlier than 2011-07-14 | Hurley | 1h |
| 147 | 1.2.1.17.72 | Daily Scrum Meetings 72 |  | 1h | 2011-07-15 A | 100% | 2011-07-15 | start no earlier than 2011-07-15 | Hurley | 1h |
| 148 | 1.2.1.17.73 | Daily Scrum Meetings 73 |  | 1h | 2011-07-18 A | 100% | 2011-07-18 | start no earlier than 2011-07-18 | Hurley | 1h |
| 149 | 1.2.1.17.74 | Daily Scrum Meetings 74 |  | 1h | 2011-07-19 A | 100% | 2011-07-19 | start no earlier than 2011-07-19 | Hurley | 1h |
| 150 | 1.2.1.17.75 | Daily Scrum Meetings 75 |  | 1h | 2011-07-20 A | 100% | 2011-07-20 | start no earlier than 2011-07-20 | Hurley | 1h |
| 151 | 1.2.1.17.76 | Daily Scrum Meetings 76 |  | 1h | 2011-07-21 A | 100% | 2011-07-21 | start no earlier than 2011-07-21 | Hurley | 1h |
| 152 | 1.2.1.17.77 | Daily Scrum Meetings 77 |  | 1h | 2011-07-22 A | 100% | 2011-07-22 | start no earlier than 2011-07-22 | Hurley | 1h |
| 153 | 1.2.1.17.78 | Daily Scrum Meetings 78 |  | 1h | 2011-07-25 A | 100% | 2011-07-25 | start no earlier than 2011-07-25 | Hurley | 1h |
| 154 | 1.2.1.17.79 | Daily Scrum Meetings 79 |  | 1h | 2011-07-26 A | 100% | 2011-07-26 | start no earlier than 2011-07-26 | Hurley | 1h |
| 155 | 1.2.1.17.80 | Daily Scrum Meetings 80 |  | 1h | 2011-07-27 A | 100% | 2011-07-27 | start no earlier than 2011-07-27 | Hurley | 1h |
| 156 | 1.2.1.17.81 | Daily Scrum Meetings 81 |  | 1h | 2011-07-28 A | 100% | 2011-07-28 | start no earlier than 2011-07-28 | Hurley | 1h |
| 157 | 1.2.1.17.82 | Daily Scrum Meetings 82 |  | 1h | 2011-07-29 A | 100% | 2011-07-29 | start no earlier than 2011-07-29 | Hurley | 1h |
| 158 | 1.2.1.17.83 | Daily Scrum Meetings 83 |  | 1h | 2011-08-01 A | 100% | 2011-08-01 | start no earlier than 2011-08-01 | Hurley | 1h |
| 159 | 1.2.1.17.84 | Daily Scrum Meetings 84 |  | 1h | 2011-08-02 A | 100% | 2011-08-02 | start no earlier than 2011-08-02 | Hurley | 1h |
| 160 | 1.2.1.17.85 | Daily Scrum Meetings 85 |  | 1h | 2011-08-03 A | 100% | 2011-08-03 | start no earlier than 2011-08-03 | Hurley | 1h |
| 161 | 1.2.1.17.86 | Daily Scrum Meetings 86 |  | 1h | 2011-08-04 A | 100% | 2011-08-04 | start no earlier than 2011-08-04 | Hurley | 1h |
| 162 | 1.2.1.17.87 | Daily Scrum Meetings 87 |  | 1h | 2011-08-05 A | 100% | 2011-08-05 | start no earlier than 2011-08-05 | Hurley | 1h |
| 163 | 1.2.1.17.88 | Daily Scrum Meetings 88 |  | 1h | 2011-08-08 A | 100% | 2011-08-08 | start no earlier than 2011-08-08 | Hurley | 1h |
| 164 | 1.2.1.17.89 | Daily Scrum Meetings 89 |  | 1h | 2011-08-09 A | 100% | 2011-08-09 | start no earlier than 2011-08-09 | Hurley | 1h |
| 165 | 1.2.1.17.90 | Daily Scrum Meetings 90 |  | 1h | 2011-08-10 A | 100% | 2011-08-10 | start no earlier than 2011-08-10 | Hurley | 1h |
| 166 | 1.2.1.17.91 | Daily Scrum Meetings 91 |  | 1h | 2011-08-11 A | 100% | 2011-08-11 | start no earlier than 2011-08-11 | Hurley | 1h |
| 167 | 1.2.1.17.92 | Daily Scrum Meetings 92 |  | 1h | 2011-08-12 A | 100% | 2011-08-12 | start no earlier than 2011-08-12 | Hurley | 1h |
| 168 | 1.2.1.17.93 | Daily Scrum Meetings 93 |  | 1h | 2011-08-15 A | 100% | 2011-08-15 | start no earlier than 2011-08-15 | Hurley | 1h |
| 169 | 1.2.1.17.94 | Daily Scrum Meetings 94 |  | 1h | 2011-08-16 A | 100% | 2011-08-16 | start no earlier than 2011-08-16 | Hurley | 1h |
| 170 | 1.2.1.17.95 | Daily Scrum Meetings 95 |  | 1h | 2011-08-17 A | 100% | 2011-08-17 | start no earlier than 2011-08-17 | Hurley | 1h |
| 171 | 1.2.1.17.96 | Daily Scrum Meetings 96 |  | 1h | 2011-08-18 A | 100% | 2011-08-18 | start no earlier than 2011-08-18 | Hurley | 1h |
| 172 | 1.2.1.17.97 | Daily Scrum Meetings 97 |  | 1h | 2011-08-19 A | 100% | 2011-08-19 | start no earlier than 2011-08-19 | Hurley | 1h |
| 173 | 1.2.1.17.98 | Daily Scrum Meetings 98 |  | 1h | 2011-08-22 A | 100% | 2011-08-22 | start no earlier than 2011-08-22 | Hurley | 1h |
| 174 | 1.2.1.17.99 | Daily Scrum Meetings 99 |  | 1h | 2011-08-23 A | 100% | 2011-08-23 | start no earlier than 2011-08-23 | Hurley | 1h |
| 175 | 1.2.1.17.100 | Daily Scrum Meetings 100 |  | 1h | 2011-08-24 A | 100% | 2011-08-24 | start no earlier than 2011-08-24 | Hurley | 0.5h |
| 176 | 1.2.1.17.101 | Daily Scrum Meetings 101 |  | 1h | 2011-08-25 A | 100% | 2011-08-25 | start no earlier than 2011-08-25 | Hurley | 1h |
| 177 | 1.2.1.17.102 | Daily Scrum Meetings 102 |  | 1h | 2011-08-26 A | 100% | 2011-08-26 | start no earlier than 2011-08-26 | Hurley | 1h |
| 178 | 1.2.1.17.103 | Daily Scrum Meetings 103 |  | 1h | 2011-08-29 A | 100% | 2011-08-29 | start no earlier than 2011-08-29 | Hurley | 1h |
| 179 | 1.2.1.17.104 | Daily Scrum Meetings 104 |  | 1h | 2011-08-30 A | 100% | 2011-08-30 | start no earlier than 2011-08-30 | Hurley | 1h |
| 180 | 1.2.1.17.105 | Daily Scrum Meetings 105 |  | 1h | 2011-08-31 A | 100% | 2011-08-31 | start no earlier than 2011-08-31 | Hurley | 1h |
| 181 | 1.2.1.17.106 | Daily Scrum Meetings 106 |  | 1h | 2011-09-01 A | 100% | 2011-09-01 | start no earlier than 2011-09-01 | Hurley | 1h |
| 182 | 1.2.1.17.107 | Daily Scrum Meetings 107 |  | 1h | 2011-09-02 A | 100% | 2011-09-02 | start no earlier than 2011-09-02 | Hurley | 1h |
| 183 | 1.2.1.17.108 | Daily Scrum Meetings 108 |  | 1h | 2011-09-06 A | 100% | 2011-09-06 | start no earlier than 2011-09-06 | Hurley | 1h |
| 184 | 1.2.1.17.109 | Daily Scrum Meetings 109 |  | 1h | 2011-09-07 A | 100% | 2011-09-07 | start no earlier than 2011-09-07 | Hurley | 1h |
| 185 | 1.2.1.17.110 | Daily Scrum Meetings 110 |  | 1h | 2011-09-08 A | 100% | 2011-09-08 | start no earlier than 2011-09-08 | Hurley | 1h |
| 186 | 1.2.1.17.111 | Daily Scrum Meetings 111 |  | 1h | 2011-09-09 A | 100% | 2011-09-09 | start no earlier than 2011-09-09 | Hurley | 1h |
| 187 | 1.2.1.17.112 | Daily Scrum Meetings 112 |  | 1h | 2011-09-12 A | 100% | 2011-09-12 | start no earlier than 2011-09-12 | Hurley | 1h |
| 188 | 1.2.1.17.113 | Daily Scrum Meetings 113 |  | 1h | 2011-09-13 A | 100% | 2011-09-13 | start no earlier than 2011-09-13 | Hurley | 1h |
| 189 | 1.2.1.17.114 | Daily Scrum Meetings 114 |  | 1h | 2011-09-14 A | 100% | 2011-09-14 | start no earlier than 2011-09-14 | Hurley | 1h |
| 190 | 1.2.1.17.115 | Daily Scrum Meetings 115 |  | 1h | 2011-09-15 A | 100% | 2011-09-15 | start no earlier than 2011-09-15 | Hurley | 1h |
| 191 | 1.2.1.17.116 | Daily Scrum Meetings 116 |  | 1h | 2011-09-16 A | 100% | 2011-09-16 | start no earlier than 2011-09-16 | Hurley | 1h |
| 192 | 1.2.1.17.117 | Daily Scrum Meetings 117 |  | 1h | 2011-09-19 A | 100% | 2011-09-19 | start no earlier than 2011-09-19 | Hurley | 1h |
| 193 | 1.2.1.17.118 | Daily Scrum Meetings 118 |  | 1h | 2011-09-20 A | 100% | 2011-09-20 | start no earlier than 2011-09-20 | Hurley | 1h |
| 194 | 1.2.1.17.119 | Daily Scrum Meetings 119 |  | 1h | 2011-09-21 A | 100% | 2011-09-21 | start no earlier than 2011-09-21 | Hurley | 1h |
| 195 | 1.2.1.17.120 | Daily Scrum Meetings 120 |  | 1h | 2011-09-22 A | 100% | 2011-09-22 | start no earlier than 2011-09-22 | Hurley | 1h |
| 196 | 1.2.1.17.121 | Daily Scrum Meetings 121 |  | 1h | 2011-09-23 A | 100% | 2011-09-23 | start no earlier than 2011-09-23 | Hurley | 1h |
| 197 | 1.2.1.17.122 | Daily Scrum Meetings 122 | milestone | 0h | 2011-09-26 A | 100% | 2011-09-26 | start no earlier than 2011-09-26 | Hurley |  |
| 198 | 1.2.1.17.123 | Daily Scrum Meetings 123 | milestone | 0h | 2011-09-27 A | 100% | 2011-09-27 | start no earlier than 2011-09-27 | Hurley |  |
| 199 | 1.2.1.17.124 | Daily Scrum Meetings 124 | milestone | 0h | 2011-09-28 A | 100% | 2011-09-28 | start no earlier than 2011-09-28 | Hurley |  |
| 200 | 1.2.1.17.125 | Daily Scrum Meetings 125 | milestone | 0h | 2011-09-29 A | 100% | 2011-09-29 | start no earlier than 2011-09-29 | Hurley |  |
| 201 | 1.2.1.17.126 | Daily Scrum Meetings 126 | milestone | 0h | 2011-09-30 A | 100% | 2011-09-30 | start no earlier than 2011-09-30 | Hurley |  |

| ID | WBS | Task | Type | Duration | Start | Complete | Actual finish | Total slack | Constraint | Resources | Work |
| --- | --- | --- | --- | --- | --- | --- | --- | --- | --- | --- | --- |
| 202 | 1.2.1.17.127 | **Daily Scrum Meetings** |  | 0d | 2011-10-03 | 99% |  | 0d |  |  |  |
| 203 | 1.2.1.17.127.1 | Daily Scrum Meetings 1 |  | 1h | 2011-10-03 A | 100% | 2011-10-03 |  | start no earlier than 2011-10-03 | Hurley | 1h |
| 204 | 1.2.1.17.127.2 | Daily Scrum Meetings 2 |  | 1h | 2011-10-04 A | 100% |  | 0d | start no earlier than 2011-10-04 | Hurley | 1h |
| 205 | 1.2.1.17.127.3 | Daily Scrum Meetings 3 |  | 1h | 2011-10-05 A | 100% |  | 0d | start no earlier than 2011-10-05 | Hurley | 1h |
| 206 | 1.2.1.17.127.4 | Daily Scrum Meetings 4 |  | 1h | 2011-10-07 A | 100% |  | 0d | start no earlier than 2011-10-07 | Hurley | 1h |
| 207 | 1.2.1.17.127.5 | Daily Scrum Meetings 5 |  | 1h | 2011-10-11 A | 100% |  | 0d | start no earlier than 2011-10-10 | Hurley | 1h |
| 208 | 1.2.1.17.127.6 | Daily Scrum Meetings 6 |  | 1h | 2011-10-11 A | 100% |  | 0d | start no earlier than 2011-10-11 | Hurley | 1h |
| 209 | 1.2.1.17.127.7 | Daily Scrum Meetings 7 |  | 1h | 2011-10-12 A | 100% |  | 0d | start no earlier than 2011-10-12 | Hurley | 1h |
| 210 | 1.2.1.17.127.8 | Daily Scrum Meetings 8 |  | 1.58h | 2011-10-14 A | 100% | 2011-10-14 |  | start no earlier than 2011-10-14 | Hurley | 1h |
| 211 | 1.2.1.17.127.9 | Daily Scrum Meetings 9 |  | 1.58h | 2011-10-17 A | 100% | 2011-10-17 |  | start no earlier than 2011-10-17 | Hurley | 1h |
| 212 | 1.2.1.17.127.10 | Daily Scrum Meetings 10 |  | 1.58h | 2011-10-18 A | 100% | 2011-10-18 |  | start no earlier than 2011-10-18 | Hurley | 1h |
| 213 | 1.2.1.17.127.11 | Daily Scrum Meetings 11 |  | 1.58h | 2011-10-19 A | 100% | 2011-10-19 |  | start no earlier than 2011-10-19 | Hurley | 1h |
| 214 | 1.2.1.17.127.12 | Daily Scrum Meetings 12 |  | 1h | 2011-10-21 A | 100% | 2011-10-21 |  | start no earlier than 2011-10-21 | Hurley | 1h |
| 215 | 1.2.1.17.127.13 | Daily Scrum Meetings 13 |  | 1h | 2011-10-24 A | 100% | 2011-10-24 |  | start no earlier than 2011-10-24 | Hurley | 1h |
| 216 | 1.2.1.17.127.14 | Daily Scrum Meetings 14 |  | 1h | 2011-10-25 A | 100% | 2011-10-25 |  | start no earlier than 2011-10-25 | Hurley | 1h |
| 217 | 1.2.1.17.127.15 | Daily Scrum Meetings 15 |  | 1h | 2011-10-26 A | 100% | 2011-10-26 |  | start no earlier than 2011-10-26 | Hurley | 1h |
| 218 | 1.2.1.17.127.16 | Daily Scrum Meetings 16 |  | 1h | 2011-10-28 A | 100% | 2011-10-28 |  | start no earlier than 2011-10-28 | Hurley | 1h |
| 219 | 1.2.1.17.127.17 | Daily Scrum Meetings 17 |  | 1h | 2011-10-31 A | 100% | 2011-10-31 |  | start no earlier than 2011-10-31 | Hurley | 0.5h |
| 220 | 1.2.1.17.127.18 | Daily Scrum Meetings 18 |  | 8h | 2011-11-01 A | 100% | 2011-11-01 |  | start no earlier than 2011-11-01 | Hurley | 0.5h |
| 221 | 1.2.1.17.127.19 | Daily Scrum Meetings 19 |  | 1h | 2011-11-02 A | 100% | 2011-11-02 |  | start no earlier than 2011-11-02 | Hurley | 0.5h |
| 222 | 1.2.1.17.127.20 | Daily Scrum Meetings 20 |  | 8h | 2011-11-04 A | 100% | 2011-11-04 |  | start no earlier than 2011-11-04 | Hurley | 0.5h |
| 223 | 1.2.1.17.127.21 | Daily Scrum Meetings 21 |  | 8h | 2011-11-07 A | 100% | 2011-11-07 |  | start no earlier than 2011-11-07 | Hurley | 0.5h |
| 224 | 1.2.1.17.127.22 | Daily Scrum Meetings 22 |  | 8h | 2011-11-08 A | 100% | 2011-11-08 |  | start no earlier than 2011-11-08 | Hurley | 0.5h |
| 225 | 1.2.1.17.127.23 | Daily Scrum Meetings 23 |  | 8h | 2011-11-09 A | 100% | 2011-11-09 |  | start no earlier than 2011-11-09 | Hurley | 0.5h |
| 226 | 1.2.1.17.127.24 | Daily Scrum Meetings 24 |  | 8h | 2011-11-10 A | 100% | 2011-11-10 |  | start no earlier than 2011-11-10 | Hurley | 0.5h |
| 227 | 1.2.1.17.127.25 | Daily Scrum Meetings 25 |  | 1h | 2011-11-14 A | 100% | 2011-11-14 |  | start no earlier than 2011-11-14 | Hurley | 0.5h |
| 228 | 1.2.1.17.127.26 | Daily Scrum Meetings 26 |  | 8h | 2011-11-15 A | 100% | 2011-11-15 |  | start no earlier than 2011-11-15 | Hurley | 0.5h |
| 229 | 1.2.1.17.127.27 | Daily Scrum Meetings 27 |  | 8h | 2011-11-16 A | 100% | 2011-11-16 |  | start no earlier than 2011-11-16 | Hurley | 0.5h |
| 230 | 1.2.1.17.127.28 | Daily Scrum Meetings 28 |  | 8h | 2011-11-18 A | 100% | 2011-11-18 |  | start no earlier than 2011-11-18 | Hurley | 0.5h |
| 231 | 1.2.1.17.127.29 | Daily Scrum Meetings 29 |  | 8h | 2011-11-21 A | 100% | 2011-11-21 |  | start no earlier than 2011-11-21 | Hurley | 0.5h |
| 232 | 1.2.1.17.127.30 | Daily Scrum Meetings 30 |  | 8h | 2011-11-22 A | 100% | 2011-11-22 |  | start no earlier than 2011-11-22 | Hurley | 0.5h |
| 233 | 1.2.1.17.127.31 | Daily Scrum Meetings 31 | milestone | 0h | 2011-11-23 A | 100% | 2011-11-23 |  | start no earlier than 2011-11-23 | Hurley |  |
| 234 | 1.2.1.17.127.32 | Daily Scrum Meetings 32 | milestone | 0h | 2011-11-25 A | 100% | 2011-11-25 |  | start no earlier than 2011-11-25 | Hurley |  |
| 235 | 1.2.1.17.127.33 | Daily Scrum Meetings 33 |  | 8h | 2011-11-28 A | 100% | 2011-11-28 |  | start no earlier than 2011-11-28 | Hurley | 0.5h |
| 236 | 1.2.1.17.127.34 | Daily Scrum Meetings 34 |  | 8h | 2011-11-29 A | 100% | 2011-11-29 |  | start no earlier than 2011-11-29 | Hurley | 0.5h |
| 237 | 1.2.1.17.127.35 | Daily Scrum Meetings 35 |  | 1h | 2011-11-30 A | 100% | 2011-11-30 |  | start no earlier than 2011-11-30 | Hurley | 0.5h |
| 238 | 1.2.1.17.127.36 | Daily Scrum Meetings 36 |  | 8h | 2011-12-02 A | 100% | 2011-12-02 |  | start no earlier than 2011-12-02 | Hurley | 0.5h |
| 239 | 1.2.1.17.127.37 | Daily Scrum Meetings 37 |  | 8h | 2011-12-05 A | 100% | 2011-12-05 |  | start no earlier than 2011-12-05 | Hurley | 0.5h |
| 240 | 1.2.1.17.127.38 | Daily Scrum Meetings 38 |  | 8h | 2011-12-06 A | 100% | 2011-12-06 |  | start no earlier than 2011-12-06 | Hurley | 0.5h |
| 241 | 1.2.1.17.127.39 | Daily Scrum Meetings 39 |  | 8h | 2011-12-07 A | 100% | 2011-12-07 |  | start no earlier than 2011-12-07 | Hurley | 0.5h |
| 242 | 1.2.1.17.127.40 | Daily Scrum Meetings 40 |  | 8h | 2011-12-09 A | 100% | 2011-12-09 |  | start no earlier than 2011-12-09 | Hurley | 0.5h |
| 243 | 1.2.1.17.127.41 | Daily Scrum Meetings 41 |  | 8h | 2011-12-12 A | 100% | 2011-12-12 |  | start no earlier than 2011-12-12 | Hurley | 0.5h |
| 244 | 1.2.1.17.127.42 | Daily Scrum Meetings 42 |  | 8h | 2011-12-13 A | 100% |  | 0d | start no earlier than 2011-12-13 | Hurley [50%] | 0.5h |
| 245 | 1.2.1.17.127.43 | Daily Scrum Meetings 43 |  | 8h | 2011-12-14 A | 100% |  | 0d | start no earlier than 2011-12-14 | Hurley [50%] | 0.5h |
| 246 | 1.2.1.17.127.44 | Daily Scrum Meetings 44 |  | 1h | 2011-12-16 A | 100% |  | 0d | start no earlier than 2011-12-16 | Hurley [50%] | 0.5h |
| 247 | 1.2.1.17.127.45 | Daily Scrum Meetings 45 |  | 1h | 2011-12-19 A | 100% |  | 0d | start no earlier than 2011-12-19 | Hurley [50%] | 0.5h |
| 248 | 1.2.1.17.127.46 | Daily Scrum Meetings 46 |  | 1h | 2011-12-20 A | 100% |  | 0d | start no earlier than 2011-12-20 | Hurley [50%] | 0.5h |
| 249 | 1.2.1.17.127.47 | Daily Scrum Meetings 47 |  | 1h | 2011-12-21 A | 100% |  | 0d | start no earlier than 2011-12-21 | Hurley [50%] | 0.5h |
| 250 | 1.2.1.17.127.48 | Daily Scrum Meetings 48 |  | 1h | 2011-12-23 A | 100% |  | 0d | start no earlier than 2011-12-23 | Hurley [50%] | 0.5h |
| 251 | 1.2.1.17.127.49 | Daily Scrum Meetings 49 |  | 1h | 2011-12-27 A | 100% |  | 0d | start no earlier than 2011-12-26 | Hurley [50%] | 0.5h |
| 252 | 1.2.1.17.127.50 | Daily Scrum Meetings 50 |  | 1h | 2011-12-27 A | 100% |  | 0d | start no earlier than 2011-12-27 | Hurley [50%] | 0.5h |
| 253 | 1.2.1.17.127.51 | Daily Scrum Meetings 51 |  | 1h | 2011-12-28 |  |  | 0d | start no earlier than 2011-12-28 | Hurley [50%] | 0.5h |
| 254 | 1.2.1.17.127.52 | Daily Scrum Meetings 52 |  | 1h | 2011-12-30 |  |  | 0d | start no earlier than 2011-12-30 | Hurley [50%] | 0.5h |

| ID | WBS | Task | Type | Duration | Start | Predecessors | Complete | Actual finish | Total slack | Constraint | Resources | Work |
| --- | --- | --- | --- | --- | --- | --- | --- | --- | --- | --- | --- | --- |
| 255 | 1.2.2 | **Schedule Management** |  | 0d | 2011-03-29 |  | 98% |  | 0d |  |  |  |
| 256 | 1.2.2.1 | Create Initial Schedule |  | 4.5d | 2011-03-29 A |  | 100% | 2011-04-04 |  | finish no earlier than 2011-04-04 | Hurley | 9h |
| 257 | 1.2.2.2 | 3 Week Transition Schedule |  | 2.5d | 2011-04-05 A | 256 | 100% | 2011-04-07 |  | finish no earlier than 2011-04-07 | Hurley | 20h |
| 258 | 1.2.2.3 | Draft 1 Full Project Schedule |  | 5d | 2011-04-18 A |  | 100% | 2011-04-25 |  | start no earlier than 2011-04-18 | Hurley | 10h |
| 259 | 1.2.2.4 | Schedule Issued for Review |  | 0h | 2011-04-22 A | 258 | 100% | 2011-04-22 |  |  | Hurley |  |
| 260 | 1.2.2.5 | Schedule Baseline 0 Complete |  | 1h | 2011-05-09 A | 259, 42 | 100% | 2011-05-09 |  | start no earlier than 2011-05-09 | Hurley |  |
| 261 | 1.2.2.6 | Update plan based on architectural updates to the overall solution |  | 3d | 2011-06-10 A | 64 | 100% | 2011-06-14 |  |  | Hurley | 16h |
| 262 | 1.2.2.7 | Schedule Baseline 1 Complete |  | 0.5d | 2011-06-17 A | 261 | 100% | 2011-06-17 |  | start no earlier than 2011-06-17 |  |  |
| 263 | 1.2.2.8 | Schedule Baseline 2 Complete |  | 0.5d | 2011-07-08 A | 262 | 100% | 2011-07-08 |  | start no earlier than 2011-07-08 |  |  |
| 264 | 1.2.2.9 | Progress Reporting Established (SPI, SV, CPI, CV) |  | 133d | 2011-05-27 A | 261 | 100% | 2011-12-06 |  | finish no earlier than 2011-05-27 | Undale [23.76%]; Hurley [76.24%] | 50.5h |
| 265 | 1.2.2.10 | Daily Schedule Management |  | 118.5d | 2011-07-13 A | 437 | 88% |  | 0d | start no earlier than 2011-07-13 | Hurley [24.37%] | 231h |
| 266 | 1.2.2.11 | **Schedule Progress Review** |  | 0d | 2011-04-04 |  | 100% |  | 0d |  |  |  |
| 267 | 1.2.2.11.1 | Schedule Progress Review 1 |  | 1h | 2011-04-04 A |  | 100% | 2011-04-04 |  | start no earlier than 2011-04-04 | Hurley | 1h |
| 268 | 1.2.2.11.2 | Schedule Progress Review 2 |  | 1h | 2011-04-11 A |  | 100% | 2011-04-11 |  | start no earlier than 2011-04-11 | Hurley | 1h |
| 269 | 1.2.2.11.3 | Schedule Progress Review 3 |  | 1h | 2011-04-18 A |  | 100% | 2011-04-18 |  | start no earlier than 2011-04-18 | Hurley | 1h |
| 270 | 1.2.2.11.4 | Schedule Progress Review 4 |  | 1h | 2011-04-26 A |  | 100% | 2011-04-26 |  | start no earlier than 2011-04-25 | Hurley | 1h |
| 271 | 1.2.2.11.5 | Schedule Progress Review 5 |  | 1h | 2011-05-02 A |  | 100% | 2011-05-02 |  | start no earlier than 2011-05-02 | Hurley | 1h |
| 272 | 1.2.2.11.6 | Schedule Progress Review 6 |  | 1h | 2011-05-09 A |  | 100% | 2011-05-09 |  | start no earlier than 2011-05-09 | Hurley | 1h |
| 273 | 1.2.2.11.7 | Schedule Progress Review 7 |  | 1h | 2011-05-16 A |  | 100% | 2011-05-16 |  | start no earlier than 2011-05-16 | Hurley | 1h |
| 274 | 1.2.2.11.8 | Schedule Progress Review 8 |  | 1h | 2011-05-23 A |  | 100% | 2011-05-23 |  | start no earlier than 2011-05-23 | Hurley | 1h |
| 275 | 1.2.2.11.9 | Schedule Progress Review 9 |  | 1h | 2011-05-31 A |  | 100% | 2011-05-31 |  | start no earlier than 2011-05-30 | Hurley | 1h |
| 276 | 1.2.2.11.10 | Schedule Progress Review 10 |  | 1h | 2011-06-06 A |  | 100% | 2011-06-06 |  | start no earlier than 2011-06-06 | Hurley | 1h |
| 277 | 1.2.2.11.11 | Schedule Progress Review 11 |  | 1h | 2011-06-13 A |  | 100% | 2011-06-13 |  | start no earlier than 2011-06-13 | Hurley | 1h |
| 278 | 1.2.2.11.12 | Schedule Progress Review 12 (Cancelled) |  | 0h | 2011-06-20 A |  | 100% | 2011-06-20 |  | start no earlier than 2011-06-20 | Hurley |  |
| 279 | 1.2.2.11.13 | Schedule Progress Review 13 (Cancelled) |  | 0h | 2011-06-27 A |  | 100% | 2011-06-27 |  | start no earlier than 2011-06-27 | Hurley |  |
| 280 | 1.2.2.11.14 | Schedule Progress Review 14 |  | 1h | 2011-07-05 A |  | 100% | 2011-07-05 |  | start no earlier than 2011-07-04 | Hurley | 1h |
| 281 | 1.2.2.11.15 | Schedule Progress Review 15 (Cancelled due to TRANSCEND mtg) | milestone | 0h | 2011-07-11 A |  | 100% | 2011-07-11 |  | start no earlier than 2011-07-11 | Hurley |  |
| 282 | 1.2.2.11.16 | Schedule Progress Review 16 |  | 1h | 2011-07-18 A |  | 100% | 2011-07-18 |  | start no earlier than 2011-07-18 | Hurley | 1h |
| 283 | 1.2.2.11.17 | Schedule Progress Review 17 |  | 1h | 2011-07-25 A |  | 100% | 2011-07-25 |  | start no earlier than 2011-07-25 | Hurley | 1h |
| 284 | 1.2.2.11.18 | Schedule Progress Review 18 |  | 1h | 2011-08-01 A |  | 100% | 2011-08-01 |  | start no earlier than 2011-08-01 | Hurley | 1h |
| 285 | 1.2.2.11.19 | Schedule Progress Review 19 |  | 1h | 2011-08-08 A |  | 100% | 2011-08-08 |  | start no earlier than 2011-08-08 | Hurley | 1h |
| 286 | 1.2.2.11.20 | Schedule Progress Review 20 |  | 1h | 2011-08-15 A |  | 100% | 2011-08-15 |  | start no earlier than 2011-08-15 | Hurley | 1h |
| 287 | 1.2.2.11.21 | Schedule Progress Review 21 |  | 8h | 2011-08-22 A |  | 100% | 2011-08-22 |  | start no earlier than 2011-08-22 | Hurley | 0.5h |
| 288 | 1.2.2.11.22 | Schedule Progress Review 22 |  | 1h | 2011-08-29 A |  | 100% | 2011-08-29 |  | start no earlier than 2011-08-29 | Hurley | 1h |
| 289 | 1.2.2.11.23 | Schedule Progress Review 23 |  | 1h | 2011-09-06 A |  | 100% | 2011-09-06 |  | start no earlier than 2011-09-05 | Hurley | 1h |
| 290 | 1.2.2.11.24 | Schedule Progress Review 24 |  | 1h | 2011-09-12 A |  | 100% | 2011-09-12 |  | start no earlier than 2011-09-12 | Hurley | 1h |
| 291 | 1.2.2.11.25 | Schedule Progress Review 25 |  | 1h | 2011-09-19 A |  | 100% | 2011-09-19 |  | start no earlier than 2011-09-19 | Hurley | 1h |
| 292 | 1.2.2.11.26 | Schedule Progress Review 26 | milestone | 0h | 2011-09-26 A |  | 100% | 2011-09-26 |  | start no earlier than 2011-09-26 | Hurley |  |
| 293 | 1.2.2.11.27 | Schedule Progress Review 27 |  | 1h | 2011-10-03 A |  | 100% | 2011-10-03 |  | start no earlier than 2011-10-03 | Hurley | 1h |
| 294 | 1.2.2.11.28 | Schedule Progress Review 28 |  | 1h | 2011-10-11 A |  | 100% | 2011-10-11 |  | start no earlier than 2011-10-10 | Hurley | 1h |
| 295 | 1.2.2.11.29 | Schedule Progress Review 29 |  | 1h | 2011-10-17 A |  | 100% | 2011-10-17 |  | start no earlier than 2011-10-17 | Hurley | 1h |
| 296 | 1.2.2.11.30 | Schedule Progress Review 30 | milestone | 0h | 2011-10-24 A |  | 100% | 2011-10-24 |  | start no earlier than 2011-10-24 | Hurley |  |
| 297 | 1.2.2.11.31 | Schedule Progress Review 31 |  | 1h | 2011-10-31 A |  | 100% | 2011-10-31 |  | start no earlier than 2011-10-31 | Hurley | 1h |
| 298 | 1.2.2.11.32 | Schedule Progress Review 32 |  | 1h | 2011-11-07 A |  | 100% | 2011-11-07 |  | start no earlier than 2011-11-07 | Hurley | 1h |
| 299 | 1.2.2.11.33 | Schedule Progress Review 33 | milestone | 0h | 2011-11-14 A |  | 100% | 2011-11-14 |  | start no earlier than 2011-11-14 | Hurley |  |
| 300 | 1.2.2.11.34 | Schedule Progress Review 34 |  | 8h | 2011-11-21 A |  | 100% | 2011-11-21 |  | start no earlier than 2011-11-21 | Hurley | 1h |
| 301 | 1.2.2.11.35 | Schedule Progress Review 35 |  | 8h | 2011-11-28 A |  | 100% |  | 0d | start no earlier than 2011-11-28 | Hurley [12.5%] | 1h |
| 302 | 1.2.2.11.36 | Schedule Progress Review 36 | milestone | 0h | 2011-12-05 A |  | 100% | 2011-12-05 |  | start no earlier than 2011-12-05 | Hurley |  |
| 303 | 1.2.2.11.37 | Schedule Progress Review 37 | milestone | 0h | 2011-12-12 A |  | 100% | 2011-12-12 |  | start no earlier than 2011-12-12 | Hurley |  |
| 304 | 1.2.2.11.38 | Schedule Progress Review 38 |  | 1h | 2011-12-19 A |  | 100% |  | 0d | start no earlier than 2011-12-19 | Hurley | 1h |
| 305 | 1.2.2.11.39 | Schedule Progress Review 39 |  | 1h | 2011-12-27 A |  | 100% |  | 0d | start no earlier than 2011-12-26 | Hurley | 1h |

Notes:
- 260: Proposed Architectural Solution Key Deliverable to Baseline Plan
- 264: Started this task early to get a framework in place that PMO can use.

| ID | WBS | Task | Type | Duration | Start | Complete | Actual finish | Total slack | Constraint | Resources | Work |
| --- | --- | --- | --- | --- | --- | --- | --- | --- | --- | --- | --- |
| 306 | 1.2.3 | **Cost Management** |  | 0d | 2011-03-28 | 100% |  | 0d |  |  |  |
| 307 | 1.2.3.1 | SAIC-F Cost Management Per Schedule and Resource (GOVT/SAIC-F Only) |  | 194d | 2011-03-28 A | 100% |  | 0d | finish no earlier than 2011-12-30 | Undale [38.66%] | 600h |
| 308 | 1.2.4 | **Quality Management** |  | 0d | 2011-04-15 | 100% | 2011-05-06 |  |  |  |  |
| 309 | 1.2.4.1 | Quality Management Plan |  | 15d | 2011-04-15 A | 100% | 2011-05-06 |  | start no earlier than 2011-04-15 | Pierce | 120h |
| 310 | 1.2.5 | **Resource Management** |  | 0d | 2011-04-04 | 100% |  | 0d |  |  |  |
| 311 | 1.2.5.1 | **SAIC-F Weekly Review** |  | 0d | 2011-04-04 | 100% |  | 0d |  |  |  |
| 312 | 1.2.5.1.1 | SAIC-F Weekly Review 1 |  | 1h | 2011-04-04 A | 100% | 2011-04-04 |  | start no earlier than 2011-04-04 | Cabral | 0.75h |
| 313 | 1.2.5.1.2 | SAIC-F Weekly Review 2 |  | 1h | 2011-04-11 A | 100% | 2011-04-11 |  | start no earlier than 2011-04-11 | Cabral | 0.75h |
| 314 | 1.2.5.1.3 | SAIC-F Weekly Review 3 |  | 1h | 2011-04-18 A | 100% | 2011-04-18 |  | start no earlier than 2011-04-18 | Cabral | 0.75h |
| 315 | 1.2.5.1.4 | SAIC-F Weekly Review 4 |  | 1h | 2011-04-26 A | 100% | 2011-04-26 |  | start no earlier than 2011-04-26 | Cabral | 0.75h |
| 316 | 1.2.5.1.5 | SAIC-F Weekly Review 5 |  | 1h | 2011-05-02 A | 100% | 2011-05-02 |  | start no earlier than 2011-05-02 | Cabral | 0.75h |
| 317 | 1.2.5.1.6 | SAIC-F Weekly Review 6 |  | 1h | 2011-05-09 A | 100% | 2011-05-09 |  | start no earlier than 2011-05-09 | Cabral | 0.75h |
| 318 | 1.2.5.1.7 | SAIC-F Weekly Review 7 |  | 1h | 2011-05-16 A | 100% | 2011-05-16 |  | start no earlier than 2011-05-16 | Cabral | 0.75h |
| 319 | 1.2.5.1.8 | SAIC-F Weekly Review 8 |  | 1h | 2011-05-23 A | 100% | 2011-05-23 |  | start no earlier than 2011-05-23 | Cabral | 0.75h |
| 320 | 1.2.5.1.9 | SAIC-F Weekly Review 9 |  | 1h | 2011-05-31 A | 100% | 2011-05-31 |  | start no earlier than 2011-05-30 | Cabral | 0.75h |
| 321 | 1.2.5.1.10 | SAIC-F Weekly Review 10 |  | 1h | 2011-06-06 A | 100% | 2011-06-06 |  | start no earlier than 2011-06-06 | Cabral | 0.75h |
| 322 | 1.2.5.1.11 | SAIC-F Weekly Review 11 |  | 1h | 2011-06-13 A | 100% | 2011-06-13 |  | start no earlier than 2011-06-13 | Cabral | 0.75h |
| 323 | 1.2.5.1.12 | SAIC-F Weekly Review 12 |  | 1h | 2011-06-20 A | 100% | 2011-06-20 |  | start no earlier than 2011-06-20 | Cabral | 0.75h |
| 324 | 1.2.5.1.13 | SAIC-F Weekly Review 13 |  | 1h | 2011-06-27 A | 100% | 2011-06-27 |  | start no earlier than 2011-06-27 | Cabral | 0.75h |
| 325 | 1.2.5.1.14 | SAIC-F Weekly Review 14 |  | 1h | 2011-07-05 A | 100% | 2011-07-05 |  | start no earlier than 2011-07-04 | Cabral | 0.75h |
| 326 | 1.2.5.1.15 | SAIC-F Weekly Review 15 |  | 1h | 2011-07-11 A | 100% | 2011-07-11 |  | start no earlier than 2011-07-11 | Cabral | 0.75h |
| 327 | 1.2.5.1.16 | SAIC-F Weekly Review 16 |  | 1h | 2011-07-18 A | 100% | 2011-07-18 |  | start no earlier than 2011-07-18 | Cabral | 0.75h |
| 328 | 1.2.5.1.17 | SAIC-F Weekly Review 17 |  | 1h | 2011-07-25 A | 100% | 2011-07-25 |  | start no earlier than 2011-07-25 | Cabral | 0.75h |
| 329 | 1.2.5.1.18 | SAIC-F Weekly Review 18 |  | 1h | 2011-08-01 A | 100% | 2011-08-01 |  | start no earlier than 2011-08-01 | Cabral | 0.75h |
| 330 | 1.2.5.1.19 | SAIC-F Weekly Review 19 |  | 1h | 2011-08-08 A | 100% | 2011-08-08 |  | start no earlier than 2011-08-08 | Cabral | 0.75h |
| 331 | 1.2.5.1.20 | SAIC-F Weekly Review 20 |  | 1h | 2011-08-15 A | 100% | 2011-08-15 |  | start no earlier than 2011-08-15 | Cabral | 0.75h |
| 332 | 1.2.5.1.21 | SAIC-F Weekly Review 21 |  | 1h | 2011-08-22 A | 100% | 2011-08-22 |  | start no earlier than 2011-08-22 | Cabral | 0.75h |
| 333 | 1.2.5.1.22 | SAIC-F Weekly Review 22 |  | 1h | 2011-08-29 A | 100% | 2011-08-29 |  | start no earlier than 2011-08-29 | Cabral | 0.75h |
| 334 | 1.2.5.1.23 | SAIC-F Weekly Review 23 |  | 1h | 2011-09-06 A | 100% | 2011-09-06 |  | start no earlier than 2011-09-05 | Cabral | 0.75h |
| 335 | 1.2.5.1.24 | SAIC-F Weekly Review 24 | milestone | 0h | 2011-09-12 A | 100% | 2011-09-12 |  | start no earlier than 2011-09-12 | Cabral |  |
| 336 | 1.2.5.1.25 | SAIC-F Weekly Review 25 | milestone | 0h | 2011-09-19 A | 100% | 2011-09-19 |  | start no earlier than 2011-09-19 | Cabral |  |
| 337 | 1.2.5.1.26 | SAIC-F Weekly Review 26 | milestone | 0h | 2011-09-26 A | 100% | 2011-09-26 |  | start no earlier than 2011-09-26 | Cabral |  |
| 338 | 1.2.5.1.27 | SAIC-F Weekly Review 27 |  | 1h | 2011-10-03 A | 100% | 2011-10-03 |  | start no earlier than 2011-10-03 | Cabral | 0.75h |
| 339 | 1.2.5.1.28 | SAIC-F Weekly Review 28 |  | 1h | 2011-10-11 A | 100% | 2011-10-11 |  | start no earlier than 2011-10-10 | Cabral | 0.75h |
| 340 | 1.2.5.1.29 | SAIC-F Weekly Review 29 |  | 1h | 2011-10-17 A | 100% | 2011-10-17 |  | start no earlier than 2011-10-17 | Cabral | 0.75h |
| 341 | 1.2.5.1.30 | SAIC-F Weekly Review 30 |  | 1h | 2011-10-24 A | 100% |  | 0d | start no earlier than 2011-10-24 | Cabral [75%] | 0.75h |
| 342 | 1.2.5.1.31 | SAIC-F Weekly Review 31 |  | 1h | 2011-10-31 A | 100% |  | 0d | start no earlier than 2011-10-31 | Cabral [75%] | 0.75h |
| 343 | 1.2.5.1.32 | SAIC-F Weekly Review 32 |  | 1h | 2011-11-07 A | 100% |  | 0d | start no earlier than 2011-11-07 | Cabral [75%] | 0.75h |
| 344 | 1.2.5.1.33 | SAIC-F Weekly Review 33 |  | 1h | 2011-11-14 A | 100% |  | 0d | start no earlier than 2011-11-14 | Cabral [75%] | 0.75h |
| 345 | 1.2.5.1.34 | SAIC-F Weekly Review 34 |  | 1h | 2011-11-21 A | 100% |  | 0d | start no earlier than 2011-11-21 | Cabral [75%] | 0.75h |
| 346 | 1.2.5.1.35 | SAIC-F Weekly Review 35 |  | 1h | 2011-11-28 A | 100% |  | 0d | start no earlier than 2011-11-28 | Cabral [75%] | 0.75h |

| ID | WBS | Task | Type | Duration | Start | Complete | Actual finish | Total slack | Constraint | Resources | Work |
| --- | --- | --- | --- | --- | --- | --- | --- | --- | --- | --- | --- |
| 347 | 1.2.6 | **Communications Management** |  | 0d | 2011-04-12 | 99% |  | 0d |  |  |  |
| 348 | 1.2.6.1 | Stakeholder Strategy Document (Includes SH Register) |  | 10d | 2011-04-12 A | 100% | 2011-04-26 |  | start no earlier than 2011-04-12 | Hurley | 20h |
| 349 | 1.2.6.2 | **Weekly DSL Progress Meetings** |  | 0d | 2011-04-12 | 98% |  | 0d |  |  |  |
| 350 | 1.2.6.2.1 | Weekly DSL Progress Meetings 1 |  | 0.5h | 2011-04-12 A | 100% | 2011-04-12 |  | start no earlier than 2011-04-12 | Hurley | 0.5h |
| 351 | 1.2.6.2.2 | Weekly DSL Progress Meetings 2 |  | 0.5h | 2011-04-19 A | 100% | 2011-04-19 |  | start no earlier than 2011-04-19 | Hurley | 0.5h |
| 352 | 1.2.6.2.3 | Weekly DSL Progress Meetings 3 |  | 0.5h | 2011-04-26 A | 100% | 2011-04-26 |  | start no earlier than 2011-04-26 | Hurley | 0.5h |
| 353 | 1.2.6.2.4 | Weekly DSL Progress Meetings 4 |  | 0.5h | 2011-05-03 A | 100% | 2011-05-03 |  | start no earlier than 2011-05-03 | Hurley | 0.5h |
| 354 | 1.2.6.2.5 | Weekly DSL Progress Meetings 5 |  | 0.5h | 2011-05-10 A | 100% | 2011-05-10 |  | start no earlier than 2011-05-10 | Hurley | 0.5h |
| 355 | 1.2.6.2.6 | Weekly DSL Progress Meetings 6 |  | 0.5h | 2011-05-17 A | 100% | 2011-05-17 |  | start no earlier than 2011-05-17 | Hurley | 0.5h |
| 356 | 1.2.6.2.7 | Weekly DSL Progress Meetings 7 (Meeting Cancelled) |  | 0.5h | 2011-05-24 A | 100% | 2011-05-24 |  | start no earlier than 2011-05-24 | Hurley | 0.5h |
| 357 | 1.2.6.2.8 | Weekly DSL Progress Meetings 8 |  | 2h | 2011-05-31 A | 100% | 2011-05-31 |  | start no earlier than 2011-05-31 | Hurley | 2h |
| 358 | 1.2.6.2.9 | Weekly DSL Progress Meetings 9 |  | 0.5h | 2011-06-07 A | 100% | 2011-06-07 |  | start no earlier than 2011-06-07 | Hurley | 0.5h |
| 359 | 1.2.6.2.10 | Weekly DSL Progress Meetings 10 |  | 0.5h | 2011-06-14 A | 100% | 2011-06-14 |  | start no earlier than 2011-06-14 | Hurley | 0.5h |
| 360 | 1.2.6.2.11 | Weekly DSL Progress Meetings 11 (Meeting Cancelled) |  | 0h | 2011-06-21 A | 100% | 2011-06-21 |  | start no earlier than 2011-06-21 | Hurley |  |
| 361 | 1.2.6.2.12 | Weekly DSL Progress Meetings 12 |  | 0.5h | 2011-06-28 A | 100% | 2011-06-28 |  | start no earlier than 2011-06-28 | Hurley | 0.5h |
| 362 | 1.2.6.2.13 | Weekly DSL Progress Meetings 13 |  | 0.5h | 2011-07-06 A | 100% | 2011-07-06 |  | start no earlier than 2011-07-06 | Hurley | 0.5h |
| 363 | 1.2.6.2.14 | Weekly DSL Progress Meetings 14 |  | 0.5h | 2011-07-12 A | 100% | 2011-07-12 |  | start no earlier than 2011-07-12 | Hurley | 0.5h |
| 364 | 1.2.6.2.15 | Weekly DSL Progress Meetings 15 |  | 0.5h | 2011-07-21 A | 100% | 2011-07-21 |  | start no earlier than 2011-07-21 | Hurley | 0.5h |
| 365 | 1.2.6.2.16 | Weekly DSL Progress Meetings 16 |  | 0.5h | 2011-07-28 A | 100% | 2011-07-28 |  | start no earlier than 2011-07-28 | Hurley | 0.5h |
| 366 | 1.2.6.2.17 | Weekly DSL Progress Meetings 17 |  | 0.5h | 2011-08-04 A | 100% | 2011-08-04 |  | start no earlier than 2011-08-04 | Hurley | 0.5h |
| 367 | 1.2.6.2.18 | Weekly DSL Progress Meetings 18 |  | 0.5h | 2011-08-11 A | 100% | 2011-08-11 |  | start no earlier than 2011-08-11 | Hurley | 0.5h |
| 368 | 1.2.6.2.19 | Weekly DSL Progress Meetings 19 |  | 0.5h | 2011-08-18 A | 100% | 2011-08-18 |  | start no earlier than 2011-08-18 | Hurley | 0.5h |
| 369 | 1.2.6.2.20 | Weekly DSL Progress Meetings 20 |  | 0.5h | 2011-08-25 A | 100% | 2011-08-25 |  | start no earlier than 2011-08-25 | Hurley | 0.5h |
| 370 | 1.2.6.2.21 | Weekly DSL Progress Meetings 21 |  | 0.5h | 2011-09-01 A | 100% | 2011-09-01 |  | start no earlier than 2011-09-01 | Hurley | 0.5h |
| 371 | 1.2.6.2.22 | Weekly DSL Progress Meetings 22 |  | 0.5h | 2011-09-09 A | 100% | 2011-09-09 |  | start no earlier than 2011-09-09 | Hurley | 0.5h |
| 372 | 1.2.6.2.23 | Weekly DSL Progress Meetings 23 |  | 0.5h | 2011-09-15 A | 100% | 2011-09-15 |  | start no earlier than 2011-09-15 | Hurley | 0.5h |
| 373 | 1.2.6.2.24 | Weekly DSL Progress Meetings 24 |  | 0.5h | 2011-09-22 A | 100% | 2011-09-22 |  | start no earlier than 2011-09-22 | Hurley | 0.5h |
| 374 | 1.2.6.2.25 | Weekly DSL Progress Meetings 25 | milestone | 0h | 2011-09-29 A | 100% | 2011-09-29 |  | start no earlier than 2011-09-29 | Hurley |  |
| 375 | 1.2.6.2.26 | Weekly DSL Progress Meetings 26 |  | 0.5h | 2011-10-06 A | 100% | 2011-10-06 |  | start no earlier than 2011-10-06 | Hurley | 0.5h |
| 376 | 1.2.6.2.27 | Weekly DSL Progress Meetings 27 |  | 0.5h | 2011-10-13 A | 100% | 2011-10-13 |  | start no earlier than 2011-10-13 | Hurley | 0.5h |
| 377 | 1.2.6.2.28 | Weekly DSL Progress Meetings 28 |  | 0.5h | 2011-10-20 A | 100% | 2011-10-20 |  | start no earlier than 2011-10-20 | Hurley | 0.5h |
| 378 | 1.2.6.2.29 | Weekly DSL Progress Meetings 29 |  | 0.5h | 2011-10-27 A | 100% | 2011-10-27 |  | start no earlier than 2011-10-27 | Hurley | 0.5h |
| 379 | 1.2.6.2.30 | Weekly DSL Progress Meetings 30 |  | 0.5h | 2011-11-03 A | 100% | 2011-11-03 |  | start no earlier than 2011-11-03 | Hurley | 1h |
| 380 | 1.2.6.2.31 | Weekly DSL Progress Meetings 31 |  | 0.5h | 2011-11-10 A | 100% | 2011-11-10 |  | start no earlier than 2011-11-10 | Hurley | 0.5h |
| 381 | 1.2.6.2.32 | Weekly DSL Progress Meetings 32 |  | 0.5h | 2011-11-17 A | 100% | 2011-11-17 |  | start no earlier than 2011-11-17 | Hurley | 0.5h |
| 382 | 1.2.6.2.33 | Weekly DSL Progress Meetings 33 |  | 8h | 2011-11-25 A | 100% | 2011-11-25 |  | start no earlier than 2011-11-24 | Hurley | 0.5h |
| 383 | 1.2.6.2.34 | Weekly DSL Progress Meetings 34 |  | 8.5h | 2011-12-01 A | 100% | 2011-12-02 |  | start no earlier than 2011-12-01 | Hurley | 0.5h |
| 384 | 1.2.6.2.35 | Weekly DSL Progress Meetings 35 |  | 0.5h | 2011-12-08 A | 100% | 2011-12-08 |  | start no earlier than 2011-12-08 | Hurley | 0.5h |
| 385 | 1.2.6.2.36 | Weekly DSL Progress Meetings 36 |  | 0.5h | 2011-12-15 A | 100% |  | 0d | start no earlier than 2011-12-15 | Hurley | 0.5h |
| 386 | 1.2.6.2.37 | Weekly DSL Progress Meetings 37 |  | 0.5h | 2011-12-22 A | 100% |  | 0d | start no earlier than 2011-12-22 | Hurley | 0.5h |
| 387 | 1.2.6.2.38 | Weekly DSL Progress Meetings 38 |  | 0.5h | 2011-12-29 |  |  | 0d | start no earlier than 2011-12-29 | Hurley | 0.5h |

| ID | WBS | Task | Duration | Start | Complete | Actual finish | Total slack | Constraint | Resources | Work |
| --- | --- | --- | --- | --- | --- | --- | --- | --- | --- | --- |
| 388 | 1.2.7 | **Risk Management** | 0d | 2011-04-12 | 98% |  | 0d |  |  |  |
| 389 | 1.2.7.1 | **Weekly Risk Review (DSL Meeting)** | 0d | 2011-04-12 | 98% |  | 0d |  |  |  |
| 390 | 1.2.7.1.1 | Weekly Risk Review (DSL Meeting) 1 | 0.5h | 2011-04-12 A | 100% | 2011-04-12 |  | start no earlier than 2011-04-12 | Hurley | 0.5h |
| 391 | 1.2.7.1.2 | Weekly Risk Review (DSL Meeting) 2 | 0.5h | 2011-04-19 A | 100% | 2011-04-19 |  | start no earlier than 2011-04-19 | Hurley | 0.5h |
| 392 | 1.2.7.1.3 | Weekly Risk Review (DSL Meeting) 3 | 0.5h | 2011-04-26 A | 100% | 2011-04-26 |  | start no earlier than 2011-04-26 | Hurley | 0.5h |
| 393 | 1.2.7.1.4 | Weekly Risk Review (DSL Meeting) 4 | 0.5h | 2011-05-03 A | 100% | 2011-05-03 |  | start no earlier than 2011-05-03 | Hurley | 0.5h |
| 394 | 1.2.7.1.5 | Weekly Risk Review (DSL Meeting) 5 | 0.5h | 2011-05-10 A | 100% | 2011-05-10 |  | start no earlier than 2011-05-10 | Hurley | 0.5h |
| 395 | 1.2.7.1.6 | Weekly Risk Review (DSL Meeting) 6 | 0.5h | 2011-05-17 A | 100% | 2011-05-17 |  | start no earlier than 2011-05-17 | Hurley | 0.5h |
| 396 | 1.2.7.1.7 | Weekly Risk Review (DSL Meeting) 7 (off-line risk review) | 0.5h | 2011-05-24 A | 100% | 2011-05-24 |  | start no earlier than 2011-05-24 | Hurley | 0.5h |
| 397 | 1.2.7.1.8 | Weekly Risk Review (DSL Meeting) 8 (off-line review) | 0.5h | 2011-05-31 A | 100% | 2011-05-31 |  | start no earlier than 2011-05-31 | Hurley | 0.5h |
| 398 | 1.2.7.1.9 | Weekly Risk Review (DSL Meeting) 9 | 0.5h | 2011-06-07 A | 100% | 2011-06-07 |  | start no earlier than 2011-06-07 | Hurley | 0.5h |
| 399 | 1.2.7.1.10 | Weekly Risk Review (DSL Meeting) 10 | 0.5h | 2011-06-14 A | 100% | 2011-06-14 |  | start no earlier than 2011-06-14 | Hurley | 0.5h |
| 400 | 1.2.7.1.11 | Weekly Risk Review (DSL Meeting) 11 (meeting cancelled) | 0h | 2011-06-21 A | 100% | 2011-06-21 |  | start no earlier than 2011-06-21 | Hurley |  |
| 401 | 1.2.7.1.12 | Weekly Risk Review (DSL Meeting) 12 | 0.5h | 2011-06-28 A | 100% | 2011-06-28 |  | start no earlier than 2011-06-28 | Hurley | 0.5h |
| 402 | 1.2.7.1.13 | Weekly Risk Review (DSL Meeting) 13 | 0.5h | 2011-07-06 A | 100% | 2011-07-06 |  | start no earlier than 2011-07-06 | Hurley | 0.5h |
| 403 | 1.2.7.1.14 | Weekly Risk Review (DSL Meeting) 14 | 0.5h | 2011-07-12 A | 100% | 2011-07-12 |  | start no earlier than 2011-07-12 | Hurley | 0.5h |
| 404 | 1.2.7.1.15 | Weekly Risk Review (DSL Meeting) 15 | 0.5h | 2011-07-21 A | 100% | 2011-07-21 |  | start no earlier than 2011-07-21 | Hurley | 0.5h |
| 405 | 1.2.7.1.16 | Weekly Risk Review (DSL Meeting) 16 | 0.5h | 2011-07-28 A | 100% | 2011-07-28 |  | start no earlier than 2011-07-28 | Hurley | 0.5h |
| 406 | 1.2.7.1.17 | Weekly Risk Review (DSL Meeting) 17 | 0.5h | 2011-08-04 A | 100% | 2011-08-04 |  | start no earlier than 2011-08-04 | Hurley | 0.5h |
| 407 | 1.2.7.1.18 | Weekly Risk Review (DSL Meeting) 18 | 0.5h | 2011-08-11 A | 100% | 2011-08-11 |  | start no earlier than 2011-08-11 | Hurley | 0.5h |
| 408 | 1.2.7.1.19 | Weekly Risk Review (DSL Meeting) 19 | 0.5h | 2011-08-18 A | 100% | 2011-08-18 |  | start no earlier than 2011-08-18 | Hurley | 0.5h |
| 409 | 1.2.7.1.20 | Weekly Risk Review (DSL Meeting) 20 | 0.5h | 2011-08-25 A | 100% | 2011-08-25 |  | start no earlier than 2011-08-25 | Hurley | 0.5h |
| 410 | 1.2.7.1.21 | Weekly Risk Review (DSL Meeting) 21 | 0.5h | 2011-09-01 A | 100% | 2011-09-01 |  | start no earlier than 2011-09-01 | Hurley | 0.5h |
| 411 | 1.2.7.1.22 | Weekly Risk Review (DSL Meeting) 22 | 0.5h | 2011-09-08 A | 100% | 2011-09-08 |  | start no earlier than 2011-09-08 | Hurley | 0.5h |
| 412 | 1.2.7.1.23 | Weekly Risk Review (DSL Meeting) 23 | 0.5h | 2011-09-15 A | 100% | 2011-09-15 |  | start no earlier than 2011-09-15 | Hurley | 0.5h |
| 413 | 1.2.7.1.24 | Weekly Risk Review (DSL Meeting) 24 | 0.5h | 2011-09-22 A | 100% | 2011-09-22 |  | start no earlier than 2011-09-22 | Hurley | 0.5h |
| 414 | 1.2.7.1.25 | Weekly Risk Review (DSL Meeting) 25 | 0.5h | 2011-09-29 A | 100% | 2011-09-29 |  | start no earlier than 2011-09-29 | Hurley | 0.5h |
| 415 | 1.2.7.1.26 | Weekly Risk Review (DSL Meeting) 26 | 0.5h | 2011-10-06 A | 100% | 2011-10-06 |  | start no earlier than 2011-10-06 | Hurley | 0.5h |
| 416 | 1.2.7.1.27 | Weekly Risk Review (DSL Meeting) 27 | 0.5h | 2011-10-13 A | 100% | 2011-10-13 |  | start no earlier than 2011-10-13 | Hurley | 0.5h |
| 417 | 1.2.7.1.28 | Weekly Risk Review (DSL Meeting) 28 | 0.5h | 2011-10-20 A | 100% | 2011-10-20 |  | start no earlier than 2011-10-20 | Hurley | 0.5h |
| 418 | 1.2.7.1.29 | Weekly Risk Review (DSL Meeting) 29 | 0.5h | 2011-10-27 A | 100% | 2011-10-27 |  | start no earlier than 2011-10-27 | Hurley | 0.5h |
| 419 | 1.2.7.1.30 | Weekly Risk Review (DSL Meeting) 30 | 0.5h | 2011-11-03 A | 100% | 2011-11-03 |  | start no earlier than 2011-11-03 | Hurley | 0.5h |
| 420 | 1.2.7.1.31 | Weekly Risk Review (DSL Meeting) 31 | 0.5h | 2011-11-10 A | 100% | 2011-11-10 |  | start no earlier than 2011-11-10 | Hurley | 0.5h |
| 421 | 1.2.7.1.32 | Weekly Risk Review (DSL Meeting) 32 | 0.5h | 2011-11-17 A | 100% | 2011-11-17 |  | start no earlier than 2011-11-17 | Hurley | 0.5h |
| 422 | 1.2.7.1.33 | Weekly Risk Review (DSL Meeting) 33 | 0.5h | 2011-11-25 A | 100% | 2011-11-25 |  | start no earlier than 2011-11-24 | Hurley | 0.5h |
| 423 | 1.2.7.1.34 | Weekly Risk Review (DSL Meeting) 34 | 8.5h | 2011-12-01 A | 100% | 2011-12-02 |  | start no earlier than 2011-12-01 | Hurley | 0.5h |
| 424 | 1.2.7.1.35 | Weekly Risk Review (DSL Meeting) 35 | 0.5h | 2011-12-08 A | 100% | 2011-12-08 |  | start no earlier than 2011-12-08 | Hurley | 0.5h |
| 425 | 1.2.7.1.36 | Weekly Risk Review (DSL Meeting) 36 | 0.5h | 2011-12-15 A | 100% |  | 0d | start no earlier than 2011-12-15 | Hurley | 0.5h |
| 426 | 1.2.7.1.37 | Weekly Risk Review (DSL Meeting) 37 | 0.5h | 2011-12-22 A | 100% |  | 0d | start no earlier than 2011-12-22 | Hurley | 0.5h |
| 427 | 1.2.7.1.38 | Weekly Risk Review (DSL Meeting) 38 | 0.5h | 2011-12-29 |  |  | 0d | start no earlier than 2011-12-29 | Hurley | 0.5h |

| ID | WBS | Task | Type | Duration | Start | Predecessors | Complete | Actual finish | Total slack | Constraint | Resources | Work | Text1 |
| --- | --- | --- | --- | --- | --- | --- | --- | --- | --- | --- | --- | --- | --- |
| 428 | 1.2.8 | **Integrated Change Control** |  | 0d | 2011-07-18 |  | 100% |  | 0d |  |  |  |  |
| 429 | 1.2.8.1 | Management of Change Control and Change Log |  | 115d | 2011-07-18 A | 34FF | 100% |  | 0d | finish no earlier than 2011-12-30 | Hurley [8.7%] | 80h |  |
| 430 | 1.3 | **Planning, Requirements, High-level Architecture** |  | 0d | 2011-06-13 |  | 100% | 2011-07-12 |  |  |  |  |  |
| 431 | 1.3.1 | Create integrated project schedule |  | 19d | 2011-06-13 A | 435 | 100% | 2011-07-08 |  | finish no earlier than 2011-07-05 | Parnell [25.81%]; Chintalapati [6.45%]; Joshi [25.81%]; Hurley [22.58%]; Gann [19.35%] | 496h | Completed |
| 432 | 1.3.2 | Update Use Cases & Requirements |  | 10d | 2011-06-13 A |  | 100% | 2011-06-24 |  | start no earlier than 2011-06-13 | ARCH - 5 | 80h | Completed |
| 433 | 1.3.3 | Evaluate Open-source Alternatives and Select CDW Platform - w/Dev Support |  | 13d | 2011-06-13 A |  | 100% | 2011-06-29 |  | finish no earlier than 2011-06-29 | ARCH - 4 [40%]; ARCH - 1 [20%]; ARCH - 3 [40%] | 130h | Completed |
| 434 | 1.3.4 | Update Architecture Document |  | 10d | 2011-06-13 A |  | 100% | 2011-06-24 |  |  | ARCH - 1 [66.67%]; ARCH - 3 [33.33%] | 60h | Completed |
| 435 | 1.3.5 | Approve CDW Open-source Selection w/ NCI and SAIC-F |  | 0h | 2011-07-11 A | 433FS+5d | 100% | 2011-07-11 |  | start no earlier than 2011-07-11 | Andonyadis; Undale; Cabral; Shirley |  | Completed |
| 436 | 1.3.6 | Review and Update - Use-Cases & Architecture |  | 10d | 2011-06-27 A | 432FS+0.5d | 100% | 2011-07-12 |  |  | ARCH - 5 [33.33%]; NCI [33.33%]; SAIC-F [33.33%] | 160h | Completed |
| 437 | 1.3.7 | Use Cases and Architecture Approved |  | 0h | 2011-07-12 A | 436, 435 | 100% | 2011-07-12 |  |  |  |  | Completed |
| 438 | 1.4 | **TRANSCEND Interface** |  | 0d | 2011-06-20 |  | 100% | 2011-09-16 |  |  |  |  |  |
| 439 | 1.4.1 | TRANSCEND Contact Needed for Workflow Discussion & Sign-off- External Dependency |  | 0h | 2011-06-20 A |  | 100% | 2011-06-20 |  | start no earlier than 2011-06-20 | Shalley |  | Completed |
| 440 | 1.4.2 | Discuss & Confirm Tolven workflow from TRANSCEND to SA |  | 19d | 2011-06-20 A | 439 | 100% | 2011-07-15 |  | finish no earlier than 2011-07-15 | Joshi [50%]; Chintalapati [50%] | 80h | Completed |
| 441 | 1.4.3 | Design SA secure interface for TRANSCEND Tolven |  | 10d | 2011-07-22 A | 440, 439 | 100% | 2011-08-04 |  | start no earlier than 2011-07-22 | ARCH - 3 | 80h | Completed |
| 442 | 1.4.4 | Milestone - TRANSCEND Interface Design Finalized - External Dependency |  | 0h | 2011-08-24 A | 441 | 100% | 2011-08-24 |  |  |  |  | Completed |
| 443 | 1.4.5 | Milestone - Commitment to Deploy and Test Semantic Adapter Based on Finalized Design- External Dependency |  | 0h | 2011-08-24 A | 442 | 100% | 2011-08-24 |  |  |  |  | Completed |
| 444 | 1.4.6 | Milestone - Deployment Specific Information (Environment Information) - External Dependency |  | 0h | 2011-08-04 A | 443 | 100% | 2011-08-04 |  |  |  |  | Completed |
| 445 | 1.4.7 | Milestone - Mirth Connect SSL Plugin License needed for ESD development activities - No longer needed Alternative Route Determined | milestone | 0h | 2011-08-19 A |  | 100% | 2011-08-19 |  | start no earlier than 2011-08-19 |  |  | Completed |
| 446 | 1.4.8 | Develop Tolven to SA interface |  | 29d | 2011-08-08 A | 444FS-1d | 100% | 2011-09-16 |  | start no earlier than 2011-08-08 | ESD | 200h | Completed |
| 447 | 1.5 | **Modeling and Semantic Mapping** |  | 0d | 2011-06-20 |  | 100% |  | 0d |  |  |  |  |
| 448 | 1.5.1 | Build Initial Computable Transform |  | 5d | 2011-06-20 A |  | 100% | 2011-06-24 |  | start no earlier than 2011-06-20 | ARCH - 3 | 10h | Completed |
| 449 | 1.5.2 | Milestone - Initial Computable Transform - Simple Example of Transform (File, URL, SVN Location) - Internal Dependency |  | 0h | 2011-06-27 A | 448 | 100% | 2011-06-27 |  | start no earlier than 2011-06-27 |  |  | Completed |
| 450 | 1.5.3 | Milestone - TRIM's Finalized (Data Elements, Structure and Semantics) Validate Assumptions - External Dependency |  | 0h | 2011-07-22 A |  | 100% | 2011-07-22 |  | start no earlier than 2011-07-22 | Shalley |  | Completed |
| 451 | 1.5.4 | Milestone - EPIC Exchange Data Elements Finalized - External Dependency (Will use all 4 Clinical Notes Data Elements as no details provided from TRANSCEND team) |  | 0h | 2011-08-12 A |  | 100% | 2011-08-12 |  | start no earlier than 2011-08-12 | Shalley |  | Completed |
| 452 | 1.5.5 | Milestone - Sample Data for Consolidated TRIM - TRANSCEND - External Dependency |  | 34d | 2011-08-05 A |  | 100% | 2011-09-22 |  | finish no earlier than 2011-09-22 |  |  | Completed |
| 453 | 1.5.6 | Milestone - Sample Data to Validate Mappings - TRANSCEND - External Dependency |  | 0h | 2011-07-22 A |  | 100% | 2011-07-22 |  | start no earlier than 2011-07-22 |  |  | Completed |
| 454 | 1.5.7 | Milestone - Sample Data to support Design Activities - TRANSCEND - External Dependency |  | 0h | 2011-07-22 A |  | 100% | 2011-07-22 |  | start no earlier than 2011-07-22 | Shalley |  | Completed |

Notes:
- 439: Commitment needed is approximately 2 - 3 1 hr meetings
- 446: ESD Task

| ID | WBS | Task | Type | Duration | Start | Predecessors | Complete | Actual finish | Total slack | Constraint | Resources | Work | Text1 |
| --- | --- | --- | --- | --- | --- | --- | --- | --- | --- | --- | --- | --- | --- |
| 455 | 1.5.8 | **Canonical Model** |  | 0d | 2011-06-27 | 434 | 100% | 2011-10-19 |  |  |  |  |  |
| 456 | 1.5.8.1 | Milestone - Canonical Model Mapping Questions & Answers - TRANSCEND - Questions will remain on list for one week unresolved questions arch team will document assumptions and continue forward. | milestone | 0h | 2011-08-05 A |  | 100% | 2011-08-05 |  | start no earlier than 2011-08-05 |  |  | Completed |
| 457 | 1.5.8.2 | Develop Canonical Model |  | 75.78d | 2011-06-27 A |  | 100% | 2011-10-13 |  |  | ARCH - 1 [50%]; ARCH - 2 [50%] | 190.4h | Completed |
| 458 | 1.5.8.3 | Develop Canonical Model IG |  | 73.75d | 2011-06-27 A | 457FF | 100% | 2011-10-11 |  |  | ARCH - 2 | 169.74h | Completed |
| 459 | 1.5.8.4 | Define mapping from Clinical Notes data elements to Canonical Model |  | 73.75d | 2011-06-27 A | 457FF | 100% | 2011-10-11 |  |  | ARCH - 2 | 176.38h | Completed |
| 460 | 1.5.8.5 | Define mapping from PCO data elements to Canonical Model |  | 78.01d | 2011-06-27 A | 457FF, 452FF | 100% | 2011-10-18 |  |  | ARCH - 2 | 168h | Completed |
| 461 | 1.5.8.6 | Develop computable transforms from clinical notes to canonical model |  | 60d | 2011-06-27 A | 457FF | 100% | 2011-09-20 |  |  | ARCH - 6 | 192h | Completed |
| 462 | 1.5.8.7 | Develop computable transforms from PCO to canonical model |  | 80d | 2011-06-27 A | 452FF, 457FF | 100% | 2011-10-19 |  | start no earlier than 2011-06-27 | ARCH - 7 | 48h | Completed |
| 463 | 1.5.9 | MILESTONE - Provide CDA Transform Results to TRANSCEND for Review | milestone | 0h | 2011-10-19 A | 455 | 100% | 2011-10-19 |  |  |  |  | Completed |
| 464 | 1.5.10 | Define HL7v2 (Computable Transform) |  | 11.08d | 2011-09-20 A | 515 | 100% | 2011-10-05 |  | start no later than 2011-09-20 | ARCH - 1 | 80h | Completed |
| 465 | 1.5.11 | Define RIM ITS and CCD mapping |  | 6.08d | 2011-10-04 A | 464 | 100% | 2011-10-13 |  | start no later than 2011-10-04 | ARCH - 1 | 40h | Completed |
| 466 | 1.5.12 | Architecture Provide v1.0 XSLT computable transform |  | 3d | 2011-07-05 A |  | 100% | 2011-07-07 |  | finish no earlier than 2011-07-07 |  |  | Completed |
| 467 | 1.5.13 | Build and Deploy for computable and coded transforms - Round 1 |  | 9d | 2011-06-27 A | 466FF, 449 | 100% | 2011-07-08 |  |  | ESD | 40h | Completed |
| 468 | 1.5.14 | Build and Deploy for computable and coded transforms - Round 2 |  | 19d | 2011-10-03 A | 457FS-7d | 100% | 2011-10-28 |  | finish no earlier than 2011-10-28 | ESD | 36h | Completed |
| 469 | 1.5.15 | Create deployment guide for new transforms (run-time, compile-time, deploy-time) |  | 21d | 2011-10-03 A | 468SS | 100% | 2011-11-01 |  | finish no earlier than 2011-11-01 | ESD | 38h | Delayed |
| 470 | 1.5.16 | Bug Fixes for Documentation (Review JIRA Studio for Documentation Bugs) | milestone | 0h | 2011-11-01 | 469 |  |  | 0d |  |  |  |  |
| 471 | 1.5.17 | Development HL7v2 |  | 9d | 2011-10-03 A | 464FS-3d | 100% | 2011-10-14 |  | start no earlier than 2011-10-03 | ESD | 72h | Completed |
| 472 | 1.5.18 | Development of RIM ITS mapping |  | 3d | 2011-10-17 A | 465FS-2d | 100% | 2011-10-19 |  | start no earlier than 2011-10-17 | ESD | 9h | Completed |
| 473 | 1.5.19 | Quality Test Build and Deploy for computable and coded transforms - Round 1 |  | 4d | 2011-08-17 A | 467, 493 | 100% | 2011-08-22 |  | start no earlier than 2011-08-15 | QA - 2 | 16h | Completed |
| 474 | 1.6 | **Semantic Adapter (SA)** |  | 0d | 2011-06-27 |  | 100% | 2011-10-31 |  |  |  |  |  |
| 475 | 1.6.1 | ESB Deployment |  | 9d | 2011-06-27 A |  | 100% | 2011-07-08 |  | start no earlier than 2011-06-27 | ESD | 40h | Completed |
| 476 | 1.6.2 | Design Semantic Adapter |  | 26d | 2011-07-20 A | 482FS+6d | 100% | 2011-08-24 |  | start no earlier than 2011-07-20 | ARCH - 4 | 48h | Completed |
| 477 | 1.6.3 | Design Identifier Resolver Façade (DESIGN ONLY) |  | 5d | 2011-08-22 A | 485FS+10d | 100% | 2011-08-26 |  | start no earlier than 2011-08-22 | ARCH - 4 | 40h | Completed |
| 478 | 1.6.4 | Design Vocabulary lookup (DESIGN ONLY) |  | 4.92d | 2011-10-13 A | 465 | 100% | 2011-10-19 |  | start no earlier than 2011-10-12 | ARCH - 1 | 19.69h | Completed |
| 479 | 1.6.5 | Quality Test ESB Deployment |  | 1d | 2011-07-20 A | 475 | 100% | 2011-07-20 |  | start no earlier than 2011-07-20 | QA - 1 | 8h | Completed |
| 480 | 1.6.6 | Quality Test Semantic Adapter |  | 20d | 2011-10-03 A | 560 | 100% | 2011-10-31 |  | finish no earlier than 2011-10-31 | QA - 3 [33.33%]; QA - 1 [66.67%] | 240h | Completed |

Notes:
- 457: · standards based canonical model / · map TRANSCEND TRIM(s) to canonical model
- 458: Implementation Guide for canonical model

| ID | WBS | Task | Duration | Start | Predecessors | Complete | Actual finish | Total slack | Constraint | Resources | Work | Text1 |
| --- | --- | --- | --- | --- | --- | --- | --- | --- | --- | --- | --- | --- |
| 481 | 1.7 | **IP - Canonical Model Processor** | 0d | 2011-06-13 |  | 100% | 2011-10-25 |  |  |  |  |  |
| 482 | 1.7.1 | Design Interface - SA to IP | 19d | 2011-06-14 A |  | 100% | 2011-07-11 |  | finish no earlier than 2011-07-11 | ARCH - 4 | 64h | Completed |
| 483 | 1.7.2 | Design CMP Authorization Component | 6d | 2011-08-29 A | 510 | 100% | 2011-09-06 |  | start no later than 2011-08-30 | ARCH - 3 | 40h | Completed |
| 484 | 1.7.3 | Design CMP - Validation, Invocation | 10d | 2011-08-15 A | 514FS-5d | 100% | 2011-08-26 |  | start no earlier than 2011-08-12 | ARCH - 1 | 80h | Completed |
| 485 | 1.7.4 | Define Logging Policy and Log format | 18d | 2011-07-13 A | 513FS+3d | 100% | 2011-08-05 |  | start no earlier than 2011-07-13 | ARCH - 4 | 48h | Completed |
| 486 | 1.7.5 | Deploy IP ESB | 9d | 2011-06-27 A | 475SS | 100% | 2011-07-08 |  |  | ESD | 24h | Completed |
| 487 | 1.7.6 | Develop Web Service Interface (CanonicalModelProcessor) | 49d | 2011-07-11 A | 483FF, 482 | 100% | 2011-09-16 |  | start no later than 2011-07-11 | ESD | 160h | Completed |
| 488 | 1.7.7 | Invoke ETL Process | 10d | 2011-07-18 A | 487SS+5d | 100% | 2011-07-29 |  | start no earlier than 2011-07-11 | ESD | 40h | Completed |
| 489 | 1.7.8 | Document Router/Document Transfer Request Builder | 10d | 2011-09-19 A | 487 | 100% | 2011-09-30 |  | start no earlier than 2011-09-12 | ESD | 72h | Completed |
| 490 | 1.7.9 | Node Authentication (provisioning certs and trust stores) | 10d | 2011-06-13 A |  | 100% | 2011-06-24 |  | finish no earlier than 2011-06-24 | ESD | 40h | Completed |
| 491 | 1.7.10 | Quality Test Web Service Inteface (CanonicalModelProcessor) Initial Task | 14d | 2011-08-29 A | 487 | 100% | 2011-09-16 |  |  | QA - 1 | 29h | Completed |
| 492 | 1.7.11 | Quality Test Canonical Model Processor | 16d | 2011-10-03 A | 560 | 100% | 2011-10-25 |  | finish no earlier than 2011-10-25 | QA - 2 [66.67%]; QA - 3 [33.33%] | 192h | Completed |
| 493 | 1.7.12 | Quality Test ETL Process | 2d | 2011-08-15 A | 488 | 100% | 2011-08-16 |  | start no earlier than 2011-08-15 | QA - 2 | 8h | Completed |
| 494 | 1.8 | **IP - Document Router** | 0d | 2011-06-20 |  | 97% |  | 0d |  |  |  |  |
| 495 | 1.8.1 | Design Router configurations mechanism | 10d | 2011-08-05 A | 441 | 100% | 2011-08-18 |  | start no earlier than 2011-08-05 | ARCH - 3 | 80h | Completed |
| 496 | 1.8.2 | Develop XDS Document Metadata Builder | 21d | 2011-08-22 A | 495FS+1d | 100% | 2011-09-20 |  | finish no earlier than 2011-09-20 | ESD | 208h | Completed |
| 497 | 1.8.3 | Finish up NAV Sender development | 1.67d | 2011-06-20 A |  | 100% | 2011-06-21 |  | start no earlier than 2011-06-20 | ESD | 40h | Completed |
| 498 | 1.8.4 | Develop OpenXDS Interaction (register, store) | 36d | 2011-08-01 A | 496FF | 100% | 2011-09-20 |  | finish no earlier than 2011-09-20 | ESD | 164h | Completed |
| 499 | 1.8.5 | Create NAV documentation | 10d | 2011-08-22 A | 497 | 100% | 2011-09-02 |  | finish no earlier than 2011-09-02 | ESD | 20h | Completed |
| 500 | 1.8.6 | OpenXDS Development - Security | 68d | 2011-06-27 A | 505SS | 100% | 2011-09-30 |  | finish no earlier than 2011-09-30 | ESD | 641h | Completed |
| 501 | 1.8.7 | Quality Test NAV Sender | 17d | 2011-08-03 A | 497 | 100% | 2011-08-25 |  | finish no earlier than 2011-08-25 | QA - 1 | 8h | Completed |
| 502 | 1.8.8 | Quality Testing Document Router - Non XDS | 37d | 2011-11-01 A | 480 | 93% |  | 0d | finish no earlier than 2011-12-16 | QA - 3 [50%]; QA - 1 | 384h | On Track |
| 503 | 1.8.9 | Quality Test Document Router - XDS/NAV | 28d | 2011-11-15 A |  | 90% |  | 0d | finish no earlier than 2011-12-16 | QA - 2; QA - 3 [50%] | 276h | On Track |
| 504 | 1.9 | **IP - Document Transfer** | 0d | 2011-06-13 |  | 100% | 2011-09-16 |  |  |  |  |  |
| 505 | 1.9.1 | Design Pluggable Authorization Component for XDS Interface | 12.5d | 2011-06-29 A | 434FS+2d | 100% | 2011-07-18 |  |  | ARCH - 3 | 100h | Completed |
| 506 | 1.9.2 | Create XDS Outbound Interface Specification (SDS) | 2d | 2011-07-18 A | 505 | 100% | 2011-07-20 |  |  | ARCH - 3 | 16h | Completed |
| 507 | 1.9.3 | Design Secure Email Interface | 3.75d | 2011-08-19 A | 495 | 100% | 2011-08-24 |  | start no earlier than 2011-08-05 | ARCH - 3 | 30h | Completed |
| 508 | 1.9.4 | Ability to send a secure email | 5d | 2011-06-13 A |  | 100% | 2011-06-17 |  |  | ESD | 20h | Completed |
| 509 | 1.9.5 | Secure Email routing components | 14d | 2011-08-29 A | 507 | 100% | 2011-09-16 |  | start no earlier than 2011-08-29 | ESD | 78h | Completed |
| 510 | 1.9.6 | Design Secure File Transfer Protocol Interface | 4d | 2011-08-24 A | 507 | 100% | 2011-08-29 |  | start no later than 2011-08-24 | ARCH - 3 | 26h | Completed |
| 511 | 1.9.7 | Develop Secure File Transfer Protocol Interface | 5d | 2011-09-12 A | 510 | 100% | 2011-09-16 |  | start no earlier than 2011-09-12 | ESD | 80h | Completed |

| ID | WBS | Task | Type | Duration | Start | Predecessors | Complete | Actual finish | Total slack | Constraint | Resources | Work | Text1 |
| --- | --- | --- | --- | --- | --- | --- | --- | --- | --- | --- | --- | --- | --- |
| 512 | 1.10 | **Clinical Data Warehouse (CDW)** |  | 0d | 2011-06-30 |  | 100% | 2011-11-14 |  |  |  |  |  |
| 513 | 1.10.1 | Prototype XML to RDF Converter |  | 5d | 2011-06-30 A | 433 | 100% | 2011-07-07 |  | start no earlier than 2011-06-30 | ARCH - 4 | 40h | Completed |
| 514 | 1.10.2 | Design Schema and map Canonical to Data Warehouse format |  | 34d | 2011-06-30 A | 433 | 100% | 2011-08-17 |  | finish no earlier than 2011-08-19 | ARCH - 1 | 133.37h | Completed |
| 515 | 1.10.3 | Design free text indexes and views |  | 21.07d | 2011-08-22 A | 484FS-4d | 100% | 2011-09-21 |  | start no later than 2011-08-22 | ARCH - 1 [47.95%]; ARCH - 4 [52.05%] | 40h | Completed |
| 516 | 1.10.4 | Integrate free text indexes and views |  | 10d | 2011-09-19 A | 515FS-2d | 100% | 2011-09-30 |  | start no later than 2011-09-19 | ESD | 10h | Completed |
| 517 | 1.10.5 | Design ETL- IP to CDW |  | 19.4d | 2011-07-18 A | 435FS+5d | 100% | 2011-08-12 |  | start no earlier than 2011-07-18 | ARCH - 4 | 28.8h | Completed |
| 518 | 1.10.6 | Create Non-canonical to CDW transform and integrate with Canonical to CDW transform |  | 12d | 2011-08-22 A | 514FS+1d | 100% | 2011-09-07 |  | start no earlier than 2011-08-22 | ARCH - 4 | 37.33h | Completed |
| 519 | 1.10.7 | Architecture Testing of Non-canonical to CDW transform | milestone | 0h | 2011-09-22 A | 452, 518 | 100% | 2011-09-22 |  |  | ARCH - 4 |  | Completed |
| 520 | 1.10.8 | Develop ETL - IP to CDW |  | 10d | 2011-09-19 A | 517 | 100% | 2011-09-30 |  | finish no earlier than 2011-09-16 | ESD | 80h | Completed |
| 521 | 1.10.9 | Test ETL Process |  | 8d | 2011-10-26 A | 492, 520 | 100% | 2011-11-04 |  | finish no earlier than 2011-11-04 | QA - 2 [66.67%]; QA - 3 [33.33%] | 96h | Completed |
| 522 | 1.10.10 | Test CDW |  | 5d | 2011-11-07 A | 521 | 100% | 2011-11-14 |  |  | QA - 2 [66.67%]; QA - 3 [33.33%] | 60h | Completed |
| 523 | 1.10.11 | Design CDW Security |  | 3d | 2011-09-07 A |  | 100% | 2011-09-09 |  | start no earlier than 2011-09-07 | ARCH - 3 | 20h | Completed |
| 524 | 1.10.12 | Develop Clinical Data Warehouse (Virtuoso) |  | 25d | 2011-07-18 A | 514FF | 100% | 2011-08-22 |  | start no earlier than 2011-07-11 | ESD | 390h | Completed |
| 525 | 1.10.13 | Data Warehouse Testing Initial Task |  | 18d | 2011-08-23 A | 473, 524 | 100% | 2011-09-16 |  | finish no earlier than 2011-09-16 | QA - 2 | 90h | Completed |
| 526 | 1.11 | **ESD** |  | 0d | 2011-10-04 |  | 100% |  | 0d |  |  |  |  |
| 527 | 1.11.1 | Development Bug Fixes |  | 43d | 2011-10-04 A |  | 100% | 2011-12-06 |  | finish no later than 2011-12-30 | ESD | 51h | On Track |
| 528 | 1.11.2 | ESD - 3236 - TRIM validation to be made configurable |  | 8d | 2011-10-04 A |  | 100% | 2011-10-14 |  | finish no earlier than 2011-10-14 |  |  | Completed |
| 529 | 1.11.3 | ESD - 3241 - Running the Maven build and install script "mvn clean install" fails on QA environment after 2.5 minutes |  | 8d | 2011-10-04 A |  | 100% | 2011-10-14 |  | start no earlier than 2011-10-04 |  |  | Completed |
| 530 | 1.11.4 | ESD - 3237 - ClinicalDocument element not available for DR-4b_XDSNAVTransmission & DR-4a_SecureEmailTransmission channels |  | 8d | 2011-10-04 A |  | 100% | 2011-10-14 |  | start no earlier than 2011-10-04 |  |  | Completed |
| 531 | 1.11.5 | ESD - 3238 - ClinicalDocument element missing after HL7v2Transformation. |  | 8d | 2011-10-04 A |  | 100% | 2011-10-14 |  | start no earlier than 2011-10-04 |  |  | Completed |
| 532 | 1.11.6 | ESD - 3250 - In profiles.xml the outputRootdir element should be replaced with ${user.home} |  | 8d | 2011-10-04 A |  | 100% | 2011-10-14 |  | start no earlier than 2011-10-04 |  |  | Completed |
| 533 | 1.11.7 | ESD - 3238 - The pom.xml file in pco/ip-mirth contains incorrect values in the phase tag |  | 8d | 2011-10-04 A |  | 100% | 2011-10-14 |  | start no earlier than 2011-10-04 |  |  | Completed |
| 534 | 1.11.8 | ESD - 3254 - The steps in the installation document which describe how to manually install the channels to Mirth Connect do not appear to work. |  | 8d | 2011-10-04 A |  | 100% | 2011-10-14 |  | start no earlier than 2011-10-04 |  |  | Completed |
| 535 | 1.11.9 | ESD - 3256 - Unable to Deploy build successfully - Channels are not deployed on Mirth Connect |  | 8d | 2011-10-04 A |  | 100% | 2011-10-14 |  | finish no earlier than 2011-10-14 |  |  | Completed |
| 536 | 1.11.10 | ESD - 3257 - Maven Deploy Failed - Unable to run channels even after manually deploying them |  | 8d | 2011-10-04 A |  | 100% | 2011-10-14 |  | start no earlier than 2011-10-04 |  |  | Completed |
| 537 | 1.11.11 | ESD - 3258 - ClinicalDocument element not available to CMP-1_WebServiceListener |  | 8d | 2011-10-04 A |  | 100% | 2011-10-14 |  | start no earlier than 2011-10-04 |  |  | Completed |
| 538 | 1.11.12 | ESD - 3259 - DR-4a_SecureEmailTransmission Channel not able to send Secure Email. |  | 8d | 2011-10-04 A |  | 100% | 2011-10-14 |  | start no earlier than 2011-10-04 |  |  | Completed |
| 539 | 1.11.13 | CACIS-122 - PCO TRANSFORM | milestone | 0h | 2011-12-02 A |  | 100% | 2011-12-02 |  | start no earlier than 2011-12-02 |  |  | Needs QA Verification |
| 540 | 1.11.14 | CACIS-171 - CCD Document Corrections | milestone | 0h | 2011-12-07 A |  | 100% | 2011-12-07 |  | start no earlier than 2011-12-07 |  |  | Needs QA Verification |
| 541 | 1.11.15 | CACIS-109 - Configure FTP Server Instructions | milestone | 0h | 2011-12-02 A |  | 100% | 2011-12-02 |  | start no earlier than 2011-12-02 |  |  | Needs QA Verification |
| 542 | 1.11.16 | CACIS-107 - Configure e-mail Instructions | milestone | 0h | 2011-12-02 A |  | 100% | 2011-12-02 |  | start no earlier than 2011-12-02 |  |  | Needs QA Verification |
| 543 | 1.11.17 | CACIS-102 - Apache HTTP Configuration Instructions | milestone | 0h | 2011-12-02 A |  | 100% | 2011-12-02 |  | start no earlier than 2011-12-02 |  |  | Needs QA Verification |
| 544 | 1.11.18 | CACIS-100 - Instructions for OpenXDS Setup | milestone | 0h | 2011-12-02 A |  | 100% | 2011-12-02 |  | start no earlier than 2011-12-02 |  |  | Needs QA Verification |

Notes:
- 512: · Design Support for ad-hoc queries and report generation on Clinical Data Warehouse (no implementation) / · Data Warehouse will support all data elements extracted from TRANSCEND / · Q - CDW being deployed @ NCI / · CDW - GRID Security Enabled

| ID | WBS | Task | Type | Duration | Start | Predecessors | Complete | Actual finish | Total slack | Constraint | Resources | Work | Text1 |
| --- | --- | --- | --- | --- | --- | --- | --- | --- | --- | --- | --- | --- | --- |
| 545 | 1.12 | **QA** |  | 0d | 2011-06-20 |  | 92% |  | 0d |  |  |  |  |
| 546 | 1.12.1 | Solution Testcase Showcase Readiness | milestone | 0h | 2011-12-22 A |  | 100% | 2011-12-22 |  | start no earlier than 2011-12-14 |  |  |  |
| 547 | 1.12.2 | Executive Solution Demonstration - Dry Run |  | 7d | 2011-11-07 A |  | 100% | 2011-11-16 |  | finish no earlier than 2011-11-16 |  |  |  |
| 548 | 1.12.3 | Executive Solution Testcase Showcase | milestone | 0h | 2011-12-23 | 547 |  |  | 0d | start no earlier than 2011-12-23 |  |  |  |
| 549 | 1.12.4 | Performance Testing |  | 10d | 2011-12-12 A | 502FF | 90% |  | 0d |  | QA - 3; QA - 2; QA - 1 | 120h |  |
| 550 | 1.12.5 | Integration Testing |  | 10d | 2011-12-12 A | 549SS | 83% |  | 0d |  | QA - 3; QA - 1; QA - 2 | 240h |  |
| 551 | 1.12.6 | Wrap-Up |  | 4d | 2011-12-27 | 550 |  |  | 0d |  | QA - 3; QA - 1; QA - 2 | 96h |  |
| 552 | 1.12.7 | Manual Build, Configuration, Installation/Deployment for Testing - Deferred |  | 63d | 2011-06-20 A |  | 100% | 2011-09-16 |  | start no earlier than 2011-06-20 | QA - 1 | 95.5h | Completed |
| 553 | 1.12.8 | Test Automation - Deferred |  | 47d | 2011-07-13 A |  | 100% | 2011-09-16 |  | finish no earlier than 2011-09-16 | QA - 1 | 156.5h | Completed |
| 554 | 1.12.9 | Test and results documentation/reporting - Deferred |  | 63d | 2011-06-20 A |  | 100% | 2011-09-16 |  | finish no earlier than 2011-09-16 | QA - 1 | 55.75h | Completed |
| 555 | 1.12.10 | Security Testing - Deferred |  | 11d | 2011-09-01 A |  | 100% | 2011-09-16 |  | finish no earlier than 2011-09-16 | QA - 1 | 16.5h | Completed |
| 556 | 1.13 | **Quality Shakedown Testing** |  | 0d | 2011-09-19 |  | 100% | 2011-09-30 |  |  |  |  |  |
| 557 | 1.13.1 | Semantic Adapter Shake Down |  | 5.01d | 2011-09-19 A |  | 100% | 2011-09-26 |  | finish no earlier than 2011-09-23 | QA - 1 [36.11%]; QA - 2 [36.11%]; QA - 3 [27.79%] | 40.02h | Completed |
| 558 | 1.13.2 | Canonical Model Processor Shake Down |  | 5d | 2011-09-19 A |  | 100% | 2011-09-26 |  | start no earlier than 2011-09-19 | QA - 2 [33.48%]; QA - 1 [33.48%]; QA - 3 [33.05%] | 40h | Completed |
| 559 | 1.13.3 | ETL - IP to CDW Shake Down |  | 4.99d | 2011-09-26 A | 557, 558 | 100% | 2011-09-30 |  | finish no earlier than 2011-09-30 | QA - 2 [33.47%]; QA - 3 [33.05%]; QA - 1 [33.48%] | 39.99h | Completed |
| 560 | 1.13.4 | Data Warehouse Shakedown |  | 4.99d | 2011-09-26 A | 558, 557 | 100% | 2011-09-30 |  | finish no earlier than 2011-09-30 | QA - 1 [33.45%]; QA - 2 [33.49%]; QA - 3 [33.06%] | 39.98h | Completed |
| 561 | 1.14 | **Technical Writing** |  | 0d | 2011-08-23 |  | 100% | 2011-10-28 |  |  |  |  |  |
| 562 | 1.14.1 | caCIS_Solution_Architecture_Document.doc |  | 1d | 2011-08-23 A |  | 100% | 2011-08-23 |  | start no earlier than 2011-08-23 | Tech Writer | 8h | Completed |
| 563 | 1.14.2 | caCIS-CDW-Evaluation.doc |  | 1d | 2011-08-24 A | 562 | 100% | 2011-08-24 |  | start no earlier than 2011-08-23 | Tech Writer | 8h | Completed |
| 564 | 1.14.3 | Virtuoso_ETL_Approach.doc |  | 1d | 2011-08-25 A | 563 | 100% | 2011-08-25 |  | start no earlier than 2011-08-23 | Tech Writer | 8h | Completed |
| 565 | 1.14.4 | Virtuoso_Security_Approach.doc |  | 1d | 2011-08-26 A | 564 | 100% | 2011-08-26 |  | start no earlier than 2011-08-23 | Tech Writer | 8h | Completed |
| 566 | 1.14.5 | caCIS_IntegrationPlatform_CanonicalModelProcessor_SDS.doc |  | 1d | 2011-09-06 A | 564FF | 100% | 2011-09-06 |  | start no earlier than 2011-09-06 | Tech Writer | 8h | Completed |
| 567 | 1.14.6 | caCIS_OpenXDS_SDS.doc |  | 1d | 2011-09-07 A | 566 | 100% | 2011-09-07 |  | start no earlier than 2011-09-06 | Tech Writer | 8h | Completed |
| 568 | 1.14.7 | caCIS_SemanticAdapter_SDS.doc |  | 1d | 2011-09-08 A | 567 | 100% | 2011-09-08 |  | start no earlier than 2011-09-06 | Tech Writer | 8h | Completed |
| 569 | 1.14.8 | caCIS_Semantic_Adapter_Design.doc |  | 1d | 2011-09-09 A | 568 | 100% | 2011-09-09 |  | start no earlier than 2011-09-06 | Tech Writer | 8h | Completed |
| 570 | 1.14.9 | caCIS_IP_to_CDW_Design.doc |  | 1d | 2011-09-12 A | 569 | 100% | 2011-09-12 |  | start no earlier than 2011-09-06 | Tech Writer | 8h | Completed |
| 571 | 1.14.10 | caCIS_KeyStoreTrustStore.doc |  | 1d | 2011-09-13 A | 570 | 100% | 2011-09-13 |  | start no earlier than 2011-09-06 | Tech Writer | 8h | Completed |
| 572 | 1.14.11 | caCIS_DocumentRouter_Design.doc |  | 1d | 2011-09-30 A | 571 | 100% | 2011-09-30 |  | start no earlier than 2011-09-30 | Tech Writer | 8h | Completed |
| 573 | 1.14.12 | caCIS_Logging_Design.doc |  | 2d | 2011-10-03 A | 572 | 100% | 2011-10-04 |  | start no earlier than 2011-09-30 | Tech Writer | 16h | Completed |
| 574 | 1.14.13 | caCIS_Identity_Resolver_Facade_Design.doc |  | 2d | 2011-10-05 A | 573 | 100% | 2011-10-06 |  | start no earlier than 2011-09-30 | Tech Writer | 16h | Completed |
| 575 | 1.14.14 | caCIS_CanonicalModelProcessor_Design.doc |  | 2d | 2011-10-07 A | 574 | 100% | 2011-10-11 |  | start no earlier than 2011-09-30 | Tech Writer | 16h | Completed |
| 576 | 1.14.15 | caCIS_Secure_Email_Design.doc |  | 2d | 2011-10-19 A | 574 | 100% | 2011-10-20 |  | start no earlier than 2011-10-19 | Tech Writer | 16h | Completed |
| 577 | 1.14.16 | caCIS_Secure_File_Transfer_Design.doc |  | 2d | 2011-10-19 A | 574 | 100% | 2011-10-20 |  | finish no earlier than 2011-10-20 | Tech Writer | 8h | Completed |
| 578 | 1.14.17 | caCIS_OpenXDS_Design.doc |  | 2d | 2011-10-19 A | 574 | 100% | 2011-10-20 |  | finish no earlier than 2011-10-20 | Tech Writer | 8h | Completed |
| 579 | 1.14.18 | caCIS_CMP_Security_Design.doc |  | 2d | 2011-10-19 A | 578 | 100% | 2011-10-20 |  | finish no earlier than 2011-10-20 | Tech Writer | 8h | Completed |
| 580 | 1.14.19 | caCIS_Vocabulary_Code_Resolver_Facade_Design.doc |  | 2d | 2011-10-21 A | 579 | 100% | 2011-10-24 |  |  | Tech Writer | 8h | Completed |
| 581 | 1.14.20 | caCIS_Deployment_Architecture.doc |  | 2d | 2011-10-27 A | 580 | 100% | 2011-10-28 |  | finish no earlier than 2011-11-02 | Tech Writer | 8h | Completed |

| ID | WBS | Task | Type | Duration | Start | Predecessors | Complete | Actual finish | Total slack | Constraint | Resources | Work | Text1 |
| --- | --- | --- | --- | --- | --- | --- | --- | --- | --- | --- | --- | --- | --- |
| 582 | 1.15 | **Systems Migration to CBIIT** |  | 0d | 2011-08-25 |  | 100% |  | 0d |  |  |  |  |
| 583 | 1.15.1 | **HPQC Migration** |  | 0d | 2011-08-25 |  | 100% | 2011-09-07 |  |  |  |  |  |
| 584 | 1.15.1.1 | Initiate Migration |  | 1d | 2011-08-25 A |  | 100% | 2011-08-25 |  | start no earlier than 2011-08-25 | CDO | 8h | Completed |
| 585 | 1.15.1.2 | Dry- Run Date |  | 1d | 2011-08-31 A |  | 100% | 2011-08-31 |  | start no earlier than 2011-08-31 | CDO | 8h | Completed |
| 586 | 1.15.1.3 | Migration Cutover |  | 1d | 2011-09-07 A |  | 100% | 2011-09-07 |  | start no earlier than 2011-09-07 | CDO | 8h | Completed |
| 587 | 1.15.2 | **JIRA Migration** |  | 0d | 2011-10-03 |  | 100% | 2011-11-04 |  |  |  |  |  |
| 588 | 1.15.2.1 | Initiate Migration |  | 1d | 2011-10-03 A |  | 100% | 2011-10-03 |  | start no earlier than 2011-10-03 | CDO | 1h |  |
| 589 | 1.15.2.2 | Dry-Run Date |  | 1d | 2011-11-04 A |  | 100% | 2011-11-04 |  | finish no earlier than 2011-11-04 | CDO | 1h | Completed |
| 590 | 1.15.3 | **Subversion Migration** |  | 0d | 2011-10-03 |  | 100% |  | 0d |  |  |  |  |
| 591 | 1.15.3.1 | Initiate Migration |  | 1d | 2011-10-03 A |  | 100% | 2011-10-03 |  | start no earlier than 2011-10-03 | CDO | 1h |  |
| 592 | 1.15.3.2 | Need an SVN dump for Dry-Run | milestone | 0h | 2011-11-14 A |  | 100% | 2011-11-14 |  | start no earlier than 2011-11-14 | CDO |  |  |
| 593 | 1.15.3.3 | Dry-Run Date |  | 1d | 2011-11-15 A | 592 | 100% | 2011-11-15 |  | start no earlier than 2011-11-10 | CDO | 1h |  |
| 594 | 1.15.4 | **Build and Deployment Migration (Jenkins)** |  | 0d | 2011-10-03 |  | 100% |  | 0d |  |  |  |  |
| 595 | 1.15.4.1 | Initiate Migration |  | 1d | 2011-10-03 A |  | 100% | 2011-10-03 |  | start no earlier than 2011-10-03 | CDO | 1h |  |
| 596 | 1.15.4.2 | Supply ARC - Architecture Review Checklist | milestone | 0h | 2011-10-11 A |  | 100% | 2011-10-11 |  | start no earlier than 2011-10-11 | CDO |  | Completed |
| 597 | 1.15.4.3 | ARC Updates | milestone | 0h | 2011-11-04 A |  | 100% | 2011-11-04 |  | start no earlier than 2011-11-04 | CDO |  |  |
| 598 | 1.15.4.4 | Supply Infrastructure team Production Technical Environment Document | milestone | 0h | 2011-10-11 A |  | 100% | 2011-10-11 |  | start no earlier than 2011-10-11 | CDO |  | Completed |
| 599 | 1.15.4.5 | PIA Documentation | milestone | 0h | 2011-11-14 A |  | 100% | 2011-11-14 |  | start no earlier than 2011-11-14 | Undale |  |  |
| 600 | 1.15.4.6 | Dry- Run Date | milestone | 0h | 2011-10-28 A | 601 | 100% | 2011-10-28 |  | start no earlier than 2011-10-28 | CDO |  |  |
| 601 | 1.15.4.7 | Migration Cutover | milestone | 0h | 2011-10-28 A |  | 100% | 2011-10-28 |  | start no earlier than 2011-10-28 | CDO |  |  |
| 602 | 1.15.5 | **Target Environments (Virtuoso, Demo environments, etc)** |  | 0d | 2011-10-03 |  | 100% |  | 0d |  |  |  |  |
| 603 | 1.15.5.1 | Initiate Migration |  | 28d | 2011-10-03 A |  | 100% | 2011-11-10 |  | start no earlier than 2011-10-03 | CDO | 1h |  |
| 604 | 1.15.5.2 | Dry- Run Date | milestone | 0h | 2011-10-28 A | 605 | 100% | 2011-10-28 |  | start no earlier than 2011-10-28 | CDO |  |  |
| 605 | 1.15.5.3 | Migration Cutover | milestone | 0h | 2011-10-28 A |  | 100% | 2011-10-28 |  | start no earlier than 2011-10-28 | CDO |  |  |
| 606 | 1.15.6 | BDALite Environment | milestone | 0h | 2011-11-25 A |  | 100% | 2011-11-25 |  | start no earlier than 2011-11-25 |  |  |  |

| ID | WBS | Task | Duration | Start | Predecessors | Complete | Remaining | Actual finish | Total slack | Constraint | Resources | Work | Text1 |
| --- | --- | --- | --- | --- | --- | --- | --- | --- | --- | --- | --- | --- | --- |
| 607 | 1.16 | **Pre-Deployment** | 0d | 2011-09-21 |  | 100% |  | 2011-09-26 |  |  |  |  |  |
| 608 | 1.16.1 | Document TRANSCEND Deployment Architecture | 4d | 2011-09-21 A |  | 100% |  | 2011-09-26 |  | start no earlier than 2011-09-21 | ARCH - 3 | 24h | Completed |
| 609 | 1.17 | **Software Development Project Close Out** | 0d | 2011-12-27 | 34FS-15d | 32% |  |  | 0d |  |  |  |  |
| 610 | 1.17.1 | Final Deliverables Accepted | 4d | 2011-12-28 A |  | 50% |  |  | 0d | start no earlier than 2011-12-28 | Hurley [12.5%] | 4h |  |
| 611 | 1.17.2 | Final Deliverables Published | 6d | 2011-12-28 A |  | 50% | 1.12d |  | 0d | start no earlier than 2011-12-28 |  | 18h |  |
| 612 | 1.17.3 | Ensure that all artifacts are checked into NCI subversion | 0h | 2011-12-30 A | 545 | 50% |  |  | 0d |  | Hurley |  |  |
| 613 | 1.17.4 | Project Summary Report | 4d | 2011-12-27 A | 34FS-20d | 20% |  |  | 0d | start no earlier than 2011-12-27 | Hurley [90.62%] | 29h |  |
| 614 | 1.17.5 | Project Complete | 0h | 2011-12-30 | 613 |  |  |  | 0d |  |  |  |  |
| 615 | 1.18 | **Deployment** | 0d | 2012-01-02 | 34 |  |  |  | 0d |  |  |  |  |
| 616 | 1.18.1 | Architecture Deployment Support | 40d | 2012-01-02 |  |  |  |  | 0d | start no earlier than 2011-11-01 | ARCHDEPLOYRES- 1 [25%] | 80h |  |
| 617 | 1.18.2 | Site Deployment - ESD | 6.67d | 2012-01-02 |  |  |  |  | 0d | start no earlier than 2011-11-01 | ESDDEPLOYRES [300%] | 160h |  |
| 618 | 1.18.3 | Integration Testing | 10d | 2012-01-02 |  |  |  |  | 0d |  | QADEPLOYRES | 80h |  |
| 619 | 1.18.4 | Pre-release support/testing Alpha, Beta, etc | 10d | 2012-01-02 |  |  |  |  | 0d | start no earlier than 2011-09-30 | QADEPLOYRES2 | 80h |  |

Notes:
- 615: · Deployment of caCIS Integration Platform into TRANSCEND Environemnt / · Integration and configuration of software at TRANSCEND (IP, SA)
